# SPC-2220-PS-PMS-011840_Fabricación Bandejas Agua Lavado Celdas OT 1844_Rev.B

How a schedule from Primavera P6 changed from version to version. A marks actual dates.

## Version 1 (data date 2026-01-26, saved 2026-02-10, file ot1844_revB.xer)

Note of the change: OT-1844: integrar XER W08/W09 y reporte EVM base

| ID | WBS | Task | Duration | Start | Finish | Predecessors | Total float | Constraint |
| --- | --- | --- | --- | --- | --- | --- | --- | --- |
|  | 2 | **Hitos de Construcción** |  | 2026-03-09 | 2026-04-06 |  |  |  |
| A1620 |  | Dos bandejas en Minera Spence a más tardar el 09-mar-2026. | 0d | 2026-03-09 | 2026-03-09 | A2970 | 20d |  |
| A1630 |  | Dos bandejas en Minera Spence a más tardar el 16-mar-2026. | 0d | 2026-03-16 | 2026-03-16 | A3270 | 15d |  |
| A1650 |  | Dos bandejas en Minera Spence a más tardar el 23-mar-2026. | 0d | 2026-03-23 | 2026-03-23 | A3570 | 10d |  |
| A2630 |  | Dos bandejas en Minera Spence a más tardar el 30-mar-2026. | 0d | 2026-03-30 | 2026-03-30 | A3870 | 5d |  |
| A2640 |  | Dos bandejas en Minera Spence a más tardar el 06-abr-2026. | 0d | 2026-04-06 | 2026-04-06 | A4170 | 0d |  |
|  | 1 | **Suministro conjuntos sistema de agua de lavado** |  | 2026-02-02 | 2026-02-18 |  |  |  |
| A1640 |  | Planos de Fabricación | 10d | 2026-02-02 | 2026-02-13 |  | 0d | start on or after 2026-02-02 |
| A1660 |  | Suminstro de Materiales | 10d | 2026-02-05 | 2026-02-18 | A1640 SS+3d | 0d |  |
|  | 3 | **Fabricación 10 sistemas de lavado** |  | 2026-02-13 | 2026-04-06 |  |  |  |
|  | 8 | **TAG 2225-ZM-(02 Unidades)-1** |  | 2026-02-13 | 2026-03-09 |  |  |  |
|  | 1 | **Bastidor** |  | 2026-02-13 | 2026-03-04 |  |  |  |
| A2650 |  | Corte y Fabricación de Vigas y Perfil Z | 6d | 2026-02-13 | 2026-02-20 | A1660 FS-4d, A1640 FS-1d | 0d |  |
| A2660 |  | Corte y Fabricación de Consoldas Exteriores | 2d | 2026-02-13 | 2026-02-16 | A2650 SS | 20d |  |
| A2670 |  | Corte y Fabricación de Consoldas Centrales | 2d | 2026-02-17 | 2026-02-18 | A2660 | 20d |  |
| A2680 |  | Corte y Fabricación Distribuidor 8" | 2d | 2026-02-19 | 2026-02-20 | A2670 | 20d |  |
| A2690 |  | Armado y Remates de Soldadura Bastidor | 2d | 2026-02-23 | 2026-02-24 | A2650, A2680 | 20d |  |
| A2710 |  | Inspección de soldadura (VT, LP si aplica) | 1d | 2026-02-25 | 2026-02-25 | A2690 | 20d |  |
| A2720 |  | Granallado / Preparación de Superficie | 1d | 2026-02-26 | 2026-02-26 | A2710 | 20d |  |
| A2730 |  | Aplicación Capa Imprimante, Enlace y Terminación | 3d | 2026-02-27 | 2026-03-03 | A2720 | 20d |  |
| A2740 |  | Control de calidad (QC) e inspecciones | 1d | 2026-03-04 | 2026-03-04 | A2730 | 20d |  |
|  | 2 | **Bandeja Perimetral (12 Un)** |  | 2026-02-16 | 2026-03-03 |  |  |  |
| A2750 |  | Corte, perforado y conformado (fabricación del cuerpo) SS316L | 4d | 2026-02-16 | 2026-02-19 | A2650 SS+1d | 20d |  |
| A2760 |  | Cilindrado (fabricación del cuerpo) SS316L | 2d | 2026-02-20 | 2026-02-23 | A2750 | 21d |  |
| A2770 |  | Armado, Soldadura y Rectificado de Bandejas | 3d | 2026-02-24 | 2026-02-26 | A2760 | 21d |  |
| A2780 |  | Terminaciones superficiales (Limpieza, Decapado, Pasivado) | 2d | 2026-02-27 | 2026-03-02 | A2770 | 21d |  |
| A2790 |  | Control de calidad (QC) e inspecciones | 1d | 2026-03-03 | 2026-03-03 | A2780 | 21d |  |
|  | 3 | **Bandeja Central (12 Un)** |  | 2026-02-16 | 2026-03-03 |  |  |  |
| A2890 |  | Corte, perforado y conformado (fabricación del cuerpo) SS316L | 4d | 2026-02-16 | 2026-02-19 | A2750 SS | 24d |  |
| A2900 |  | Cilindrado (fabricación del cuerpo) SS316L | 2d | 2026-02-20 | 2026-02-23 | A2890 | 24d |  |
| A2910 |  | Armado, Soldadura y Rectificado de Bandejas | 3d | 2026-02-24 | 2026-02-26 | A2900 | 24d |  |
| A2920 |  | Terminaciones superficiales (Limpieza, Decapado, Pasivado) | 2d | 2026-02-27 | 2026-03-02 | A2910 | 24d |  |
| A2930 |  | Control de calidad (QC) e inspecciones | 1d | 2026-03-03 | 2026-03-03 | A2920 | 24d |  |
|  | 4 | **Barandas (16 Un)** |  | 2026-02-18 | 2026-03-04 |  |  |  |
| A2800 |  | Fabricación Baranda radial removible | 7d | 2026-02-18 | 2026-02-26 | A2750 SS+2d | 20d |  |
| A2810 |  | Aplicación Capa Imprimante, Enlace y Terminación | 3d | 2026-02-27 | 2026-03-03 | A2800 | 20d |  |
| A2820 |  | Control de calidad (QC) e inspecciones | 1d | 2026-03-04 | 2026-03-04 | A2810 | 20d |  |
|  | 5 | **Parrilla de Piso (36 Un)** |  | 2026-02-27 | 2026-03-04 |  |  |  |
| A2830 |  | Trazado y Corte de FRP | 3d | 2026-02-27 | 2026-03-03 | A2880 | 20d |  |
| A2840 |  | Control de calidad (QC) e inspecciones | 1d | 2026-03-04 | 2026-03-04 | A2830 | 20d |  |
|  | 6 | **Manifold Distribuidor** |  | 2026-02-20 | 2026-02-26 |  |  |  |
| A2850 |  | Fabricación del cuerpo central (spool/cabezal) | 2d | 2026-02-20 | 2026-02-23 | A2800 SS+2d | 20d |  |
| A2860 |  | Fabricación Brazos radiales (spools repetitivos) | 1d | 2026-02-24 | 2026-02-24 | A2850 | 20d |  |
| A2870 |  | Fabricación Conjunto válvula/boquilla (DET. 1-5) | 1d | 2026-02-25 | 2026-02-25 | A2860 | 20d |  |
| A2880 |  | Control de calidad (QC) e inspecciones | 1d | 2026-02-26 | 2026-02-26 | A2870 | 20d |  |
|  | 7 | **Pre-armado en taller (armado en seco) / Despacho** |  | 2026-03-05 | 2026-03-09 |  |  |  |
| A2940 |  | Bastidor / estructura / Bandejas / Barandas / Parrillas FRP | 2d | 2026-03-05 | 2026-03-06 | A2740, A2790, A2820, A2840 | 20d |  |
| A2970 |  | Despacho | 1d | 2026-03-09 | 2026-03-09 | A2940 | 20d |  |
|  | 1 | **TAG 2225-ZM-(02 Unidades)-2** |  | 2026-02-20 | 2026-03-16 |  |  |  |
|  | 1 | **Bastidor** |  | 2026-02-20 | 2026-03-11 |  |  |  |
| A2980 |  | Corte y Fabricación de Vigas y Perfil Z | 6d | 2026-02-20 | 2026-02-27 | A2650 FS-1d | 0d |  |
| A2990 |  | Corte y Fabricación de Consoldas Exteriores | 2d | 2026-02-20 | 2026-02-23 | A2980 SS | 15d |  |
| A3000 |  | Corte y Fabricación de Consoldas Centrales | 2d | 2026-02-24 | 2026-02-25 | A2990 | 15d |  |
| A3010 |  | Corte y Fabricación Distribuidor 8" | 2d | 2026-02-26 | 2026-02-27 | A3000 | 15d |  |
| A3020 |  | Armado y Remates de Soldadura Bastidor | 2d | 2026-03-02 | 2026-03-03 | A2980, A3010 | 15d |  |
| A3030 |  | Inspección de soldadura (VT, LP si aplica) | 1d | 2026-03-04 | 2026-03-04 | A3020 | 15d |  |
| A3040 |  | Granallado / Preparación de Superficie | 1d | 2026-03-05 | 2026-03-05 | A3030 | 15d |  |
| A3050 |  | Aplicación Capa Imprimante, Enlace y Terminación | 3d | 2026-03-06 | 2026-03-10 | A3040 | 15d |  |
| A3060 |  | Control de calidad (QC) e inspecciones | 1d | 2026-03-11 | 2026-03-11 | A3050 | 15d |  |
|  | 2 | **Bandeja Perimetral (12 Un)** |  | 2026-02-23 | 2026-03-10 |  |  |  |
| A3070 |  | Corte, perforado y conformado (fabricación del cuerpo) SS316L | 4d | 2026-02-23 | 2026-02-26 | A2980 SS+1d | 15d |  |
| A3080 |  | Cilindrado (fabricación del cuerpo) SS316L | 2d | 2026-02-27 | 2026-03-02 | A3070 | 16d |  |
| A3090 |  | Armado, Soldadura y Rectificado de Bandejas | 3d | 2026-03-03 | 2026-03-05 | A3080 | 16d |  |
| A3100 |  | Terminaciones superficiales (Limpieza, Decapado, Pasivado) | 2d | 2026-03-06 | 2026-03-09 | A3090 | 16d |  |
| A3110 |  | Control de calidad (QC) e inspecciones | 1d | 2026-03-10 | 2026-03-10 | A3100 | 16d |  |
|  | 3 | **Bandeja Central (12 Un)** |  | 2026-02-23 | 2026-03-10 |  |  |  |
| A3210 |  | Corte, perforado y conformado (fabricación del cuerpo) SS316L | 4d | 2026-02-23 | 2026-02-26 | A3070 SS | 19d |  |
| A3220 |  | Cilindrado (fabricación del cuerpo) SS316L | 2d | 2026-02-27 | 2026-03-02 | A3210 | 19d |  |
| A3230 |  | Armado, Soldadura y Rectificado de Bandejas | 3d | 2026-03-03 | 2026-03-05 | A3220 | 19d |  |
| A3240 |  | Terminaciones superficiales (Limpieza, Decapado, Pasivado) | 2d | 2026-03-06 | 2026-03-09 | A3230 | 19d |  |

| ID | WBS | Task | Duration | Start | Finish | Predecessors | Total float |
| --- | --- | --- | --- | --- | --- | --- | --- |
| A3250 |  | Control de calidad (QC) e inspecciones | 1d | 2026-03-10 | 2026-03-10 | A3240 | 19d |
|  | 4 | **Barandas (16 Un)** |  | 2026-02-25 | 2026-03-11 |  |  |
| A3120 |  | Fabricación Baranda radial removible | 7d | 2026-02-25 | 2026-03-05 | A3070 SS+2d | 15d |
| A3130 |  | Aplicación Capa Imprimante, Enlace y Terminación | 3d | 2026-03-06 | 2026-03-10 | A3120 | 15d |
| A3140 |  | Control de calidad (QC) e inspecciones | 1d | 2026-03-11 | 2026-03-11 | A3130 | 15d |
|  | 5 | **Parrilla de Piso (36 Un)** |  | 2026-03-06 | 2026-03-11 |  |  |
| A3150 |  | Trazado y Corte de FRP | 3d | 2026-03-06 | 2026-03-10 | A3200 | 15d |
| A3160 |  | Control de calidad (QC) e inspecciones | 1d | 2026-03-11 | 2026-03-11 | A3150 | 15d |
|  | 6 | **Manifold Distribuidor** |  | 2026-02-27 | 2026-03-05 |  |  |
| A3170 |  | Fabricación del cuerpo central (spool/cabezal) | 2d | 2026-02-27 | 2026-03-02 | A3120 SS+2d | 15d |
| A3180 |  | Fabricación Brazos radiales (spools repetitivos) | 1d | 2026-03-03 | 2026-03-03 | A3170 | 15d |
| A3190 |  | Fabricación Conjunto válvula/boquilla (DET. 1-5) | 1d | 2026-03-04 | 2026-03-04 | A3180 | 15d |
| A3200 |  | Control de calidad (QC) e inspecciones | 1d | 2026-03-05 | 2026-03-05 | A3190 | 15d |
|  | 7 | **Pre-armado en taller (armado en seco) / Despacho** |  | 2026-03-12 | 2026-03-16 |  |  |
| A3260 |  | Bastidor / estructura / Bandejas / Barandas / Parrillas FRP | 2d | 2026-03-12 | 2026-03-13 | A3060, A3110, A3140, A3160 | 15d |
| A3270 |  | Despacho | 1d | 2026-03-16 | 2026-03-16 | A3260 | 15d |
|  | 2 | **TAG 2225-ZM-(02 Unidades)-3** |  | 2026-02-27 | 2026-03-23 |  |  |
|  | 1 | **Bastidor** |  | 2026-02-27 | 2026-03-18 |  |  |
| A3280 |  | Corte y Fabricación de Vigas y Perfil Z | 6d | 2026-02-27 | 2026-03-06 | A2980 FS-1d | 0d |
| A3290 |  | Corte y Fabricación de Consoldas Exteriores | 2d | 2026-02-27 | 2026-03-02 | A3280 SS | 10d |
| A3300 |  | Corte y Fabricación de Consoldas Centrales | 2d | 2026-03-03 | 2026-03-04 | A3290 | 10d |
| A3310 |  | Corte y Fabricación Distribuidor 8" | 2d | 2026-03-05 | 2026-03-06 | A3300 | 10d |
| A3320 |  | Armado y Remates de Soldadura Bastidor | 2d | 2026-03-09 | 2026-03-10 | A3280, A3310 | 10d |
| A3330 |  | Inspección de soldadura (VT, LP si aplica) | 1d | 2026-03-11 | 2026-03-11 | A3320 | 10d |
| A3340 |  | Granallado / Preparación de Superficie | 1d | 2026-03-12 | 2026-03-12 | A3330 | 10d |
| A3350 |  | Aplicación Capa Imprimante, Enlace y Terminación | 3d | 2026-03-13 | 2026-03-17 | A3340 | 10d |
| A3360 |  | Control de calidad (QC) e inspecciones | 1d | 2026-03-18 | 2026-03-18 | A3350 | 10d |
|  | 2 | **Bandeja Perimetral (12 Un)** |  | 2026-03-02 | 2026-03-17 |  |  |
| A3370 |  | Corte, perforado y conformado (fabricación del cuerpo) SS316L | 4d | 2026-03-02 | 2026-03-05 | A3280 SS+1d | 10d |
| A3380 |  | Cilindrado (fabricación del cuerpo) SS316L | 2d | 2026-03-06 | 2026-03-09 | A3370 | 11d |
| A3390 |  | Armado, Soldadura y Rectificado de Bandejas | 3d | 2026-03-10 | 2026-03-12 | A3380 | 11d |
| A3400 |  | Terminaciones superficiales (Limpieza, Decapado, Pasivado) | 2d | 2026-03-13 | 2026-03-16 | A3390 | 11d |
| A3410 |  | Control de calidad (QC) e inspecciones | 1d | 2026-03-17 | 2026-03-17 | A3400 | 11d |
|  | 3 | **Bandeja Central (12 Un)** |  | 2026-03-02 | 2026-03-17 |  |  |
| A3510 |  | Corte, perforado y conformado (fabricación del cuerpo) SS316L | 4d | 2026-03-02 | 2026-03-05 | A3370 SS | 14d |
| A3520 |  | Cilindrado (fabricación del cuerpo) SS316L | 2d | 2026-03-06 | 2026-03-09 | A3510 | 14d |
| A3530 |  | Armado, Soldadura y Rectificado de Bandejas | 3d | 2026-03-10 | 2026-03-12 | A3520 | 14d |
| A3540 |  | Terminaciones superficiales (Limpieza, Decapado, Pasivado) | 2d | 2026-03-13 | 2026-03-16 | A3530 | 14d |
| A3550 |  | Control de calidad (QC) e inspecciones | 1d | 2026-03-17 | 2026-03-17 | A3540 | 14d |
|  | 4 | **Barandas (16 Un)** |  | 2026-03-04 | 2026-03-18 |  |  |
| A3420 |  | Fabricación Baranda radial removible | 7d | 2026-03-04 | 2026-03-12 | A3370 SS+2d | 10d |
| A3430 |  | Aplicación Capa Imprimante, Enlace y Terminación | 3d | 2026-03-13 | 2026-03-17 | A3420 | 10d |
| A3440 |  | Control de calidad (QC) e inspecciones | 1d | 2026-03-18 | 2026-03-18 | A3430 | 10d |
|  | 5 | **Parrilla de Piso (36 Un)** |  | 2026-03-13 | 2026-03-18 |  |  |
| A3450 |  | Trazado y Corte de FRP | 3d | 2026-03-13 | 2026-03-17 | A3500 | 10d |
| A3460 |  | Control de calidad (QC) e inspecciones | 1d | 2026-03-18 | 2026-03-18 | A3450 | 10d |
|  | 6 | **Manifold Distribuidor** |  | 2026-03-06 | 2026-03-12 |  |  |
| A3470 |  | Fabricación del cuerpo central (spool/cabezal) | 2d | 2026-03-06 | 2026-03-09 | A3420 SS+2d | 10d |
| A3480 |  | Fabricación Brazos radiales (spools repetitivos) | 1d | 2026-03-10 | 2026-03-10 | A3470 | 10d |
| A3490 |  | Fabricación Conjunto válvula/boquilla (DET. 1-5) | 1d | 2026-03-11 | 2026-03-11 | A3480 | 10d |
| A3500 |  | Control de calidad (QC) e inspecciones | 1d | 2026-03-12 | 2026-03-12 | A3490 | 10d |
|  | 7 | **Pre-armado en taller (armado en seco) / Despacho** |  | 2026-03-19 | 2026-03-23 |  |  |
| A3560 |  | Bastidor / estructura / Bandejas / Barandas / Parrillas FRP | 2d | 2026-03-19 | 2026-03-20 | A3360, A3410, A3440, A3460 | 10d |
| A3570 |  | Despacho | 1d | 2026-03-23 | 2026-03-23 | A3560 | 10d |
|  | 3 | **TAG 2225-ZM-(02 Unidades)-4** |  | 2026-03-06 | 2026-03-30 |  |  |
|  | 1 | **Bastidor** |  | 2026-03-06 | 2026-03-25 |  |  |
| A3580 |  | Corte y Fabricación de Vigas y Perfil Z | 6d | 2026-03-06 | 2026-03-13 | A3280 FS-1d | 0d |
| A3590 |  | Corte y Fabricación de Consoldas Exteriores | 2d | 2026-03-06 | 2026-03-09 | A3580 SS | 5d |
| A3600 |  | Corte y Fabricación de Consoldas Centrales | 2d | 2026-03-10 | 2026-03-11 | A3590 | 5d |
| A3610 |  | Corte y Fabricación Distribuidor 8" | 2d | 2026-03-12 | 2026-03-13 | A3600 | 5d |
| A3620 |  | Armado y Remates de Soldadura Bastidor | 2d | 2026-03-16 | 2026-03-17 | A3580, A3610 | 5d |
| A3630 |  | Inspección de soldadura (VT, LP si aplica) | 1d | 2026-03-18 | 2026-03-18 | A3620 | 5d |
| A3640 |  | Granallado / Preparación de Superficie | 1d | 2026-03-19 | 2026-03-19 | A3630 | 5d |
| A3650 |  | Aplicación Capa Imprimante, Enlace y Terminación | 3d | 2026-03-20 | 2026-03-24 | A3640 | 5d |
| A3660 |  | Control de calidad (QC) e inspecciones | 1d | 2026-03-25 | 2026-03-25 | A3650 | 5d |
|  | 2 | **Bandeja Perimetral (12 Un)** |  | 2026-03-09 | 2026-03-24 |  |  |
| A3670 |  | Corte, perforado y conformado (fabricación del cuerpo) SS316L | 4d | 2026-03-09 | 2026-03-12 | A3580 SS+1d | 5d |
| A3680 |  | Cilindrado (fabricación del cuerpo) SS316L | 2d | 2026-03-13 | 2026-03-16 | A3670 | 6d |
| A3690 |  | Armado, Soldadura y Rectificado de Bandejas | 3d | 2026-03-17 | 2026-03-19 | A3680 | 6d |
| A3700 |  | Terminaciones superficiales (Limpieza, Decapado, Pasivado) | 2d | 2026-03-20 | 2026-03-23 | A3690 | 6d |

| ID | WBS | Task | Duration | Start | Finish | Predecessors | Total float |
| --- | --- | --- | --- | --- | --- | --- | --- |
| A3710 |  | Control de calidad (QC) e inspecciones | 1d | 2026-03-24 | 2026-03-24 | A3700 | 6d |
|  | 3 | **Bandeja Central (12 Un)** |  | 2026-03-09 | 2026-03-24 |  |  |
| A3810 |  | Corte, perforado y conformado (fabricación del cuerpo) SS316L | 4d | 2026-03-09 | 2026-03-12 | A3670 SS | 9d |
| A3820 |  | Cilindrado (fabricación del cuerpo) SS316L | 2d | 2026-03-13 | 2026-03-16 | A3810 | 9d |
| A3830 |  | Armado, Soldadura y Rectificado de Bandejas | 3d | 2026-03-17 | 2026-03-19 | A3820 | 9d |
| A3840 |  | Terminaciones superficiales (Limpieza, Decapado, Pasivado) | 2d | 2026-03-20 | 2026-03-23 | A3830 | 9d |
| A3850 |  | Control de calidad (QC) e inspecciones | 1d | 2026-03-24 | 2026-03-24 | A3840 | 9d |
|  | 4 | **Barandas (16 Un)** |  | 2026-03-11 | 2026-03-25 |  |  |
| A3720 |  | Fabricación Baranda radial removible | 7d | 2026-03-11 | 2026-03-19 | A3670 SS+2d | 5d |
| A3730 |  | Aplicación Capa Imprimante, Enlace y Terminación | 3d | 2026-03-20 | 2026-03-24 | A3720 | 5d |
| A3740 |  | Control de calidad (QC) e inspecciones | 1d | 2026-03-25 | 2026-03-25 | A3730 | 5d |
|  | 5 | **Parrilla de Piso (36 Un)** |  | 2026-03-20 | 2026-03-25 |  |  |
| A3750 |  | Trazado y Corte de FRP | 3d | 2026-03-20 | 2026-03-24 | A3800 | 5d |
| A3760 |  | Control de calidad (QC) e inspecciones | 1d | 2026-03-25 | 2026-03-25 | A3750 | 5d |
|  | 6 | **Manifold Distribuidor** |  | 2026-03-13 | 2026-03-19 |  |  |
| A3770 |  | Fabricación del cuerpo central (spool/cabezal) | 2d | 2026-03-13 | 2026-03-16 | A3720 SS+2d | 5d |
| A3780 |  | Fabricación Brazos radiales (spools repetitivos) | 1d | 2026-03-17 | 2026-03-17 | A3770 | 5d |
| A3790 |  | Fabricación Conjunto válvula/boquilla (DET. 1-5) | 1d | 2026-03-18 | 2026-03-18 | A3780 | 5d |
| A3800 |  | Control de calidad (QC) e inspecciones | 1d | 2026-03-19 | 2026-03-19 | A3790 | 5d |
|  | 7 | **Pre-armado en taller (armado en seco) / Despacho** |  | 2026-03-26 | 2026-03-30 |  |  |
| A3860 |  | Bastidor / estructura / Bandejas / Barandas / Parrillas FRP | 2d | 2026-03-26 | 2026-03-27 | A3660, A3710, A3740, A3760 | 5d |
| A3870 |  | Despacho | 1d | 2026-03-30 | 2026-03-30 | A3860 | 5d |
|  | 4 | **TAG 2225-ZM-(02 Unidades)-5** |  | 2026-03-13 | 2026-04-06 |  |  |
|  | 1 | **Bastidor** |  | 2026-03-13 | 2026-04-01 |  |  |
| A3880 |  | Corte y Fabricación de Vigas y Perfil Z | 6d | 2026-03-13 | 2026-03-20 | A3580 FS-1d | 0d |
| A3890 |  | Corte y Fabricación de Consoldas Exteriores | 2d | 2026-03-13 | 2026-03-16 | A3880 SS | 0d |
| A3900 |  | Corte y Fabricación de Consoldas Centrales | 2d | 2026-03-17 | 2026-03-18 | A3890 | 0d |
| A3910 |  | Corte y Fabricación Distribuidor 8" | 2d | 2026-03-19 | 2026-03-20 | A3900 | 0d |
| A3920 |  | Armado y Remates de Soldadura Bastidor | 2d | 2026-03-23 | 2026-03-24 | A3880, A3910 | 0d |
| A3930 |  | Inspección de soldadura (VT, LP si aplica) | 1d | 2026-03-25 | 2026-03-25 | A3920 | 0d |
| A3940 |  | Granallado / Preparación de Superficie | 1d | 2026-03-26 | 2026-03-26 | A3930 | 0d |
| A3950 |  | Aplicación Capa Imprimante, Enlace y Terminación | 3d | 2026-03-27 | 2026-03-31 | A3940 | 0d |
| A3960 |  | Control de calidad (QC) e inspecciones | 1d | 2026-04-01 | 2026-04-01 | A3950 | 0d |
|  | 2 | **Bandeja Perimetral (12 Un)** |  | 2026-03-16 | 2026-03-31 |  |  |
| A3970 |  | Corte, perforado y conformado (fabricación del cuerpo) SS316L | 4d | 2026-03-16 | 2026-03-19 | A3880 SS+1d | 0d |
| A3980 |  | Cilindrado (fabricación del cuerpo) SS316L | 2d | 2026-03-20 | 2026-03-23 | A3970 | 1d |
| A3990 |  | Armado, Soldadura y Rectificado de Bandejas | 3d | 2026-03-24 | 2026-03-26 | A3980 | 1d |
| A4000 |  | Terminaciones superficiales (Limpieza, Decapado, Pasivado) | 2d | 2026-03-27 | 2026-03-30 | A3990 | 1d |
| A4010 |  | Control de calidad (QC) e inspecciones | 1d | 2026-03-31 | 2026-03-31 | A4000 | 1d |
|  | 3 | **Bandeja Central (12 Un)** |  | 2026-03-16 | 2026-03-31 |  |  |
| A4110 |  | Corte, perforado y conformado (fabricación del cuerpo) SS316L | 4d | 2026-03-16 | 2026-03-19 | A3970 SS | 4d |
| A4120 |  | Cilindrado (fabricación del cuerpo) SS316L | 2d | 2026-03-20 | 2026-03-23 | A4110 | 4d |
| A4130 |  | Armado, Soldadura y Rectificado de Bandejas | 3d | 2026-03-24 | 2026-03-26 | A4120 | 4d |
| A4140 |  | Terminaciones superficiales (Limpieza, Decapado, Pasivado) | 2d | 2026-03-27 | 2026-03-30 | A4130 | 4d |
| A4150 |  | Control de calidad (QC) e inspecciones | 1d | 2026-03-31 | 2026-03-31 | A4140 | 4d |
|  | 4 | **Barandas (16 Un)** |  | 2026-03-18 | 2026-04-01 |  |  |
| A4020 |  | Fabricación Baranda radial removible | 7d | 2026-03-18 | 2026-03-26 | A3970 SS+2d | 0d |
| A4030 |  | Aplicación Capa Imprimante, Enlace y Terminación | 3d | 2026-03-27 | 2026-03-31 | A4020 | 0d |
| A4040 |  | Control de calidad (QC) e inspecciones | 1d | 2026-04-01 | 2026-04-01 | A4030 | 0d |
|  | 5 | **Parrilla de Piso (36 Un)** |  | 2026-03-27 | 2026-04-01 |  |  |
| A4050 |  | Trazado y Corte de FRP | 3d | 2026-03-27 | 2026-03-31 | A4100 | 0d |
| A4060 |  | Control de calidad (QC) e inspecciones | 1d | 2026-04-01 | 2026-04-01 | A4050 | 0d |
|  | 6 | **Manifold Distribuidor** |  | 2026-03-20 | 2026-03-26 |  |  |
| A4070 |  | Fabricación del cuerpo central (spool/cabezal) | 2d | 2026-03-20 | 2026-03-23 | A4020 SS+2d | 0d |
| A4080 |  | Fabricación Brazos radiales (spools repetitivos) | 1d | 2026-03-24 | 2026-03-24 | A4070 | 0d |
| A4090 |  | Fabricación Conjunto válvula/boquilla (DET. 1-5) | 1d | 2026-03-25 | 2026-03-25 | A4080 | 0d |
| A4100 |  | Control de calidad (QC) e inspecciones | 1d | 2026-03-26 | 2026-03-26 | A4090 | 0d |
|  | 7 | **Pre-armado en taller (armado en seco) / Despacho** |  | 2026-04-02 | 2026-04-06 |  |  |
| A4160 |  | Bastidor / estructura / Bandejas / Barandas / Parrillas FRP | 2d | 2026-04-02 | 2026-04-03 | A3960, A4010, A4040, A4060 | 0d |
| A4170 |  | Despacho | 1d | 2026-04-06 | 2026-04-06 | A4160 | 0d |

## Version 2 (data date 2026-02-15, saved 2026-02-17, file ot1844_W08.xer)

Note of the change: OT-1844: integrar XER W08/W09 y reporte EVM base

Last finish stays 2026-04-06. Complete tasks 0 → 1.

Changed:

| ID | Task | Start | Finish | Complete | Total float |
| --- | --- | --- | --- | --- | --- |
| 2 | **Hitos de Construcción** | 2026-03-09 → 2026-03-11 (+2d) |  |  |  |
| A1620 | Dos bandejas en Minera Spence a más tardar el 09-mar-2026. | 2026-03-09 → 2026-03-11 (+2d) | 2026-03-09 → 2026-03-11 (+2d) |  | 20d → 18d |
| 1 | **Suministro conjuntos sistema de agua de lavado** |  | 2026-02-18 → 2026-02-20 (+2d) |  |  |
| A1640 | Planos de Fabricación | 2026-02-02 A | 2026-02-13 A | 0% → 100% | 0d → none |
| A1660 | Suminstro de Materiales | 2026-02-05 → 2026-02-09 A (+4d) | 2026-02-18 → 2026-02-20 (+2d) | 0% → 70% |  |
| 8 | **TAG 2225-ZM-(02 Unidades)-1** |  | 2026-03-09 → 2026-03-11 (+2d) |  |  |
| 1 | **Bastidor** |  | 2026-03-04 → 2026-03-06 (+2d) |  |  |
| A2650 | Corte y Fabricación de Vigas y Perfil Z | 2026-02-13 A |  | 0% → 17% |  |
| A2660 | Corte y Fabricación de Consoldas Exteriores | 2026-02-13 A | 2026-02-16 → 2026-02-18 (+2d) | 0% → 10% | 20d → 18d |
| A2670 | Corte y Fabricación de Consoldas Centrales | 2026-02-17 → 2026-02-19 (+2d) | 2026-02-18 → 2026-02-20 (+2d) |  | 20d → 18d |
| A2680 | Corte y Fabricación Distribuidor 8" | 2026-02-19 → 2026-02-23 (+4d) | 2026-02-20 → 2026-02-24 (+4d) |  | 20d → 18d |
| A2690 | Armado y Remates de Soldadura Bastidor | 2026-02-23 → 2026-02-25 (+2d) | 2026-02-24 → 2026-02-26 (+2d) |  | 20d → 18d |
| A2710 | Inspección de soldadura (VT, LP si aplica) | 2026-02-25 → 2026-02-27 (+2d) | 2026-02-25 → 2026-02-27 (+2d) |  | 20d → 18d |
| A2720 | Granallado / Preparación de Superficie | 2026-02-26 → 2026-03-02 (+4d) | 2026-02-26 → 2026-03-02 (+4d) |  | 20d → 18d |
| A2730 | Aplicación Capa Imprimante, Enlace y Terminación | 2026-02-27 → 2026-03-03 (+4d) | 2026-03-03 → 2026-03-05 (+2d) |  | 20d → 18d |
| A2740 | Control de calidad (QC) e inspecciones | 2026-03-04 → 2026-03-06 (+2d) | 2026-03-04 → 2026-03-06 (+2d) |  | 20d → 18d |
| 2 | **Bandeja Perimetral (12 Un)** | 2026-02-16 → 2026-02-17 (+1d) | 2026-03-03 → 2026-03-04 (+1d) |  |  |
| A2750 | Corte, perforado y conformado (fabricación del cuerpo) SS316L | 2026-02-16 → 2026-02-17 (+1d) | 2026-02-19 → 2026-02-20 (+1d) |  | 20d → 19d |
| A2760 | Cilindrado (fabricación del cuerpo) SS316L | 2026-02-20 → 2026-02-23 (+3d) | 2026-02-23 → 2026-02-24 (+1d) |  | 21d → 20d |
| A2770 | Armado, Soldadura y Rectificado de Bandejas | 2026-02-24 → 2026-02-25 (+1d) | 2026-02-26 → 2026-02-27 (+1d) |  | 21d → 20d |
| A2780 | Terminaciones superficiales (Limpieza, Decapado, Pasivado) | 2026-02-27 → 2026-03-02 (+3d) | 2026-03-02 → 2026-03-03 (+1d) |  | 21d → 20d |
| A2790 | Control de calidad (QC) e inspecciones | 2026-03-03 → 2026-03-04 (+1d) | 2026-03-03 → 2026-03-04 (+1d) |  | 21d → 20d |
| 3 | **Bandeja Central (12 Un)** | 2026-02-16 → 2026-02-17 (+1d) | 2026-03-03 → 2026-03-04 (+1d) |  |  |
| A2890 | Corte, perforado y conformado (fabricación del cuerpo) SS316L | 2026-02-16 → 2026-02-17 (+1d) | 2026-02-19 → 2026-02-20 (+1d) |  | 24d → 23d |
| A2900 | Cilindrado (fabricación del cuerpo) SS316L | 2026-02-20 → 2026-02-23 (+3d) | 2026-02-23 → 2026-02-24 (+1d) |  | 24d → 23d |
| A2910 | Armado, Soldadura y Rectificado de Bandejas | 2026-02-24 → 2026-02-25 (+1d) | 2026-02-26 → 2026-02-27 (+1d) |  | 24d → 23d |
| A2920 | Terminaciones superficiales (Limpieza, Decapado, Pasivado) | 2026-02-27 → 2026-03-02 (+3d) | 2026-03-02 → 2026-03-03 (+1d) |  | 24d → 23d |
| A2930 | Control de calidad (QC) e inspecciones | 2026-03-03 → 2026-03-04 (+1d) | 2026-03-03 → 2026-03-04 (+1d) |  | 24d → 23d |
| 4 | **Barandas (16 Un)** | 2026-02-18 → 2026-02-19 (+1d) | 2026-03-04 → 2026-03-05 (+1d) |  |  |
| A2800 | Fabricación Baranda radial removible | 2026-02-18 → 2026-02-19 (+1d) | 2026-02-26 → 2026-02-27 (+1d) |  | 20d → 19d |
| A2810 | Aplicación Capa Imprimante, Enlace y Terminación | 2026-02-27 → 2026-03-02 (+3d) | 2026-03-03 → 2026-03-04 (+1d) |  | 20d → 19d |
| A2820 | Control de calidad (QC) e inspecciones | 2026-03-04 → 2026-03-05 (+1d) | 2026-03-04 → 2026-03-05 (+1d) |  | 20d → 19d |
| 5 | **Parrilla de Piso (36 Un)** | 2026-02-27 → 2026-03-02 (+3d) | 2026-03-04 → 2026-03-05 (+1d) |  |  |
| A2830 | Trazado y Corte de FRP | 2026-02-27 → 2026-03-02 (+3d) | 2026-03-03 → 2026-03-04 (+1d) |  | 20d → 19d |
| A2840 | Control de calidad (QC) e inspecciones | 2026-03-04 → 2026-03-05 (+1d) | 2026-03-04 → 2026-03-05 (+1d) |  | 20d → 19d |
| 6 | **Manifold Distribuidor** | 2026-02-20 → 2026-02-13 (-7d) | 2026-02-26 → 2026-02-27 (+1d) |  |  |
| A2850 | Fabricación del cuerpo central (spool/cabezal) | 2026-02-20 → 2026-02-13 A (-7d) | 2026-02-23 → 2026-02-24 (+1d) | 0% → 20% | 20d → 19d |
| A2860 | Fabricación Brazos radiales (spools repetitivos) | 2026-02-24 → 2026-02-25 (+1d) | 2026-02-24 → 2026-02-25 (+1d) |  | 20d → 19d |
| A2870 | Fabricación Conjunto válvula/boquilla (DET. 1-5) | 2026-02-25 → 2026-02-26 (+1d) | 2026-02-25 → 2026-02-26 (+1d) |  | 20d → 19d |
| A2880 | Control de calidad (QC) e inspecciones | 2026-02-26 → 2026-02-27 (+1d) | 2026-02-26 → 2026-02-27 (+1d) |  | 20d → 19d |
| 7 | **Pre-armado en taller (armado en seco) / Despacho** | 2026-03-05 → 2026-03-09 (+4d) | 2026-03-09 → 2026-03-11 (+2d) |  |  |
| A2940 | Bastidor / estructura / Bandejas / Barandas / Parrillas FRP | 2026-03-05 → 2026-03-09 (+4d) | 2026-03-06 → 2026-03-10 (+4d) |  | 20d → 18d |
| A2970 | Despacho | 2026-03-09 → 2026-03-11 (+2d) | 2026-03-09 → 2026-03-11 (+2d) |  | 20d → 18d |

## Version 3 (data date 2026-02-22, saved 2026-02-23, file ot1844_W09.xer)

Note of the change: OT-1844: integrar XER W08/W09 y reporte EVM base

Last finish stays 2026-04-06. Complete tasks 1 → 3.

Changed:

| ID | Task | Start | Finish | Complete | Total float | Predecessors |
| --- | --- | --- | --- | --- | --- | --- |
| 2 | **Hitos de Construcción** | 2026-03-11 → 2026-03-10 (-1d) |  |  |  |  |
| A1620 | Dos bandejas en Minera Spence a más tardar el 09-mar-2026. | 2026-03-11 → 2026-03-10 (-1d) | 2026-03-11 → 2026-03-10 (-1d) |  | 18d → 19d |  |
| 1 | **Suministro conjuntos sistema de agua de lavado** |  | 2026-02-20 → 2026-02-27 (+7d) |  |  |  |
| A1660 | Suminstro de Materiales |  | 2026-02-20 → 2026-02-27 (+7d) |  | 0d → 19d |  |
| 8 | **TAG 2225-ZM-(02 Unidades)-1** |  | 2026-03-11 → 2026-03-10 (-1d) |  |  |  |
| 1 | **Bastidor** |  | 2026-03-06 → 2026-03-05 (-1d) |  |  |  |
| A2650 | Corte y Fabricación de Vigas y Perfil Z |  | 2026-02-20 → 2026-02-26 (+6d) | 17% → 50% | 0d → 19d |  |
| A2660 | Corte y Fabricación de Consoldas Exteriores |  | 2026-02-18 → 2026-02-25 (+7d) | 10% → 50% | 18d → 27d |  |
| A2680 | Corte y Fabricación Distribuidor 8" | 2026-02-23 → 2026-02-20 A (-3d) |  | 0% → 50% | 18d → 22d | A2670 → none |
| A2670 | Corte y Fabricación de Consoldas Centrales | 2026-02-19 → 2026-02-25 (+6d) | 2026-02-20 → 2026-02-26 (+6d) |  | 18d → 27d | A2660 → A2660 FS-1d |
| A2690 | Armado y Remates de Soldadura Bastidor | 2026-02-25 → 2026-02-27 (+2d) | 2026-02-26 → 2026-02-28 (+2d) |  | 18d → 24d |  |
| A2710 | Inspección de soldadura (VT, LP si aplica) | 2026-02-27 → 2026-02-28 (+1d) | 2026-02-27 → 2026-02-28 (+1d) |  | 18d → 24d | A2690 → A2690 SS+1d |
| A2720 | Granallado / Preparación de Superficie | 2026-03-02 → 2026-03-01 (-1d) | 2026-03-02 → 2026-03-01 (-1d) |  | 18d → 28d |  |
| A2730 | Aplicación Capa Imprimante, Enlace y Terminación | 2026-03-03 → 2026-03-02 (-1d) | 2026-03-05 → 2026-03-04 (-1d) |  | 18d → 28d |  |
| A2740 | Control de calidad (QC) e inspecciones | 2026-03-06 → 2026-03-05 (-1d) | 2026-03-06 → 2026-03-05 (-1d) |  | 18d → 20d |  |
| 2 | **Bandeja Perimetral (12 Un)** | 2026-02-17 → 2026-02-16 (-1d) | 2026-03-04 → 2026-03-05 (+1d) |  |  |  |
| A2750 | Corte, perforado y conformado (fabricación del cuerpo) SS316L | 2026-02-17 → 2026-02-16 A (-1d) | 2026-02-20 A | 0% → 100% | 19d → none |  |
| A2760 | Cilindrado (fabricación del cuerpo) SS316L | 2026-02-23 → 2026-02-24 (+1d) | 2026-02-24 → 2026-02-25 (+1d) |  |  |  |
| A2770 | Armado, Soldadura y Rectificado de Bandejas | 2026-02-25 → 2026-02-26 (+1d) | 2026-02-27 → 2026-03-02 (+3d) |  |  |  |
| A2780 | Terminaciones superficiales (Limpieza, Decapado, Pasivado) | 2026-03-02 → 2026-03-03 (+1d) | 2026-03-03 → 2026-03-04 (+1d) |  |  |  |
| A2790 | Control de calidad (QC) e inspecciones | 2026-03-04 → 2026-03-05 (+1d) | 2026-03-04 → 2026-03-05 (+1d) |  |  |  |
| 3 | **Bandeja Central (12 Un)** | 2026-02-17 → 2026-02-16 (-1d) | 2026-03-04 → 2026-03-05 (+1d) |  |  |  |
| A2890 | Corte, perforado y conformado (fabricación del cuerpo) SS316L | 2026-02-17 → 2026-02-16 A (-1d) | 2026-02-20 A | 0% → 100% | 23d → none |  |
| A2900 | Cilindrado (fabricación del cuerpo) SS316L | 2026-02-23 → 2026-02-24 (+1d) | 2026-02-24 → 2026-02-25 (+1d) |  | 23d → 22d |  |
| A2910 | Armado, Soldadura y Rectificado de Bandejas | 2026-02-25 → 2026-02-26 (+1d) | 2026-02-27 → 2026-03-02 (+3d) |  | 23d → 22d |  |
| A2920 | Terminaciones superficiales (Limpieza, Decapado, Pasivado) | 2026-03-02 → 2026-03-03 (+1d) | 2026-03-03 → 2026-03-04 (+1d) |  | 23d → 22d |  |
| A2930 | Control de calidad (QC) e inspecciones | 2026-03-04 → 2026-03-05 (+1d) | 2026-03-04 → 2026-03-05 (+1d) |  | 23d → 22d |  |
| 4 | **Barandas (16 Un)** | 2026-02-19 → 2026-02-20 (+1d) | 2026-03-05 → 2026-03-06 (+1d) |  |  |  |
| A2800 | Fabricación Baranda radial removible | 2026-02-19 → 2026-02-20 A (+1d) | 2026-02-27 → 2026-03-02 (+3d) | 0% → 20% |  |  |
| A2810 | Aplicación Capa Imprimante, Enlace y Terminación | 2026-03-02 → 2026-03-03 (+1d) | 2026-03-04 → 2026-03-05 (+1d) |  |  |  |
| A2820 | Control de calidad (QC) e inspecciones | 2026-03-05 → 2026-03-06 (+1d) | 2026-03-05 → 2026-03-06 (+1d) |  |  |  |
| 5 | **Parrilla de Piso (36 Un)** | 2026-03-02 → 2026-03-03 (+1d) | 2026-03-05 → 2026-03-06 (+1d) |  |  |  |
| A2830 | Trazado y Corte de FRP | 2026-03-02 → 2026-03-03 (+1d) | 2026-03-04 → 2026-03-05 (+1d) |  |  |  |
| A2840 | Control de calidad (QC) e inspecciones | 2026-03-05 → 2026-03-06 (+1d) | 2026-03-05 → 2026-03-06 (+1d) |  |  |  |
| 6 | **Manifold Distribuidor** |  | 2026-02-27 → 2026-03-02 (+3d) |  |  |  |
| A2850 | Fabricación del cuerpo central (spool/cabezal) |  | 2026-02-24 → 2026-02-25 (+1d) | 20% → 80% |  |  |
| A2860 | Fabricación Brazos radiales (spools repetitivos) | 2026-02-25 → 2026-02-26 (+1d) | 2026-02-25 → 2026-02-26 (+1d) |  |  |  |
| A2870 | Fabricación Conjunto válvula/boquilla (DET. 1-5) | 2026-02-26 → 2026-02-27 (+1d) | 2026-02-26 → 2026-02-27 (+1d) |  |  |  |
| A2880 | Control de calidad (QC) e inspecciones | 2026-02-27 → 2026-03-02 (+3d) | 2026-02-27 → 2026-03-02 (+3d) |  |  |  |
| 7 | **Pre-armado en taller (armado en seco) / Despacho** | 2026-03-09 → 2026-03-07 (-2d) | 2026-03-11 → 2026-03-10 (-1d) |  |  |  |
| A2940 | Bastidor / estructura / Bandejas / Barandas / Parrillas FRP | 2026-03-09 → 2026-03-07 (-2d) | 2026-03-10 → 2026-03-09 (-1d) |  | 18d → 23d |  |
| A2970 | Despacho | 2026-03-11 → 2026-03-10 (-1d) | 2026-03-11 → 2026-03-10 (-1d) |  | 18d → 19d |  |
| 1 | **TAG 2225-ZM-(02 Unidades)-2** | 2026-02-20 → 2026-02-16 (-4d) |  |  |  |  |
| 1 | **Bastidor** | 2026-02-20 → 2026-02-16 (-4d) |  |  |  |  |
| A2980 | Corte y Fabricación de Vigas y Perfil Z | 2026-02-20 → 2026-02-16 A (-4d) |  | 0% → 30% |  | A2650 FS-1d → none |
| A2990 | Corte y Fabricación de Consoldas Exteriores | 2026-02-20 → 2026-02-23 (+3d) | 2026-02-23 → 2026-02-24 (+1d) |  |  |  |
| A3000 | Corte y Fabricación de Consoldas Centrales | 2026-02-24 → 2026-02-25 (+1d) | 2026-02-25 → 2026-02-26 (+1d) |  |  |  |
| A3010 | Corte y Fabricación Distribuidor 8" | 2026-02-26 → 2026-02-27 (+1d) | 2026-02-27 → 2026-03-02 (+3d) |  |  |  |
| A3020 | Armado y Remates de Soldadura Bastidor | 2026-03-02 → 2026-03-03 (+1d) | 2026-03-03 → 2026-03-04 (+1d) |  |  |  |
| A3030 | Inspección de soldadura (VT, LP si aplica) | 2026-03-04 → 2026-03-05 (+1d) | 2026-03-04 → 2026-03-05 (+1d) |  |  |  |
| A3040 | Granallado / Preparación de Superficie | 2026-03-05 → 2026-03-06 (+1d) | 2026-03-05 → 2026-03-06 (+1d) |  |  |  |
| A3050 | Aplicación Capa Imprimante, Enlace y Terminación | 2026-03-06 → 2026-03-07 (+1d) |  |  | 15d → 18d |  |
| 2 | **Bandeja Perimetral (12 Un)** | 2026-02-23 → 2026-02-16 (-7d) |  |  |  |  |
| A3070 | Corte, perforado y conformado (fabricación del cuerpo) SS316L | 2026-02-23 → 2026-02-16 A (-7d) |  | 0% → 50% | 15d → 16d |  |
| 3 | **Bandeja Central (12 Un)** | 2026-02-23 → 2026-02-16 (-7d) |  |  |  |  |
| A3210 | Corte, perforado y conformado (fabricación del cuerpo) SS316L | 2026-02-23 → 2026-02-16 A (-7d) |  | 0% → 50% |  |  |
| 4 | **Barandas (16 Un)** | 2026-02-25 → 2026-02-23 (-2d) | 2026-03-11 → 2026-03-09 (-2d) |  |  |  |
| A3120 | Fabricación Baranda radial removible | 2026-02-25 → 2026-02-23 (-2d) | 2026-03-05 → 2026-03-03 (-2d) |  | 15d → 17d |  |
| A3130 | Aplicación Capa Imprimante, Enlace y Terminación | 2026-03-06 → 2026-03-04 (-2d) | 2026-03-10 → 2026-03-06 (-4d) |  | 15d → 17d |  |
| A3140 | Control de calidad (QC) e inspecciones | 2026-03-11 → 2026-03-09 (-2d) | 2026-03-11 → 2026-03-09 (-2d) |  | 15d → 17d |  |
| 5 | **Parrilla de Piso (36 Un)** | 2026-03-06 → 2026-03-04 (-2d) | 2026-03-11 → 2026-03-09 (-2d) |  |  |  |
| A3150 | Trazado y Corte de FRP | 2026-03-06 → 2026-03-04 (-2d) | 2026-03-10 → 2026-03-06 (-4d) |  | 15d → 17d |  |
| A3160 | Control de calidad (QC) e inspecciones | 2026-03-11 → 2026-03-09 (-2d) | 2026-03-11 → 2026-03-09 (-2d) |  | 15d → 17d |  |
| 6 | **Manifold Distribuidor** | 2026-02-27 → 2026-02-25 (-2d) | 2026-03-05 → 2026-03-03 (-2d) |  |  |  |
| A3170 | Fabricación del cuerpo central (spool/cabezal) | 2026-02-27 → 2026-02-25 (-2d) | 2026-03-02 → 2026-02-26 (-4d) |  | 15d → 17d |  |
| A3180 | Fabricación Brazos radiales (spools repetitivos) | 2026-03-03 → 2026-02-27 (-4d) | 2026-03-03 → 2026-02-27 (-4d) |  | 15d → 17d |  |
| A3190 | Fabricación Conjunto válvula/boquilla (DET. 1-5) | 2026-03-04 → 2026-03-02 (-2d) | 2026-03-04 → 2026-03-02 (-2d) |  | 15d → 17d |  |
| A3200 | Control de calidad (QC) e inspecciones | 2026-03-05 → 2026-03-03 (-2d) | 2026-03-05 → 2026-03-03 (-2d) |  | 15d → 17d |  |
| 2 | **TAG 2225-ZM-(02 Unidades)-3** | 2026-02-27 → 2026-02-16 (-11d) |  |  |  |  |
| 2 | **Bandeja Perimetral (12 Un)** | 2026-03-02 → 2026-02-16 (-14d) |  |  |  |  |

| ID | Task | Start | Finish | Complete | Total float |
| --- | --- | --- | --- | --- | --- |
| A3370 | Corte, perforado y conformado (fabricación del cuerpo) SS316L | 2026-03-02 → 2026-02-16 A (-14d) |  | 0% → 50% | 10d → 11d |
| 3 | **Bandeja Central (12 Un)** | 2026-03-02 → 2026-02-16 (-14d) |  |  |  |
| A3510 | Corte, perforado y conformado (fabricación del cuerpo) SS316L | 2026-03-02 → 2026-02-16 A (-14d) |  | 0% → 50% |  |
| 4 | **Barandas (16 Un)** | 2026-03-04 → 2026-03-02 (-2d) | 2026-03-18 → 2026-03-16 (-2d) |  |  |
| A3420 | Fabricación Baranda radial removible | 2026-03-04 → 2026-03-02 (-2d) | 2026-03-12 → 2026-03-10 (-2d) |  | 10d → 12d |
| A3430 | Aplicación Capa Imprimante, Enlace y Terminación | 2026-03-13 → 2026-03-11 (-2d) | 2026-03-17 → 2026-03-13 (-4d) |  | 10d → 12d |
| A3440 | Control de calidad (QC) e inspecciones | 2026-03-18 → 2026-03-16 (-2d) | 2026-03-18 → 2026-03-16 (-2d) |  | 10d → 12d |
| 5 | **Parrilla de Piso (36 Un)** | 2026-03-13 → 2026-03-11 (-2d) | 2026-03-18 → 2026-03-16 (-2d) |  |  |
| A3450 | Trazado y Corte de FRP | 2026-03-13 → 2026-03-11 (-2d) | 2026-03-17 → 2026-03-13 (-4d) |  | 10d → 12d |
| A3460 | Control de calidad (QC) e inspecciones | 2026-03-18 → 2026-03-16 (-2d) | 2026-03-18 → 2026-03-16 (-2d) |  | 10d → 12d |
| 6 | **Manifold Distribuidor** | 2026-03-06 → 2026-03-04 (-2d) | 2026-03-12 → 2026-03-10 (-2d) |  |  |
| A3470 | Fabricación del cuerpo central (spool/cabezal) | 2026-03-06 → 2026-03-04 (-2d) | 2026-03-09 → 2026-03-05 (-4d) |  | 10d → 12d |
| A3480 | Fabricación Brazos radiales (spools repetitivos) | 2026-03-10 → 2026-03-06 (-4d) | 2026-03-10 → 2026-03-06 (-4d) |  | 10d → 12d |
| A3490 | Fabricación Conjunto válvula/boquilla (DET. 1-5) | 2026-03-11 → 2026-03-09 (-2d) | 2026-03-11 → 2026-03-09 (-2d) |  | 10d → 12d |
| A3500 | Control de calidad (QC) e inspecciones | 2026-03-12 → 2026-03-10 (-2d) | 2026-03-12 → 2026-03-10 (-2d) |  | 10d → 12d |
| 3 | **TAG 2225-ZM-(02 Unidades)-4** | 2026-03-06 → 2026-02-16 (-18d) |  |  |  |
| 2 | **Bandeja Perimetral (12 Un)** | 2026-03-09 → 2026-02-16 (-21d) |  |  |  |
| A3670 | Corte, perforado y conformado (fabricación del cuerpo) SS316L | 2026-03-09 → 2026-02-16 A (-21d) |  | 0% → 50% | 5d → 6d |
| 3 | **Bandeja Central (12 Un)** | 2026-03-09 → 2026-02-16 (-21d) |  |  |  |
| A3810 | Corte, perforado y conformado (fabricación del cuerpo) SS316L | 2026-03-09 → 2026-02-16 A (-21d) |  | 0% → 50% |  |
| 4 | **Barandas (16 Un)** | 2026-03-11 → 2026-03-09 (-2d) | 2026-03-25 → 2026-03-23 (-2d) |  |  |
| A3720 | Fabricación Baranda radial removible | 2026-03-11 → 2026-03-09 (-2d) | 2026-03-19 → 2026-03-17 (-2d) |  | 5d → 7d |
| A3730 | Aplicación Capa Imprimante, Enlace y Terminación | 2026-03-20 → 2026-03-18 (-2d) | 2026-03-24 → 2026-03-20 (-4d) |  | 5d → 7d |
| A3740 | Control de calidad (QC) e inspecciones | 2026-03-25 → 2026-03-23 (-2d) | 2026-03-25 → 2026-03-23 (-2d) |  | 5d → 7d |
| 5 | **Parrilla de Piso (36 Un)** | 2026-03-20 → 2026-03-18 (-2d) | 2026-03-25 → 2026-03-23 (-2d) |  |  |
| A3750 | Trazado y Corte de FRP | 2026-03-20 → 2026-03-18 (-2d) | 2026-03-24 → 2026-03-20 (-4d) |  | 5d → 7d |
| A3760 | Control de calidad (QC) e inspecciones | 2026-03-25 → 2026-03-23 (-2d) | 2026-03-25 → 2026-03-23 (-2d) |  | 5d → 7d |
| 6 | **Manifold Distribuidor** | 2026-03-13 → 2026-03-11 (-2d) | 2026-03-19 → 2026-03-17 (-2d) |  |  |
| A3770 | Fabricación del cuerpo central (spool/cabezal) | 2026-03-13 → 2026-03-11 (-2d) | 2026-03-16 → 2026-03-12 (-4d) |  | 5d → 7d |
| A3780 | Fabricación Brazos radiales (spools repetitivos) | 2026-03-17 → 2026-03-13 (-4d) | 2026-03-17 → 2026-03-13 (-4d) |  | 5d → 7d |
| A3790 | Fabricación Conjunto válvula/boquilla (DET. 1-5) | 2026-03-18 → 2026-03-16 (-2d) | 2026-03-18 → 2026-03-16 (-2d) |  | 5d → 7d |
| A3800 | Control de calidad (QC) e inspecciones | 2026-03-19 → 2026-03-17 (-2d) | 2026-03-19 → 2026-03-17 (-2d) |  | 5d → 7d |
