# Programa de Seguimiento MEM Patio de Estanques y OOCC Misceláneos 11-03-26 - Nueva LB

How a schedule from Primavera P6 changed from version to version. A marks actual dates.

## Version 1 (data date 2025-06-30, saved 2026-03-14, file 15682-SEG-1.LB Seguimiento Forecast.xer)

Note of the change: chore: actualizar XER 15682-SEG y limpiar tests raíz obsoletos

| ID | WBS | Task | Duration | Start | Finish | Predecessors | Total float | Constraint |
| --- | --- | --- | --- | --- | --- | --- | --- | --- |
|  | 1 | **HITOS** |  | 2025-06-30 | 2026-04-14 |  |  |  |
| A1000 |  | Inicio de Proyecto | 0d | 2025-06-30 | 2025-06-30 |  | 0.67d |  |
| A1010 |  | Movilización, Instalación de Faenas y Proceso de Acreditación MEM Patio de Estanques | 14d | 2025-06-30 | 2025-07-13 | A1000 SS | 0.67d |  |
| A1020 |  | Adjudicación OOCC Misceláneos Addendum 01 | 0d | 2025-08-28 | 2025-08-28 |  | 0d | start on or after 2025-08-28 |
| A1030 |  | Proceso de Acreditación OOCC Misceláneos | 14d | 2025-08-28 | 2025-09-10 | A1020 | 0d |  |
| A1040 |  | Desmovilización | 14d | 2026-04-01 | 2026-04-14 | A1080, A1090 | 0d |  |
| A1050 |  | Término de Proyecto | 0d | 2026-04-14 | 2026-04-14 | A1040 FF, A1090 FF | 0d |  |
|  | 2 | **HITOS CONTRACTUALES** |  | 2025-07-14 | 2026-03-31 |  |  |  |
| A1060 |  | Inicio Constructuvo Contractual MEM Patio de Estanques | 0d | 2025-07-14 | 2025-07-14 | A1010 | 0.67d |  |
| A1070 |  | Inicio Constructuvo Contractual OOCC Misceláneos (Addendum 01) | 0d | 2025-09-11 | 2025-09-11 | A1030 | 0d |  |
| A1080 |  | Término Constructivo Contractual MEM Patio de Estanques | 0d | 2026-03-31 | 2026-03-31 | A2180 FF, A1940, A3250 FF, A3940, A1910, A2030 FF, A1380 FF, A1430 FF, A1740 FF, A1720 FF | 0.67d |  |
| A1090 |  | Término Constructivo Contractual OOCC Misceláneos (Addendum 01) | 0d | 2026-03-31 | 2026-03-31 | A4690 FF, A5170 FF, A7440, A3910 FF, A3980 FF, A8330, A8810, A4060, A4480, A5950, A6490, A8550, A7670 FF, A6870 FF, A1920 FF, A4660 FF, A6200 FF, A6780 FF, A4380 FF | 0d |  |
|  | 3 | **CONSTRUCCIÓN** |  | 2025-07-14 | 2026-03-31 |  |  |  |
|  | 1 | **CONTRATO SC15682 - MEM PATIO DE ESTANQUES** |  | 2025-07-14 | 2026-03-31 |  |  |  |
|  | 1 | **SECTOR PATIO DE ESTANQUES** |  | 2025-07-14 | 2026-03-31 |  |  |  |
|  | 1 | **OBRAS MECÁNICAS PATIO DE ESTANQUES** |  | 2025-07-14 | 2026-01-18 |  |  |  |
|  | 1 | **MONTAJE DE ESTANQUES** |  | 2025-07-14 | 2025-10-19 |  |  |  |
|  | 1 | **MONTAJE DE ESTANQUES RED CONTRA INCENDIOS (RCI)** |  | 2025-07-14 | 2025-10-19 |  |  |  |
| A1100 |  | Estanques de Agua para RCI TAG: 5764-EST-001 | 98d | 2025-07-14 | 2025-10-19 | A1060 SS | 0.67d |  |
| A1110 |  | Estanques de Agua para RCI TAG: 5764-EST-015 | 83d | 2025-07-19 | 2025-10-09 | A1100 SS+5d | 0.67d |  |
|  | 2 | **MONTAJE DE ESTANQUES DE AGUA, ÁREA 1000** |  | 2025-07-24 | 2025-10-17 |  |  |  |
| A1130 |  | Estanque Agua Industrial y Plataforma Superior TAG: 5817-EST-1041 | 76d | 2025-07-24 | 2025-10-07 | A1110 SS+5d | 0.67d |  |
| A1140 |  | Estanque Agua Potable y Plataforma Superior TAG: 5817-EST-1071 | 79d | 2025-07-29 | 2025-10-15 | A1130 SS+5d | 0.67d |  |
| A1120 |  | Estanque Agua Ultrapura y Plataforma Superior TAG: 5817-EST-1001 | 76d | 2025-08-03 | 2025-10-17 | A1140 SS+5d | 0.67d |  |
|  | 2 | **MONTAJE DE BOMBAS PATIO ESTANQUES** |  | 2025-07-24 | 2026-01-18 |  |  |  |
| A1170 |  | Bomba Centrífuga y Motor TAG: 5817-BBA-1052; 5817-MTR-1053 | 9d | 2025-07-24 | 2025-08-01 | A1110 SS+5d | 72d |  |
| A1150 |  | Bomba Centrífuga y Motor TAG: 5817-BBA-1042; 5817-MTR-1043 | 9d | 2025-08-02 | 2025-08-10 | A1170 | 72d |  |
| A1190 |  | Bomba Centrífuga y Motor TAG: 5817-BBA-1074; 5817-MTR-1075 | 9d | 2025-08-11 | 2025-08-19 | A1150 | 72d |  |
| A1210 |  | Bomba Centrífuga y Motor TAG: 5817-BBA-1080; 5817-MTR-1081 | 9d | 2025-08-20 | 2025-08-28 | A1190 | 72d |  |
| A1220 |  | Bomba Centrífuga y Motor TAG: 5817-BBA-1083; 5817-MTR-1084 | 9d | 2025-08-29 | 2025-09-06 | A1210 | 72d |  |
| A1160 |  | Bomba Centrífuga y Motor TAG: 5817-BBA-1072; 5817-MTR-1073 | 9d | 2025-09-07 | 2025-09-15 | A1220 | 72d |  |
| A1180 |  | Bomba Centrífuga y Motor TAG: 5817-BBA-1055; 5817-MTR-1056 | 9d | 2025-09-16 | 2025-09-24 | A1160 | 72d |  |
| A1200 |  | Bomba Centrífuga y Motor TAG: 5817-BBA-1077; 5817-MTR-1078 | 9d | 2025-09-25 | 2025-10-03 | A1180 | 72d |  |
| A1250 |  | Bomba Centrífuga y Motor TAG: 5817-BBA-4009; 5817-MTR-4010 | 9d | 2025-10-04 | 2025-10-12 | A1200 | 72d |  |
| A1260 |  | Bomba Centrífuga y Motor TAG: 5817-BBA-4012; 5817-MTR-4013 | 9d | 2025-10-13 | 2025-10-21 | A1250 | 72d |  |
| A1270 |  | Bomba Centrífuga y Motor TAG: 5817-BBA-4015; 5817-MTR-4016 | 9d | 2025-10-22 | 2025-10-30 | A1260 | 72d |  |
| A1280 |  | Bomba Centrífuga y Motor TAG: 5817-BBA-4018; 5817-MTR-4019 | 9d | 2025-10-31 | 2025-11-08 | A1270 | 72d |  |
| A1290 |  | Bomba Centrífuga y Motor TAG: 5817-BBA-4021; 5817-MTR-4022 | 9d | 2025-11-09 | 2025-11-17 | A1280 | 72d |  |
| A1300 |  | Bomba Centrífuga y Motor TAG: 5817-BBA-4024; 5817-MTR-4025 | 9d | 2025-11-18 | 2025-11-26 | A1290 | 72d |  |
| A1330 |  | Bomba Centrífuga y Motor TAG: 5817-BBA-5008; 5817-MTR-5009 | 9d | 2025-11-27 | 2025-12-05 | A1300 | 72d |  |
| A1340 |  | Bomba Centrífuga y Motor TAG: 5817-BBA-5011; 5817-MTR-5012 | 9d | 2025-12-06 | 2025-12-14 | A1330 | 72d |  |
| A1350 |  | Bomba Sumidero y Motor TAG: 5817-BBS-1050; 5817-MTR-1051 | 9d | 2025-12-15 | 2025-12-23 | A1340 | 72d |  |
| A1360 |  | Bomba Sumidero y Motor TTAG: 5817-BBS-4026; 5817-MTR-4027 | 9d | 2025-12-24 | 2026-01-01 | A1350 | 72d |  |
| A1370 |  | Bomba Sumidero y Motor TAG: 5817-BBS-5014; 5817-MTR-5015 | 9d | 2026-01-02 | 2026-01-10 | A1360 | 72d |  |
| A1380 |  | Alineamiento digital de Bombas de Proyecto | 8d | 2026-01-11 | 2026-01-18 | A1370 | 72d |  |
|  | 3 | **OBRAS ESTRUCTURALES PATIO DE ESTANQUES** |  | 2025-10-08 | 2026-02-06 |  |  |  |
|  | 1 | **MONTAJE DE ESTRUCTURA DE ACCESO E INTERCONEXIÓN DE ESTANQUES** |  | 2025-10-08 | 2025-10-17 |  |  |  |
| A1430 |  | Montaje de Acceso e Interconexión de Estanques TAG: 5817-EST-1001; 5817-EST-1041; 5817-EST-1071 | 10d | 2025-10-08 | 2025-10-17 | A1120 FF | 165d |  |
|  | 2 | **MONTAJE DE PARRÓN PATIO DE ESTANQUES ÁREA 7000** |  | 2025-10-18 | 2025-11-21 |  |  |  |
| A1440 |  | Parron Patio de Estanques Estructura liviana | 30d | 2025-10-18 | 2025-11-16 | A1100 SS, A1120 | 29d |  |
| A1450 |  | Parron Patio de Estanques Estructura Mediana | 25d | 2025-10-23 | 2025-11-16 | A1440 SS+5d | 29d |  |
| A1460 |  | Parron Patio de Estanques Estructura Pesada | 25d | 2025-10-28 | 2025-11-21 | A1450 SS+5d | 41d |  |
|  | 3 | **MONTAJE PLATAFORMA DE OPERACIÓN ÁREA 4000** |  | 2025-11-22 | 2025-12-11 |  |  |  |
| A1480 |  | Plataforma de Operación Área 4000 Estructura Liviana | 4d | 2025-11-22 | 2025-11-25 | A1460 | 41d |  |
| A1490 |  | Plataforma de Operación Área 4000 Estructura Mediana | 10d | 2025-11-26 | 2025-12-05 | A1480 | 52d |  |
| A1500 |  | Plataforma de Operación Área 4000 Planchas | 2d | 2025-11-26 | 2025-11-27 | A1480 | 46d |  |
| A1510 |  | Plataforma de Operación Área 4000 Grating | 9d | 2025-11-28 | 2025-12-06 | A1500 | 46d |  |
| A1520 |  | Plataforma de Operación Área 4000 Barandas FRP | 5d | 2025-12-07 | 2025-12-11 | A1510 | 46d |  |
|  | 4 | **MONTAJE PLATAFORMA DE OPERACIÓN ÁREA 5000** |  | 2025-11-26 | 2025-12-19 |  |  |  |
| A1540 |  | Plataforma de Operación Área 5000 Estructura Mediana | 8d | 2025-11-26 | 2025-12-03 | A1480 SS, A1480 | 41d |  |
| A1530 |  | Plataforma de Operación Área 5000 Estructura Liviana | 4d | 2025-12-04 | 2025-12-07 | A1540 | 41d |  |
| A1550 |  | Plataforma de Operación Área 5000. Planchas | 3d | 2025-12-08 | 2025-12-10 | A1530 | 41d |  |
| A1560 |  | Plataforma de Operación Área 5000. Grating T3232 | 6d | 2025-12-11 | 2025-12-16 | A1550 | 41d |  |
| A1570 |  | Plataforma de Operación Área 5000. Barandas FRP Grado 3 | 3d | 2025-12-17 | 2025-12-19 | A1560, A1520, A1490 | 41d |  |
|  | 5 | **MONTAJE PARRÓN DESDE PATIO DE ESTANQUES A L5 LiOH** |  | 2025-11-17 | 2026-02-06 |  |  |  |
| A1600 |  | Estructura A36 Pesada: > 61 Kg /m Parrón desde Patio de Estanques hasta L5 LiOH. | 77d | 2025-11-17 | 2026-02-01 | A1450 | 29d |  |
| A1590 |  | Estructura A36 Mediana 31@60 Kg /m Parrón desde Patio de Estanques hasta L5 LiOH. | 77d | 2025-11-22 | 2026-02-06 | A1600 SS+5d | 29d |  |
| A1580 |  | Estructura A36 Liviana 0@30 Kg /m Parrón desde Patio de Estanques hasta L5 LiOH. | 35d | 2025-11-27 | 2025-12-31 | A1590 SS+5d, A1570 FF | 29d |  |
|  | 6 | **MONTAJE PARRÓN DESDE L5 LiOH A L3 LiOH** |  |  |  |  |  |  |
|  | 4 | **OBRAS PIPING PATIO DE ESTANQUES** |  | 2025-08-08 | 2026-03-16 |  |  |  |

| ID | WBS | Task | Duration | Start | Finish | Predecessors | Total float |
| --- | --- | --- | --- | --- | --- | --- | --- |
|  | 1 | **MONTAJE DE CAÑERÍAS ACERO INOXIDABLE PATIO DE ESTANQUES** |  | 2026-01-15 | 2026-03-07 |  |  |
| A1650 |  | Ø 6" - Cañería Acero Inoxidable | 10d | 2026-01-15 | 2026-01-24 | A1720, A1580 | 15d |
| A1640 |  | Ø 8" - Cañería Acero Inoxidable | 7d | 2026-01-25 | 2026-01-31 | A1650 | 24d |
| A1660 |  | Ø 4" - Cañería Acero Inoxidable | 7d | 2026-02-01 | 2026-02-07 | A1640 | 24d |
| A1680 |  | Ø 2" - Cañería Acero Inoxidable | 14d | 2026-02-08 | 2026-02-21 | A1660, A1640 | 24d |
| A1670 |  | Ø 3" - Cañería Acero Inoxidable | 7d | 2026-02-22 | 2026-02-28 | A1680 | 24d |
| A1690 |  | Ø 1" - Cañería Acero Inoxidable | 7d | 2026-03-01 | 2026-03-07 | A1670, A1830 FF | 24d |
|  | 2 | **MONTAJE DE CAÑERÍAS HDPE PN16 (P1) PATIO DE ESTANQUES** |  | 2025-08-08 | 2026-03-14 |  |  |
| A1720 |  | Ø 160 mm - Cañería HDPE, PE 100, PN10 | 160d | 2025-08-08 | 2026-01-14 | A1060 SS, A1120 SS+5d | 0.67d |
| A1750 |  | Ø 63 mm - Cañería HDPE, PE 100, PN10 | 14d | 2025-08-08 | 2025-08-21 | A1720 SS | 0.67d |
| A1760 |  | Ø 50 mm - Cañería HDPE, PE 100, PN10 | 3d | 2025-08-22 | 2025-08-24 | A1750 | 0.67d |
| A1770 |  | Ø 40 mm - Cañería HDPE, PE 100, PN10 | 4d | 2025-08-25 | 2025-08-28 | A1760 | 0.67d |
| A1780 |  | Ø 32 mm - Cañería HDPE, PE 100, PN10 | 3d | 2025-08-29 | 2025-08-31 | A1770 | 0.67d |
| A1700 |  | Ø 250 mm - Cañería HDPE, PE 100, PN10 | 14d | 2026-01-25 | 2026-02-07 | A1650 | 15d |
| A1710 |  | Ø 200 mm - Cañería HDPE, PE 100, PN10 | 7d | 2026-02-08 | 2026-02-14 | A1700 | 15d |
| A1730 |  | Ø 110 mm - Cañería HDPE, PE 100, PN10 | 14d | 2026-02-15 | 2026-02-28 | A1710 | 15d |
| A1740 |  | Ø 90 mm - Cañería HDPE, PE 100, PN10 | 14d | 2026-03-01 | 2026-03-14 | A1730, A1860 FF, A1840 FF | 15d |
|  | 3 | **MONTAJE DE CAÑERÍAS HDPE PN16 (P7) PATIO DE ESTANQUES** |  | 2025-09-01 | 2025-09-14 |  |  |
| A1790 |  | Ø 90 mm - Cañería HDPE, PE 100, PN16 | 6d | 2025-09-01 | 2025-09-06 | A1110 SS, A1780 | 0.67d |
| A1800 |  | DN 75 mm - Cañería HDPE, PE 100, PN16 | 8d | 2025-09-07 | 2025-09-14 | A1790 | 197d |
| A1810 |  | Ø 63 mm - Cañería HDPE, PE 100, PN16 | 3d | 2025-09-07 | 2025-09-09 | A1790 | 0.67d |
| A1820 |  | Ø 40 mm - Cañería HDPE, PE 100, PN16 | 3d | 2025-09-10 | 2025-09-12 | A1810, A1850 FF | 0.67d |
|  | 4 | **MONTAJE DE FITTING Y VÁLVULAS PATIO DE ESTANQUES** |  | 2025-08-08 | 2026-01-24 |  |  |
| A1850 |  | Montaje de Fitting HDPE (P7) GL | 8d | 2025-08-08 | 2025-08-15 | A1750 SS | 28.67d |
| A1840 |  | Montaje de Fitting HDPE (P1) GL | 160d | 2025-08-12 | 2026-01-18 | A1720 SS+4d | 70d |
| A1860 |  | Válvulas Patio de Estanques.(Global) | 160d | 2025-08-18 | 2026-01-24 | A1720 SS+10d | 64d |
| A1830 |  | Montaje de Fitting Acero Inoxidable GL | 10d | 2026-01-15 | 2026-01-24 | A1650 SS | 66d |
|  | 5 | **MONTAJE DE SOPORTACIÓN PIPING PATIO DE ESTANQUES** |  | 2025-09-10 | 2026-03-07 |  |  |
| A1880 |  | P1.3 x 37 un. - Pedestales para Tuberías Elevadas | 12d | 2025-09-10 | 2025-09-21 | A1720 SS, A1750, A1820 SS | 0.67d |
| A1890 |  | P1.6 x 51 un. - Pedestal para Tuberías Elevadas. | 40d | 2025-09-10 | 2025-10-19 | A1880 SS | 5.67d |
| A1910 |  | P4 x 40 un. - Pedestales para Tuberías Elevadas | 7d | 2025-09-10 | 2025-09-16 | A1890 SS | 5.67d |
| A1920 |  | U3 x 5454 un. - Abrazadera para Tuberías Elevadas | 36d | 2026-01-31 | 2026-03-07 | A1910, A1690 FF | 24d |
|  | 6 | **TIE-IN DE LÍNEAS ASOCIADAS A PATIO DE ESTANQUES** |  | 2026-01-14 | 2026-03-16 |  |  |
| A1950 |  | Tie-In N° 4401 - Línea proyectada TAG: 160-BREF-5817-P1-4504 con existente TAG: 160-BB-5759-P5-3153 | 1d | 2026-01-14 | 2026-01-14 | A1720 FF | 74d |
| A1960 |  | Tie-In N° 4402 - Línea proyectada TAG: 160-BREF-5817-P1-4520 con equipo existente TAG: 5735-EST-5250 | 1d | 2026-01-14 | 2026-01-14 | A1950 SS | 74d |
| A1970 |  | Tie-In N° 4403 - Línea proyectada TAG: 160-BREF-5817-P1-4524 con equipo existente TAG: 5759-EST-001 | 1d | 2026-01-15 | 2026-01-15 | A1960 SS+1d | 74d |
| A2020 |  | Tie-In N° 5401 - Línea existente TAG:160-LMB-5759-P5-3352 a proyectada TAG:160-SAB-5817-P1-5504 | 1d | 2026-01-16 | 2026-01-16 | A1970 | 74d |
| A2030 |  | Tie-In N° 5402 - Línea proyectada TAG: 160-SAB-5817- P1-5503 con equipo existente TAG: 5735-EST-1800 | 1d | 2026-01-16 | 2026-01-16 | A2020 SS | 74d |
| A1930 |  | Tie-In N° 1442 - Línea proyectada TAG: 110-W-5817-P1-1715 con existente TAG: 50-WW-5752-IA-7575 | 1d | 2026-03-15 | 2026-03-15 | A1720, A1740 | 15d |
| A1940 |  | Tie-In N° 1471 - Línea proyectada TAG: 75-PW-5817-P7-1910 con existente TAG: 63-PW-5759-P5-3900 | 1d | 2026-03-16 | 2026-03-16 | A1800, A1930 | 15d |
|  | 5 | **OBRAS ELÉCTRICAS PATIO DE ESTANQUES** |  | 2025-09-22 | 2026-01-21 |  |  |
|  | 1 | **TENDIDO Y CONEXIONADO DE CABLES BAJA TENSIÓN PATIO DE ESTANQUES** |  | 2025-11-01 | 2025-12-05 |  |  |
| A2140 |  | Cable de Fuerza Multiconductor de Cobre Blando, 1x4C #6 AWG | 4d | 2025-11-01 | 2025-11-05 | A2300, A2360 | 0.67d |
| A2150 |  | Cable de Fuerza Multiconductor de Cobre Blando, 1x4C #4 AWG | 6d | 2025-11-01 | 2025-11-07 | A2140 SS | 116.67d |
| A2160 |  | Cable de Fuerza Multiconductor de Cobre Blando, 1x4C #2 AWG | 3d | 2025-11-07 | 2025-11-10 | A2150 | 116.67d |
| A2170 |  | Cable de Fuerza Multiconductor de Cobre Blando, 1x3C #6 AWG | 14d | 2025-11-07 | 2025-11-21 | A2160 SS | 116.67d |
| A2180 |  | Cable de Fuerza Multiconductor de Cobre Blando, 1x5C #14 AWG | 28d | 2025-11-07 | 2025-12-05 | A2170 SS | 116.67d |
|  | 2 | **MONTAJE DE CANALIZACIÓN Y FERRETERÍA PATIO DE ESTANQUES** |  | 2025-10-19 | 2025-11-12 |  |  |
| A2230 |  | Conduit de Acero Galvanizado 3"Ø, tipo Conduit ANSI C80.1 | 5d | 2025-10-19 | 2025-10-23 | A2360, A2400 | 0.67d |
| A2240 |  | Conduit Flexible Metálico con Cubierta PVC 3" Ø Trabajo Pesado | 2d | 2025-10-19 | 2025-10-20 | A2230 SS | 0.67d |
| A2250 |  | Instalación de Copla para Cañería de Acero Galvanizado 3"Ø. Incluye Copla. | 3.33d | 2025-10-21 | 2025-10-24 | A2240 | 0.67d |
| A2260 |  | Instalación de Conexión Terminal para Cañería de Acero Galvanizado 3"Ø. | 3.33d | 2025-10-24 | 2025-10-27 | A2250 | 0.67d |
| A2300 |  | Conduit de Acero Galvanizado, 2"Ø, tipo Conduit ANSI C80.1.Incluye Copla | 8d | 2025-10-24 | 2025-11-01 | A2260 SS | 0.67d |
| A2310 |  | Conduit Flexible Metálico con Cubierta PVC 2" Ø Trabajo Pesado | 8d | 2025-11-01 | 2025-11-09 | A2300 | 50.67d |
| A2330 |  | Conduit de Acero Galvanizado, 1 1/2"Ø, tipo Conduit ANSI C80.1. Incluye Copla | 8d | 2025-11-01 | 2025-11-09 | A2300 | 1.33d |
| A2340 |  | Conduit Flexible Metálico con Cubierta PVC 1 1/2" Ø Trabajo Pesado. | 3.33d | 2025-11-01 | 2025-11-04 | A2330 SS | 1.33d |
| A2320 |  | Conexión Terminal para Cañería de Acero Galvanizado 2"Ø | 3d | 2025-11-09 | 2025-11-12 | A2310 | 50.67d |
|  | 3 | **MONTAJE DE ESCALERILLAS Y PIEZAS ESPECIALES PATIO DE ESTANQUES** |  | 2025-09-22 | 2025-10-18 |  |  |
| A2360 |  | EPC Porta Conductores 600x100mm e:2 mm, tiras 3m. Incluir tapa dos aguas, eclisas y pernos de Unión. | 13d | 2025-09-22 | 2025-10-04 | A1880, A1910 | 0.67d |
| A2370 |  | EPC Curva Horizontal de 90°, 600x100mm e:2mm. Incluir tapa dos aguas, eclisas y pernos de Unión. | 9d | 2025-09-28 | 2025-10-06 | A2360 FF+2d | 0.67d |
| A2380 |  | EPC Curva Vertical Interior de 90°, 600x100mm e:2mm. Incluir tapa dos aguas, eclisas y pernos de Unión. | 4d | 2025-10-07 | 2025-10-10 | A2370 SS, A2370 | 0.67d |
| A2390 |  | EPC Curva Vertical Exterior de 90°, 600x100mm e:2mm. Incluir tapa dos aguas, eclisas y pernos de Unión. | 4d | 2025-10-11 | 2025-10-14 | A2380 | 0.67d |
| A2400 |  | EPC DerivaciØn tipo TEE, 600x100mm e:2mm. Incluir tapa dos aguas, eclisas y pernos de Unión. | 8d | 2025-10-11 | 2025-10-18 | A2390 SS | 0.67d |
|  | 4 | **MONTAJE DE EQUIPOS ELÉCTRICOS PATIO DE ESTANQUES** |  | 2025-11-12 | 2025-11-22 |  |  |
| A2440 |  | Estación Local Marca Allen Bradley o Equivalente, para Trabajo Pesado, NEMA 4X | 10d | 2025-11-12 | 2025-11-22 | A2320, A2230 | 50.67d |
|  | 5 | **MONTAJE DE SISTEMA DE ILUMINACIÓN PATIO DE ESTANQUES** |  | 2025-11-05 | 2025-12-22 |  |  |
| A2500 |  | Poste Recto Acero Galvanizado 3" Ø 4m | 7d | 2025-11-05 | 2025-11-12 | A2510 SS | 0.67d |
| A2510 |  | Poste Recto Acero Galvanizado 3" Ø 2,5m | 2d | 2025-11-05 | 2025-11-07 | A2140, A2340 | 0.67d |
| A2490 |  | Postes Abatible Swivelpole Acero Galvanizado 1 1/2" Ø x 4m | 10d | 2025-11-12 | 2025-11-22 | A2500 | 0.67d |
| A2480 |  | Proyector de Área LED 200W - 220VAC - 50Hz, IP65, 2.200ØK, 12.800 Lm | 10d | 2025-11-22 | 2025-12-02 | A2490 | 0.67d |

| ID | WBS | Task | Duration | Start | Finish | Predecessors | Total float |
| --- | --- | --- | --- | --- | --- | --- | --- |
| A2470 |  | Luminaria LED Tipo Campana Industrial Según DS N°1 35W - 220VAC - 50Hz, IP65 o Nema4X, 2.200ØK, 432,0 Lm | 11d | 2025-12-02 | 2025-12-13 | A2480 | 0.67d |
| A2520 |  | Caja de Conexión Hermética 100x100x60 mm. Nema 4X con 6 Bornes de 6mm. | 5d | 2025-12-13 | 2025-12-18 | A2470 | 0.67d |
| A2530 |  | Instalación y Conexión de !quipos de Iluminación. | 4d | 2025-12-18 | 2025-12-22 | A2520 | 0.67d |
|  | 6 | **MONTAJE SISTEMA PUESTA A TIERRA PATIO DE ESTANQUES** |  | 2025-12-22 | 2026-01-21 |  |  |
| A2550 |  | Cable de Cobre Desnudo Temple Blando, N° 2/0 AWG, 19 Hebras. | 20d | 2025-12-22 | 2026-01-11 | A2400, A2530 | 0.67d |
| A2650 |  | Caja de Barra Puesta a Tierra 500x400x200mm, de Poliéster con Tapa. | 10d | 2026-01-11 | 2026-01-21 | A2440, A2550 | 0.67d |
|  | 6 | **OBRAS DE INSTRUMENTACIÓN PATIO DE ESTANQUES** |  | 2026-01-21 | 2026-03-31 |  |  |
|  | 1 | **TENDIDO Y CONEXIONADO DE CABLES DE COMUNICACIÓN PATIO DE ESTANQUES** |  | 2026-02-23 | 2026-03-03 |  |  |
| A2660 |  | Cable Fibra Óptica Multimodo Exterior 12 fibras OM3 LSZH | 8d | 2026-02-23 | 2026-03-03 | A2800 | 0.67d |
|  | 2 | **TENDIDO Y CONEXIONADO DE CABLES DE INSTRUMENTACIÓN PATIO DE ESTANQUES** |  | 2026-03-03 | 2026-03-17 |  |  |
| A2680 |  | Cable de Instrumentación (Señales Análogas), 1x1 par #16 AWG Apantallado | 10d | 2026-03-03 | 2026-03-13 | A2660 | 0.67d |
| A2690 |  | Cable de Control Multiconductor de Cobre Blando, 1x3c #14 AWG, Clase 1,0 kV | 4d | 2026-03-09 | 2026-03-13 | A2680 FF | 0.67d |
| A2700 |  | Cable de Control Multiconductor de Cobre Blando, 1x3c #14 AWG, Clase 0,3 kV | 4d | 2026-03-13 | 2026-03-17 | A2690 | 0.67d |
|  | 3 | **TENDIDO Y CONEXIONADO DE CABLES DE ALIMENTACIÓN 120V PATIO DE ESTANQUES** |  | 2026-03-08 | 2026-03-17 |  |  |
| A2710 |  | Cable de Control Multiconductor de Cobre Blando, 1x3c #12 AWG, Clase 1,0 kV | 9d | 2026-03-08 | 2026-03-17 | A2700 FF, A2650 FF | 0.67d |
|  | 4 | **MONTAJE DE CANALIZACIÒN Y FERRETERÍA PATIO DE ESTANQUES** |  | 2026-01-21 | 2026-02-23 |  |  |
| A2730 |  | EPC porta conductores de acero galvanizado 600x100x2,5mm. Incluye eclipsas, pernos y tapa dos aguas. | 15d | 2026-01-21 | 2026-02-05 | A2360, A2400, A2650 | 0.67d |
| A2740 |  | EPC Curva Tipo "T", 600x100x2,5mm. Incluir tapa dos aguas, eclisas y pernos de Unión. | 3d | 2026-02-05 | 2026-02-08 | A2730 | 0.67d |
| A2810 |  | Riel unistrut 42x42x2,5 mm, acero galvanizado, tiras de 3 metros | 4d | 2026-02-05 | 2026-02-09 | A2730 | 49.67d |
| A2760 |  | Conduit de acero galvanizado 1"Ø, tipo conduit ANSI C80.1 | 2d | 2026-02-08 | 2026-02-10 | A2740 | 0.67d |
| A2770 |  | Conduit de acero galvanizado 1"Ø, tipo conduit ANSI C80.1 | 5d | 2026-02-10 | 2026-02-15 | A2760 | 0.67d |
| A2790 |  | Conduit flexible Metálico con cubierta PVC 1/2" Ø | 4d | 2026-02-15 | 2026-02-19 | A2770 | 0.67d |
| A2800 |  | Caja metØlica de Distribución 100x100x65mm | 4d | 2026-02-19 | 2026-02-23 | A2790 | 0.67d |
|  | 5 | **ARMADO Y MONTAJE DE EQUIPOS E INSTRUMENTOS PATIO DE ESTANQUES** |  | 2026-03-17 | 2026-03-19 |  |  |
| A2840 |  | Fuente Ininterrumpida de Poder Tag N°5817-UPS-1202. Conexión de UPS a TPM de planta. | 2d | 2026-03-17 | 2026-03-19 | A2660, A2530, A2710 | 0.67d |
|  | 6 | **MONTAJE, CONEXIONADO Y PRUEBAS DE INSTRUMENTOS - SENSORES Y TRANSMISORES DE FLUJO PATIO ESTANQUES** |  | 2026-03-19 | 2026-03-22 |  |  |
| A2850 |  | Tubo sensor de Flujo Magnético y Transmisor Remoto Tag FE/FIT-1301 | 1d | 2026-03-19 | 2026-03-20 | A2840 | 0.67d |
| A2860 |  | Tubo sensor de Flujo Magnético y Transmisor Remoto Tag FE/FIT-1306 | 1d | 2026-03-19 | 2026-03-20 | A2850 SS | 0.67d |
| A2870 |  | Tubo sensor de Flujo Magnético y Transmisor Remoto Tag FE/FIT-1307 | 1d | 2026-03-19 | 2026-03-20 | A2860 SS | 0.67d |
| A2890 |  | Tubo sensor de Flujo Magnético y Transmisor Remoto Tag FE/FIT-1207 | 1d | 2026-03-20 | 2026-03-21 | A2870 | 0.67d |
| A2900 |  | Tubo sensor de Flujo Magnético y Transmisor Remoto Tag FE/FIT-4102 | 1d | 2026-03-21 | 2026-03-22 | A2890, A2870 | 0.67d |
| A2910 |  | Tubo sensor de Flujo Magnético y Transmisor Remoto Tag FE/FIT-4103 | 1d | 2026-03-21 | 2026-03-22 | A2900 SS | 0.67d |
| A2920 |  | Tubo sensor de Flujo Magnético y Transmisor Remoto Tag FE/FIT-4104 | 1d | 2026-03-21 | 2026-03-22 | A2910 SS | 0.67d |
| A2930 |  | Tubo sensor de Flujo Magnético y Transmisor Remoto Tag FE/FIT-5102 | 1d | 2026-03-21 | 2026-03-22 | A2920 SS | 0.67d |
|  | 7 | **MONTAJE, PRUEBAS Y CONEXIONADO DE INSTRUMENTOS - TRANSMISORES DE NIVEL PATIO ESTANQUES** |  | 2026-03-22 | 2026-03-24 |  |  |
| A2940 |  | Transmisor de Nivel Tag LT-1301 | 1d | 2026-03-22 | 2026-03-23 | A2930 | 0.67d |
| A2950 |  | Transmisor de Nivel Tag LT-1201 | 1d | 2026-03-22 | 2026-03-23 | A2940 SS | 0.67d |
| A2960 |  | Transmisor de Nivel Tag LT-4101 | 1d | 2026-03-22 | 2026-03-23 | A2950 SS | 0.67d |
| A2970 |  | Transmisor de Nivel Tag LT-4102 | 1d | 2026-03-22 | 2026-03-23 | A2960 SS | 0.67d |
| A2980 |  | Transmisor de Nivel Tag LT-5101 | 1d | 2026-03-23 | 2026-03-24 | A2970 | 0.67d |
|  | 8 | **MONTAJE, PRUEBAS Y CONEXIONADO DE INSTRUMENTOS - INTERRUPTOR DE PRESIÓN PATIO ESTANQUES** |  | 2026-03-23 | 2026-03-24 |  |  |
| A2990 |  | Interruptor de Nivel Tag PSL-1301 | 1d | 2026-03-23 | 2026-03-24 | A2980 SS | 0.67d |
| A3000 |  | Interruptor de Nivel Tag PSL-1302 | 1d | 2026-03-23 | 2026-03-24 | A2990 SS | 0.67d |
|  | 9 | **MONTAJE, PRUEBAS Y CONEXIONADO DE INSTRUMENTOS - INTERRUPTOR DE NIVEL PATIO ESTANQUES** |  | 2026-03-23 | 2026-03-25 |  |  |
| A3010 |  | Interruptor de Nivel Tag LCHL-1201 | 1d | 2026-03-23 | 2026-03-24 | A3000 SS | 0.67d |
| A3020 |  | Interruptor de Nivel Tag LCHL-4101 | 1d | 2026-03-24 | 2026-03-25 | A3010 | 0.67d |
| A3030 |  | Interruptor de Nivel Tag LCHL-5101 | 1d | 2026-03-24 | 2026-03-25 | A3020 SS | 0.67d |
|  | 10 | **MONTAJE, PRUEBAS Y CONEXIONADO DE INSTRUMENTOS - INTERRUPTOR DE FLUJO PATIO ESTANQUES** |  | 2026-03-24 | 2026-03-26 |  |  |
| A3040 |  | Interruptor de Nivel Tag FS-4101 | 1d | 2026-03-24 | 2026-03-25 | A3030 SS | 0.67d |
| A3050 |  | Interruptor de Nivel Tag FS-4102 | 1d | 2026-03-24 | 2026-03-25 | A3040 SS | 0.67d |
| A3060 |  | Interruptor de Nivel Tag FS-5101 | 1d | 2026-03-25 | 2026-03-26 | A3050 | 0.67d |
| A3070 |  | Interruptor de Nivel Tag FS-8101 | 1d | 2026-03-25 | 2026-03-26 | A3060 SS | 0.67d |
|  | 11 | **MONTAJE DE INSTRUMENTOS - INDICADORES DE PRESIÓN (MANÓMETROS) PATIO ESTANQUES** |  | 2026-03-25 | 2026-03-31 |  |  |
| A3080 |  | Indicador de Presión (Manómetro) Tag PI-1201 | 1d | 2026-03-25 | 2026-03-26 | A3070 SS | 0.67d |
| A3090 |  | Indicador de Presión (Manómetro) Tag PI-1202 | 1d | 2026-03-25 | 2026-03-26 | A3080 SS | 0.67d |
| A3100 |  | Indicador de Presión (Manómetro) Tag PI-1203 | 1d | 2026-03-26 | 2026-03-27 | A3090 | 0.67d |
| A3130 |  | Indicador de Presión (Manómetro) Tag PI-1301 | 1d | 2026-03-27 | 2026-03-28 | A3100 | 0.67d |
| A3140 |  | Indicador de Presión (Manómetro) Tag PI-1302 | 1d | 2026-03-28 | 2026-03-29 | A3130, A3100 | 0.67d |
| A3150 |  | Indicador de Presión (Manómetro) Tag PI-1303 | 1d | 2026-03-28 | 2026-03-29 | A3140 SS | 0.67d |
| A3160 |  | Indicador de Presión (Manómetro) Tag PI-1304 | 1d | 2026-03-28 | 2026-03-29 | A3150 SS | 0.67d |
| A3170 |  | Indicador de Presión (Manómetro) Tag PI-1305 | 1d | 2026-03-28 | 2026-03-29 | A3160 SS | 0.67d |
| A3180 |  | Indicador de Presión (Manómetro) Tag PI-4103 | 1d | 2026-03-29 | 2026-03-30 | A3170 | 0.67d |
| A3190 |  | Indicador de Presión (Manómetro) Tag PI-4104 | 1d | 2026-03-29 | 2026-03-30 | A3180 SS | 0.67d |
| A3200 |  | Indicador de Presión (Manómetro) Tag PI-4105 | 1d | 2026-03-29 | 2026-03-30 | A3190 SS | 0.67d |
| A3210 |  | Indicador de Presión (Manómetro) Tag PI-4106 | 1d | 2026-03-29 | 2026-03-30 | A3200 SS | 0.67d |
| A3220 |  | Indicador de Presión (Manómetro) Tag PI-4107 | 1d | 2026-03-30 | 2026-03-31 | A3210 | 0.67d |
| A3230 |  | Indicador de Presión (Manómetro) Tag PI-4108 | 1d | 2026-03-30 | 2026-03-31 | A3220 SS | 0.67d |
| A3240 |  | Indicador de Presión (Manómetro) Tag PI-5103 | 1d | 2026-03-30 | 2026-03-31 | A3230 SS | 0.67d |
| A3250 |  | Indicador de Presión (Manómetro) Tag PI-5104 | 1d | 2026-03-30 | 2026-03-31 | A3240 SS, A2810 | 0.67d |
|  | 2 | **CONTRATO ADDENDUM 01 - OOCC Y MEM MISCELÁNEOS** |  | 2025-09-11 | 2026-03-31 |  |  |

| ID | WBS | Task | Duration | Start | Finish | Predecessors | Total float |
| --- | --- | --- | --- | --- | --- | --- | --- |
|  | 1 | **HABILITACIÓN DATA CENTER ZONA NORTE - ÁREA 5801** |  | 2025-09-11 | 2025-12-07 |  |  |
|  | 1 | **ÁREA 5801 - SECTOR DATA CENTER 5801** |  | 2025-09-11 | 2025-12-07 |  |  |
|  | 1 | **OBRAS CIVILES DATA CENTER 5801** |  | 2025-10-06 | 2025-11-02 |  |  |
|  | 1 | **SUMINISTRO Y MONTAJE ASOCIADO A CERCO PERIMETRAL DATA CENTER 5801** |  | 2025-10-06 | 2025-11-02 |  |  |
| A3340 |  | Excavación para Fundaciones Cerco Perimetral Data Center | 2d | 2025-10-06 | 2025-10-07 | A3460 | 42d |
| A3350 |  | Emplantillado (G-05) para Fundaciones Cerco Perimetral Data Center | 1d | 2025-10-08 | 2025-10-08 | A3340 | 42d |
| A3370 |  | Armadura de Refuerzo para Fundaciones Cerco Perimetral Data Center | 4d | 2025-10-09 | 2025-10-12 | A3350 | 42d |
| A3360 |  | Hormigonado (G-25) para Fundaciones Cerco Perimetral Data Center | 2d | 2025-10-13 | 2025-10-14 | A3370 | 42d |
| A3390 |  | Pilar prefabricado PP7530 Cerco Perimetral Data Center | 7d | 2025-10-15 | 2025-10-21 | A3360 | 42d |
| A3380 |  | Cierro Fijo ACMAFOR Data Center | 3d | 2025-10-22 | 2025-10-24 | A3390 | 42d |
| A3400 |  | Accesos a Cierro Perimetral Data Center | 9d | 2025-10-25 | 2025-11-02 | A3380 | 42d |
|  | 2 | **OBRAS ESTRUCTURALES DATA CENTER 5801** |  | 2025-11-03 | 2025-11-18 |  |  |
|  | 1 | **ACERO ESTRUCTURAL, PLATAFORMA DATA CENTER 5801** |  | 2025-11-03 | 2025-11-18 |  |  |
| A3410 |  | Estructuras Livianas, Plataforma Data Center | 5d | 2025-11-03 | 2025-11-07 | A3400 | 42d |
| A3430 |  | Barandas, Plataforma Data Center | 3d | 2025-11-08 | 2025-11-10 | A3410 | 42d |
| A3420 |  | Parrillas de Piso, Plataforma Data Center | 2d | 2025-11-11 | 2025-11-12 | A3430 | 42d |
| A3440 |  | Escaleras, Plataforma Data Center | 3d | 2025-11-13 | 2025-11-15 | A3420 | 42d |
| A3450 |  | Grout Fundaciones Estructura Data Center | 3d | 2025-11-16 | 2025-11-18 | A3440 | 42d |
|  | 3 | **OBRAS MECÁNICAS DATA CENTER 5801** |  | 2025-09-11 | 2025-10-05 |  |  |
|  | 1 | **MONTAJE Y PRUEBAS DE DATA CENTER 5801** |  | 2025-09-11 | 2025-10-05 |  |  |
| A3460 |  | Data center TAG 5808-SDAT-1701 | 25d | 2025-09-11 | 2025-10-05 | A1070 SS | 42d |
|  | 2 | **MONTAJE Y PRUEBAS DE BOMBAS DOSIFICADORAS DATA CENTER 5801** |  | 2025-09-15 | 2025-09-18 |  |  |
| A3470 |  | Bomba dosificadora TAG 5801-BBA-3100 | 4d | 2025-09-15 | 2025-09-18 | A3520 | 114d |
| A3480 |  | Bomba dosificadora TAG 5801-BBA-3103 | 4d | 2025-09-15 | 2025-09-18 | A3470 SS | 114d |
|  | 3 | **MONTAJE Y PRUEBAS DE ESTANQUES DATA CENTER 5801** |  | 2025-09-11 | 2025-09-14 |  |  |
| A3490 |  | Estanque IBC para almcenamiento de agua. TAG 5801-EST-3106 | 1d | 2025-09-11 | 2025-09-11 | A3460 SS | 114d |
| A3500 |  | Estanque IBC para almcenamiento de agua. TAG 5801-EST-3107 | 1d | 2025-09-12 | 2025-09-12 | A3490 | 114d |
| A3510 |  | Estanque IBC para almcenamiento de agua. | 1d | 2025-09-13 | 2025-09-13 | A3500 | 114d |
| A3520 |  | Estanque IBC para almcenamiento de agua. | 1d | 2025-09-14 | 2025-09-14 | A3510 | 114d |
|  | 4 | **OBRAS PIPING DATA CENTER 5801** |  | 2025-09-15 | 2025-10-10 |  |  |
|  | 1 | **MONTAJE DE CAÑERÍAS DATA CENTER 5801** |  | 2025-09-15 | 2025-10-10 |  |  |
| A3540 |  | Ø 1" - Cañería Acero Inoxidable - Fabricación | 5d | 2025-09-15 | 2025-09-19 | A3480 SS | 114d |
| A3530 |  | Ø 1 " - Cañería Acero Inoxidable - Montaje | 3d | 2025-09-20 | 2025-09-22 | A3540 | 114d |
| A3560 |  | Ø 3/4" - Cañería Acero Inoxidable - Fabricación | 2d | 2025-09-23 | 2025-09-24 | A3530 | 123d |
| A3550 |  | Ø 3/4 " - Cañería Acero Inoxidable - Montaje | 2d | 2025-09-25 | 2025-09-26 | A3560 | 123d |
| A3580 |  | Ø 1-1/4" - Cañería Acero Inoxidable - Fabricación | 2d | 2025-09-27 | 2025-09-28 | A3550 | 123d |
| A3570 |  | Ø 1-1/4 " - Cañería Acero Inoxidable - Montaje | 2d | 2025-09-29 | 2025-09-30 | A3580 | 123d |
| A3600 |  | Ø 2" - Cañería Acero Inoxidable - Fabricación | 3d | 2025-10-01 | 2025-10-03 | A3570 | 123d |
| A3590 |  | Ø 2 " - Cañería Acero Inoxidable - Montaje | 3d | 2025-10-08 | 2025-10-10 | A3610 FF, A3620, A3600, A3480 | 169d |
|  | 2 | **MONTAJE DE VÁLVULAS Y FITTING PIPING DATA CENTER 5801** |  | 2025-09-23 | 2025-10-07 |  |  |
| A3610 |  | Montaje de Fitting Acero Inoxidable GL Data Center | 15d | 2025-09-23 | 2025-10-07 | A3530 | 114d |
| A3620 |  | Válvulas Data Center (Global) | 15d | 2025-09-23 | 2025-10-07 | A3530, A3610 SS | 114d |
|  | 5 | **OBRAS ELÉCTRICAS DATA CENTER 5801** |  | 2025-09-23 | 2025-11-28 |  |  |
|  | 1 | **MONTAJE Y CONEXIONADO CONDUCTORES FUERZA Y CONTROL DATA CENTER 5801** |  | 2025-09-23 | 2025-10-13 |  |  |
|  | 1 | **TENDIDO Y CONEXIONADO CABLES FUERZA MONOCONDUCTOR DATA CENTER 5801** |  | 2025-09-23 | 2025-10-03 |  |  |
| A3630 |  | Cable Fuerza 3x1c # 350 MCM | 5d | 2025-09-23 | 2025-09-27 | A3480, A3620 SS | 114d |
| A3640 |  | Cable Fuerza 3x1c # 500 MCM | 4d | 2025-09-28 | 2025-10-01 | A3630 | 114d |
| A3650 |  | Cable tierra 1x1c # 2/0 AWG (VERDE) | 2d | 2025-10-02 | 2025-10-03 | A3640 | 114d |
|  | 2 | **TENDIDO Y CONEXIONADO CABLES FUERZA MULTICONDUCTOR DATA CENTER 5801** |  | 2025-10-04 | 2025-10-13 |  |  |
| A3660 |  | Cable Fuerza 1x4c # 12 AWG | 2d | 2025-10-04 | 2025-10-05 | A3650 | 114d |
| A3670 |  | Cable Fuerza 1x4c # 8 AWG | 2d | 2025-10-06 | 2025-10-07 | A3660 | 114d |
| A3680 |  | Cable Fuerza 1x5c # 8 AWG | 2d | 2025-10-08 | 2025-10-09 | A3670 | 114d |
| A3690 |  | Cables Control 1x5c # 14 AWG | 2d | 2025-10-10 | 2025-10-11 | A3680 | 114d |
| A3700 |  | Cables Control 1x3c # 12 AWG | 2d | 2025-10-12 | 2025-10-13 | A3690 | 114d |
|  | 2 | **MONTAJE DE CANALIZACIÓN Y FERRETERÍA DATA CENTER 5801** |  | 2025-10-14 | 2025-10-17 |  |  |
| A3710 |  | C.A.G. 1", con Hilo y Copla de Unión, Según Norma ANSI C80-1. | 2d | 2025-10-14 | 2025-10-15 | A3460, A3700 | 114d |
| A3720 |  | Conduit Flexible de Acero de 1" de Diámetro, con Chaqueta de PVC. | 2d | 2025-10-16 | 2025-10-17 | A3710 | 114d |
|  | 3 | **MONTAJE Y CONEXIONADO EQUIPOS DE ALUMBRADO DATA CENTER 5801** |  | 2025-10-18 | 2025-11-02 |  |  |
| A3730 |  | Cable Fuerza 1x3c #12 AWG | 2d | 2025-10-18 | 2025-10-19 | A3710, A3720 | 114d |
| A3740 |  | Montaje y Soportación C.A.G. 1", con Hilo y Copla de Unión, Según Norma ANSI C80-1 | 2d | 2025-10-20 | 2025-10-21 | A3730 | 114d |
| A3760 |  | Poste Recto/Curvo de Acero Galvanizado, 6 m útiles. | 6d | 2025-10-22 | 2025-10-27 | A3740 | 114d |
| A3750 |  | Equipo de Alumbrado Público LED de 120 W, para Poste Tubular 6m.(LUZ CALIDA) | 6d | 2025-10-28 | 2025-11-02 | A3740 SS, A3760, A3720 | 114d |
|  | 4 | **MONTAJE, CONEXIÓN Y PRUEBAS EQUIPOS DE CONTROL BOMBAS DATA CENTER 5801** |  | 2025-11-03 | 2025-11-07 |  |  |
| A3770 |  | Estación Local y Elementos Asociados. | 2d | 2025-11-03 | 2025-11-04 | A3750 | 114d |
| A3780 |  | Cable de Cobre electrolítico Desnudo, 2/0 AWG | 3d | 2025-11-05 | 2025-11-07 | A3770 | 114d |
|  | 5 | **MONTAJE/HABILITACIÓN DE EQUIPOS ELÉCTRICOS PRINCIPALES DATA CENTER 5801** |  | 2025-11-08 | 2025-11-28 |  |  |
| A3790 |  | SubEstación Unitaria TAG: 5870-SEU-3100 | 9d | 2025-11-08 | 2025-11-16 | A3460 FF, A3750, A3780, A3700 | 114d |
| A3800 |  | Tablero de Distribución de Fuerza y Alumbrado TAG: 5870-PNL-3101 | 3d | 2025-11-17 | 2025-11-19 | A3790 | 114d |
| A3810 |  | Tablero de Alumbrado TAG: 5870-TDA-3103 | 3d | 2025-11-20 | 2025-11-22 | A3800 | 114d |
| A3820 |  | Tablero Eléctrico Orion TAG: 5870-PNL-3105 | 3d | 2025-11-23 | 2025-11-25 | A3810 | 114d |

| ID | WBS | Task | Duration | Start | Finish | Predecessors | Total float |
| --- | --- | --- | --- | --- | --- | --- | --- |
| A3830 |  | Sistema de Almacenamiento de Energía BESS TAG: 5870-BCB-3102 | 3d | 2025-11-26 | 2025-11-28 | A3820 | 114d |
|  | 6 | **OBRAS DE INSTRUMENTACIÓN SECTOR DATA CENTER 5801** |  | 2025-11-29 | 2025-12-07 |  |  |
|  | 1 | **MONTAJE DE EQUIPOS DE COMUNICACIÓN Y CABECERAS DE F.O. EN RACK DE 19" DATA CENTER 5801** |  | 2025-11-29 | 2025-12-04 |  |  |
| A3840 |  | Switch cisco catalyst, 9500, 24x1 y colocaciØn de TAGs | 1d | 2025-11-29 | 2025-11-29 | A3830 | 114d |
| A3850 |  | Switch networking interr. Connectrix DS-6610B-L | 1d | 2025-11-30 | 2025-11-30 | A3840 | 114d |
| A3860 |  | Servidores, poweredge, R660, DELL | 1d | 2025-12-01 | 2025-12-01 | A3850 | 114d |
| A3870 |  | Servidores, poweredge, 500T, DELL | 1d | 2025-12-02 | 2025-12-02 | A3860 | 114d |
| A3880 |  | TRANSCEIVER,QSFP,100GBASE,LR4 | 1d | 2025-12-03 | 2025-12-03 | A3870 | 114d |
| A3890 |  | Conversor,SFP,TRANSCEIVER,10GBASE-T | 1d | 2025-12-04 | 2025-12-04 | A3880 | 114d |
|  | 2 | **TENDIDO Y CONEXIONADO DE CABLES DE ALIMENTACIÓN DATA CENTER 5801** |  | 2025-12-05 | 2025-12-07 |  |  |
| A3900 |  | Cable Alimentación Eléctrica de Switches. Considera Suministro y Preparación | 3d | 2025-12-05 | 2025-12-07 | A3890 | 114d |
|  | 3 | **SUMINSITRO Y MONTAJE DE PROTECCIONES ELÉCTRICAS DATA CENTER 5801** |  | 2025-12-05 | 2025-12-07 |  |  |
| A3910 |  | Protecciones Eléctricas (CB-01;CB-02;CB-03;CB-04;CB-01R;CB-02R;CB-03R;CB-04R), y Borneras | 3d | 2025-12-05 | 2025-12-07 | A3900 FF, A3590 | 114d |
|  | 2 | **RED GN-GL L5 LiOH, ALIMENTACIÓN CALDERA UTILITIES - ÁREA 5801 GNL 5801** |  | 2025-09-11 | 2025-10-29 |  |  |
|  | 1 | **ÁREA 5801 - SECTOR GNL 5801** |  | 2025-09-11 | 2025-10-29 |  |  |
|  | 1 | **OBRAS CIVILES SECTOR LÍNEA DE GAS 5801** |  | 2025-09-11 | 2025-10-10 |  |  |
|  | 1 | **MOVIMIENTO DE TIERRAS, EXCAVACIÓN PARA CRUCE DE CAMINO GNL 5801** |  | 2025-09-15 | 2025-10-04 |  |  |
| A3920 |  | Excavación para Curce de Camino Norte Líneas de Gas | 3d | 2025-09-15 | 2025-09-17 | A3960 FF | 0d |
| A3940 |  | Transporte de Material a Botadero | 2d | 2025-09-18 | 2025-09-19 | A3920, A3960 | 0d |
| A3930 |  | Relleno para Curce de Camino Norte Líneas de Gas | 6d | 2025-09-29 | 2025-10-04 | A4000 FF | 7d |
| A3950 |  | Arena para Relleno de Curce de Camino Norte Líneas de Gas | 2d | 2025-09-29 | 2025-09-30 | A3990 | 0d |
|  | 2 | **EXCAVACIÓN PARA CAÉRÍAS ENTERRADA GNL 5801** |  | 2025-09-11 | 2025-10-10 |  |  |
| A3960 |  | Excavación para Curce de Camino Sur Líneas de Gas | 7d | 2025-09-11 | 2025-09-17 | A1070 SS | 0d |
| A3980 |  | Transporte de Material a Botadero | 3d | 2025-09-20 | 2025-09-22 | A3940 | 0d |
| A3990 |  | Arena para Relleno de Curce de Camino Sur Líneas de Gas | 6d | 2025-09-23 | 2025-09-28 | A3980 | 0d |
| A3970 |  | Relleno para Curce de Camino Sur Líneas de Gas | 6d | 2025-10-05 | 2025-10-10 | A3930 | 7d |
|  | 3 | **SERVICIOS, CRUCE DE CAMINO GNL 5801** |  | 2025-10-01 | 2025-10-04 |  |  |
| A4000 |  | Camisa de 8" para Cruce de Camino Norte y Sur, Línea de Gas | 4d | 2025-10-01 | 2025-10-04 | A3950 | 0d |
|  | 2 | **OBRAS PIPING SECTOR LÍNEA DE GAS 5801** |  | 2025-10-01 | 2025-10-29 |  |  |
|  | 1 | **MONTAJE DE CAÑERÍA, LÍNEAS DE GAS 5801** |  | 2025-10-01 | 2025-10-24 |  |  |
| A4010 |  | Ø 110 mm - Cañería HDPE, PE 100, PN10 (4") | 5d | 2025-10-01 | 2025-10-05 | A4000 SS | 0d |
| A4020 |  | Ø 4" - Cañería Acero Carbono ASTM A106 Gr. B (100mm) | 20d | 2025-10-05 | 2025-10-24 | A4000 | 99d |
|  | 2 | **MONTAJE DE VÁLVULAS MANUALES Y FITTING, LÍNEA DE GAS 5801** |  | 2025-10-06 | 2025-10-29 |  |  |
| A4030 |  | Montaje de Fitting para Líneas GNL | 24d | 2025-10-06 | 2025-10-29 | A4010 | 153d |
| A4040 |  | Válvulas Línea de Gas (Global) | 12d | 2025-10-18 | 2025-10-29 | A4030 FF | 153d |
|  | 3 | **TIE-IN LÍNEAS ASOCIADAS A GNL 5801** |  | 2025-10-29 | 2025-10-29 |  |  |
| A4050 |  | TIE-IN 5801-001 Acero Carbono Ø4" | 1d | 2025-10-29 | 2025-10-29 | A4020, A4040 FF, A4030 FF, A3970 | 153d |
| A4060 |  | TIE-IN 5801-002 Acero Carbono Ø4" | 1d | 2025-10-29 | 2025-10-29 | A4050 FF | 153d |
|  | 4 | **FABRICACIÓN Y MONTAJE DE SOPORTES GNL 5801** |  | 2025-10-06 | 2025-10-24 |  |  |
| A4070 |  | Soportes tipo SOP 01-A | 6d | 2025-10-06 | 2025-10-11 | A4010 | 0d |
| A4080 |  | Soportes tipo SOP 01-B | 6d | 2025-10-12 | 2025-10-17 | A4070 | 0d |
| A4090 |  | Soportes tipo SOP 02 | 6d | 2025-10-19 | 2025-10-24 | A4080, A4020 FF | 99d |
|  | 3 | **ESTANQUE PIVOTE** |  | 2025-09-18 | 2026-03-31 |  |  |
|  | 1 | **ÁREA 5817 - SECTOR TK-6060** |  | 2025-10-18 | 2026-03-31 |  |  |
|  | 1 | **OBRAS CIVILES TK-6060 5817** |  | 2025-10-18 | 2025-11-22 |  |  |
|  | 1 | **LOSA Y FUNDACIONES TK-6060 5817** |  | 2025-11-19 | 2025-11-22 |  |  |
|  | 3 | **FABRICACIÓN DE LOSA Y FUNDACIONES 5817** |  | 2025-11-19 | 2025-11-22 |  |  |
| A4170 |  | Grating FRP T3232 Bomba Sumidero | 2d | 2025-11-19 | 2025-11-20 | A3450 | 42d |
| A4180 |  | Estructura Liviana de Bomba Sumidero | 2d | 2025-11-21 | 2025-11-22 | A4170 | 42d |
|  | 2 | **CRUCE DE CAMINO 5817** |  | 2025-10-18 | 2025-11-12 |  |  |
|  | 1 | **MOVIMIENTO MASIVO DE TIERRA PARA CRUCE DE CAMINOS 5817** |  | 2025-10-18 | 2025-11-12 |  |  |
| A4190 |  | Excavación Cruce de Camino 1 | 7d | 2025-10-18 | 2025-10-24 | A3970, A4070, A4080 | 0d |
| A4210 |  | Relleno Estructural Cruce de Camino 1 | 3d | 2025-10-25 | 2025-10-27 | A4190 | 47d |
| A4230 |  | Excavación Cruce de Camino 2 | 5d | 2025-10-25 | 2025-10-29 | A4190 | 143d |
| A4220 |  | Cama de Arena Cruce de Camino 1 | 1d | 2025-10-28 | 2025-10-28 | A4210 | 47d |
| A4250 |  | Relleno Estructural Cruce de Camino 2 | 4d | 2025-10-30 | 2025-11-02 | A4230 | 143d |
| A4200 |  | Relleno compactado Cruce de Camino 1 | 6d | 2025-11-03 | 2025-11-08 | A4280 | 138d |
| A4260 |  | Cama de Arena Cruce de Camino 2 | 1d | 2025-11-03 | 2025-11-03 | A4250 | 143d |
| A4240 |  | Relleno compactado Cruce de Camino 2 | 2d | 2025-11-11 | 2025-11-12 | A4300, A4200, A4260 | 136d |
|  | 2 | **ENCAMISADO PARA CRUCE DE CAMINOS 5817** |  | 2025-10-25 | 2025-11-10 |  |  |
| A4280 |  | Cañería 12" Cruce de Camino 1 | 9d | 2025-10-25 | 2025-11-02 | A4190 | 42d |
| A4300 |  | Cañería 12" Cruce de Camino 2 | 8d | 2025-11-03 | 2025-11-10 | A4280, A4220 | 42d |
|  | 3 | **OBRAS MECÁNICAS TK-6060 5817** |  | 2025-10-18 | 2025-12-20 |  |  |
|  | 1 | **MONTAJE Y PRUEBAS DE EQUIPOS MECÁNICOS TK-6060 5817** |  | 2025-10-18 | 2025-12-20 |  |  |
| A4320 |  | Estanque Pivote y Plataforma Sumerior TAG: 5817-EST-6060 | 50d | 2025-10-18 | 2025-12-06 | A4190 SS | 0d |
| A4340 |  | Bomba Centrífuga y Motor TAG: 5817-BBA-6069; 5817-MTR-6070 | 4d | 2025-11-11 | 2025-11-14 | A4300 | 42d |
| A4350 |  | Bomba Centrífuga y Motor TAG: 5817-BBA-6072; 5817-MTR-6073 | 4d | 2025-11-15 | 2025-11-18 | A4340 | 42d |
| A4360 |  | Bomba Centrífuga y Motor TAG: 5817-BBA-6077; 5817-MTR-6078 | 4d | 2025-11-19 | 2025-11-22 | A4350 | 42d |
| A4330 |  | Agitador Vertical Estanque Pivote TAG: 5817-AGT-6061 / 5817-MTR-6062 | 10d | 2025-12-07 | 2025-12-16 | A4320 | 18d |
| A4370 |  | Bomba Sumidero y Motor TAG: 5817-BBS-6075; 5817-MTR-6076 | 4d | 2025-12-17 | 2025-12-20 | A4360, A4180, A4330 | 18d |

| ID | WBS | Task | Duration | Start | Finish | Predecessors | Total float |
| --- | --- | --- | --- | --- | --- | --- | --- |
|  | 4 | **OBRAS PIPING TK-6060 5817** |  | 2025-10-18 | 2026-02-28 |  |  |
|  | 1 | **MONTAJE Y FABRICACIÓN DE CAÑERÍAS TK-6060 5817** |  | 2025-10-18 | 2026-02-05 |  |  |
|  | 1 | **FABRICACIÓN CAÑERÍAS TK-6060 5817** |  | 2025-10-18 | 2026-01-05 |  |  |
| A4380 |  | Ø 6" - Cañería Acero Inoxidable - Fabricación | 62d | 2025-10-18 | 2025-12-18 | A4320 SS | 0d |
| A4420 |  | Ø 1-1/2" - Cañería Acero Inoxidable - Fabricación | 2d | 2025-10-25 | 2025-10-26 | A4090 | 99d |
| A4410 |  | Ø 1" - Cañería Acero Inoxidable - Fabricación | 3d | 2025-10-27 | 2025-10-29 | A4420 | 99d |
| A4390 |  | Ø 4" - Cañería Acero Inoxidable - Fabricación | 14d | 2025-12-05 | 2025-12-18 | A4380 FF | 20d |
| A4430 |  | Ø 8" - Cañería CPVC, SCH 80 - Fabricación | 3d | 2025-12-19 | 2025-12-21 | A4380 | 17d |
| A4400 |  | Ø 2" - Cañería Acero Inoxidable - Fabricación | 12d | 2025-12-21 | 2026-01-01 | A4330, A4370 | 18d |
| A4440 |  | Ø 4" - Cañería CPVC, SCH 80 - Fabricación | 12d | 2025-12-22 | 2026-01-02 | A4430 | 17d |
| A4450 |  | Ø 2" - Cañería CPVC, SCH 80 - Fabricación | 3d | 2026-01-03 | 2026-01-05 | A4440 | 17d |
|  | 2 | **MONTAJE CAÑERÍAS TK-6060 5817** |  | 2025-12-19 | 2026-02-05 |  |  |
| A4490 |  | Ø 6" - Cañería Acero Inoxidable - Montaje | 20d | 2025-12-19 | 2026-01-07 | A4380 | 0d |
| A4460 |  | Ø 8" - Cañería CPVC, SCH 80 - Montaje | 3d | 2025-12-22 | 2025-12-24 | A4320 SS, A4430 | 80d |
| A4470 |  | Ø 4" - Cañería CPVC, SCH 80 - Montaje | 14d | 2025-12-25 | 2026-01-07 | A4460, A4430 | 80d |
| A4480 |  | Ø 2" - Cañería CPVC, SCH 80 - Montaje | 3d | 2026-01-08 | 2026-01-10 | A4240, A4470 | 80d |
| A4500 |  | Ø 4" - Cañería Acero Inoxidable - Montaje | 12d | 2026-01-08 | 2026-01-19 | A4490, A4390 | 0d |
| A4510 |  | Ø 2" - Cañería Acero Inoxidable - Montaje | 10d | 2026-01-20 | 2026-01-29 | A4500, A4450 SS, A4400 | 0d |
| A4520 |  | Ø 1-1/2" - Cañería Acero Inoxidable - Montaje | 2d | 2026-01-30 | 2026-01-31 | A4510 | 0d |
| A4530 |  | Ø 1" - Cañería Acero Inoxidable - Montaje | 5d | 2026-02-01 | 2026-02-05 | A4520 | 0d |
|  | 2 | **MONTAJE DE FITTING Y VÁLVULAS TK-6060 5817** |  | 2025-10-18 | 2026-01-18 |  |  |
| A4540 |  | Montaje de Fitting para Líneas TK-6060 | 93d | 2025-10-18 | 2026-01-18 | A4380 SS | 22d |
| A4550 |  | Válvulas Sector TK-6060 (Global) | 93d | 2025-10-18 | 2026-01-18 | A4540 SS | 57d |
|  | 3 | **FABRICACIÓN Y MONTAJE DE SOPORTES TK-6060 5817** |  | 2026-01-08 | 2026-02-13 |  |  |
| A4560 |  | Soporte N°001A - Pedestal con Repisa de Acero Estructural para Tuberías Diámetros Pequeños | 1d | 2026-01-08 | 2026-01-08 | A4380, A4490 | 1d |
| A4570 |  | Soporte N°001B - Pedestal con Repisa de Acero Estructural para Tuberías Diámetros Pequeños | 5d | 2026-01-09 | 2026-01-13 | A4560 | 1d |
| A4580 |  | Soporte N°002 - Pedestal, Acero Estructural para Tuberías Diámetros Pequeños | 3d | 2026-01-14 | 2026-01-16 | A4570 | 1d |
| A4590 |  | Soporte N°003A - Pedestal Tipo TEE, Acero Estructural para Tuberías Diámetros Pequeños | 3d | 2026-01-17 | 2026-01-19 | A4580 | 1d |
| A4600 |  | Soporte N°003B - Pedestal Tipo TEE, Acero Estructural para Tuberías Diámetros Pequeños | 6d | 2026-01-20 | 2026-01-25 | A4590 | 1d |
| A4610 |  | Soporte N°004 - Arco Tipo Vertical, Acero Estructural | 2d | 2026-01-26 | 2026-01-27 | A4600 | 1d |
| A4620 |  | Soporte N°005 - Pedestal y Voladizo Tipo Simple, Acero Estructural para Tuberías Diámetros Pequeños | 4d | 2026-01-28 | 2026-01-31 | A4610 | 1d |
| A4630 |  | Soporte N°006 - Pedestal y Voladizo Tipo Simple, Acero Estructural para Tuberías Diámetros Pequeños | 4d | 2026-01-28 | 2026-01-31 | A4620 SS | 1d |
| A4640 |  | Soporte Primario Tipo "U" (Para Uso General) | 13d | 2026-02-01 | 2026-02-13 | A4630, A4550 | 44d |
|  | 4 | **TIE-IN DE LÍNEAS ASOCIADAS A TK-6060 5817** |  | 2026-02-04 | 2026-02-15 |  |  |
| A4650 |  | TIE-IN N° 1433 - 5836-EST-3015 a Línea Proyectada 100-DR-5817-P2-6630 | 2d | 2026-02-04 | 2026-02-05 | A4530 FF | 54d |
| A4660 |  | TIE-IN N° 1434 - 5836-EST-3015 a Línea Proyectada 100-DR-5817-P2-6610 | 2d | 2026-02-14 | 2026-02-15 | A4650 FF, A4640 | 44d |
|  | 5 | **AISLACIÓN LÍNEAS TK-6060 5817** |  | 2026-01-08 | 2026-02-12 |  |  |
| A4670 |  | Ø 6" - Aislación de Lana Mineral de 1,5" de espesor | 15d | 2026-01-08 | 2026-01-22 | A4490 | 47d |
| A4680 |  | Ø 4" - Aislación de Lana Mineral de 1,5" de espesor | 7d | 2026-01-23 | 2026-01-29 | A4500, A4670 | 47d |
| A4690 |  | Ø 2" - Aislación de Lana Mineral de 1,5" de espesor | 14d | 2026-01-30 | 2026-02-12 | A4510 FF, A4680 | 47d |
|  | 6 | **RED DE AIRE 5817** |  | 2026-02-06 | 2026-02-28 |  |  |
|  | 1 | **FABRICACIÓN Y MONTAJE DE CAÑERÍAS RED DE AIRE 5817** |  | 2026-02-06 | 2026-02-23 |  |  |
| A4700 |  | Ø 1" - Cañería Acero Inoxidable - Fabricación | 7d | 2026-02-06 | 2026-02-12 | A4410, A4530 | 0d |
| A4720 |  | Ø 1" - Cañería Acero Inoxidable - Montaje | 5d | 2026-02-09 | 2026-02-13 | A4700 SS+3d, A4410 | 30d |
| A4710 |  | Ø 3/4" - Cañería Acero Inoxidable - Fabricación | 7d | 2026-02-14 | 2026-02-20 | A4720 | 30d |
| A4730 |  | Ø 3/4" - Cañería Acero Inoxidable - Montaje | 3d | 2026-02-21 | 2026-02-23 | A4740 FF, A4750 FF, A4710 | 30d |
|  | 2 | **MONTAJE DE FITTING Y VÁLVULAS RED DE AIRE 5817** |  | 2026-02-06 | 2026-02-23 |  |  |
| A4740 |  | Fitting Líneas de Aire (Global) | 18d | 2026-02-06 | 2026-02-23 | A4700 SS | 30d |
| A4750 |  | Válvulas Líneas de Aire (Global) | 18d | 2026-02-06 | 2026-02-23 | A4700 SS | 0d |
|  | 3 | **TIE-IN DE LÍNEAS ASOCIADAS A RED DE AIRE 5817** |  | 2026-02-20 | 2026-02-28 |  |  |
| A4760 |  | TIE-IN N° 1425 - 150-IA-5771-I1-2486 a Línea Proyectada 25-IA-5771-I1-1630 | 4d | 2026-02-20 | 2026-02-23 | A4730 FF | 30d |
| A4770 |  | TIE-IN N° 1426 - 25-IA-5871-I1-1644 a Línea Proyectada 25-IA-5871-I1-1634 | 1d | 2026-02-24 | 2026-02-24 | A4760 | 30d |
| A4780 |  | TIE-IN N° 1427 - 25-IA-5871-I1-1644 a Línea Proyectada 25-IA-5871-I1-1638 | 1d | 2026-02-25 | 2026-02-25 | A4770 | 30d |
| A4790 |  | TIE-IN N° 1428 - LØne Existente (TAG por Confirmar) a Línea Proyectada 25-IA-5871-I1-1642 | 1d | 2026-02-26 | 2026-02-26 | A4780 | 30d |
| A4800 |  | TIE-IN N° 1429 - Línea Existente (TAG por Confirmar) a Línea Proyectada 25-IA-5871-I1-1646 | 1d | 2026-02-27 | 2026-02-27 | A4790 | 30d |
| A4810 |  | TIE-IN N° 1430 - Línea Existente (TAG por Confirmar) a Línea Proyectada 25-IA-5871-I1-1649 | 1d | 2026-02-28 | 2026-02-28 | A4800 | 30d |
|  | 5 | **OBRAS ELÉCTRICAS TK-6060 5817** |  | 2025-12-05 | 2026-03-31 |  |  |
|  | 1 | **MONTAJE DE CANALIZACIÓN Y FERRETERÍA TK-6060 5817** |  | 2025-12-05 | 2026-03-07 |  |  |
| A4820 |  | EPC y Copla Porta Conductores 600x100mm e:2,5 mm, tiras 3m. Incluir tapa dos aguas, eclisas y pernos de Unión. | 12d | 2025-12-05 | 2025-12-16 | A4360, A4330 FF | 86d |
| A4830 |  | EPC Curva de 90°, 600x100mm e:2,5mm. Incluir tapa dos aguas, eclisas y pernos de Unión. | 3d | 2025-12-14 | 2025-12-16 | A4820 FF | 86d |
| A4840 |  | Canalización y Copla de Conduit de Acero Galvanizado 6"Ø, Conduit ANSI C80.1 | 7d | 2025-12-17 | 2025-12-23 | A4830 | 86d |
| A4850 |  | Canalización y Copla de Conduit Flexible Metálico con Cubierta PVC 6" Ø Trabajo Pesado | 3d | 2025-12-24 | 2025-12-26 | A4840 | 86d |
| A4860 |  | Canalización y Copla de Conduit de Acero Galvanizado 2 1/2"Ø, Conduit ANSI C80.1 | 3d | 2025-12-27 | 2025-12-29 | A4850 | 86d |
| A4900 |  | Canalización y Copla de Conduit de Acero Galvanizado 1 1/2"Ø, Conduit ANSI C80.1 | 7d | 2026-02-24 | 2026-03-02 | A4750 | 0d |
| A4870 |  | Canalización y Copla de Conduit Flexible Metálico con Cubierta PVC 2 1/2" Ø Trabajo Pesado | 1d | 2026-03-03 | 2026-03-03 | A4900 | 0d |
| A4920 |  | Perno de Ensamble de Malla a Tierra en E.P.C. | 2d | 2026-03-03 | 2026-03-04 | A4900 | 12d |
| A4910 |  | Canalización y Copla de Conduit Flexible Metálico con Cubierta PVC 1 1/2" Ø Trabajo Pesado | 4d | 2026-03-04 | 2026-03-07 | A4900, A4870 | 0d |
|  | 2 | **TENDIDO Y CONEXIONADO DE CABLES DE ALIMENTACIÓN TK-6060 5817** |  | 2026-03-08 | 2026-03-26 |  |  |
| A4930 |  | Cable Monoconductor de Cobre con Aislación XLPE, 1C #500 MCM, Clase 1 kV | 15d | 2026-03-08 | 2026-03-22 | A4910 | 0d |
| A4990 |  | Cable Multiconductor de Cobre con Aislación XLPE, 1X4C #2 AWG, Clase 1 kV | 2d | 2026-03-09 | 2026-03-10 | A5000 SS | 12d |

| ID | WBS | Task | Duration | Start | Finish | Predecessors | Total float |
| --- | --- | --- | --- | --- | --- | --- | --- |
| A5000 |  | Cable Multiconductor de Cobre con Aislación de XLPE, 1x5C #12 AWG, Clase 1 kV | 2d | 2026-03-09 | 2026-03-10 | A5010, A4910 | 12d |
| A4970 |  | Cable Multiconductor de Cobre con Aislación XLPE, 1X3C #4 AWG, Clase 1 kV | 3d | 2026-03-11 | 2026-03-13 | A4980 SS | 12d |
| A4980 |  | Cable Multiconductor de Cobre con Aislación XLPE, 1X4C #10 AWG, Clase 1 kV | 2d | 2026-03-11 | 2026-03-12 | A4990 | 12d |
| A4960 |  | Cable Multiconductor de Cobre con Aislación XLPE, 1X3C #8 AWG, Clase 1 kV | 8d | 2026-03-14 | 2026-03-21 | A4970 | 12d |
| A4940 |  | Cable Monoconductor de Cobre con Aislación XLPE, 1C #250 MCM, Clase 1 kV | 3d | 2026-03-23 | 2026-03-25 | A4930 | 0d |
| A4950 |  | Cable Multiconductor de Cobre con Aislación XLPE, 1X4C #8 AWG, Clase 1 kV | 1d | 2026-03-26 | 2026-03-26 | A4960 SS, A4940 | 0d |
|  | 3 | **MONTAJE DE POSTACIÓN TK-6060 5817** |  | 2026-03-05 | 2026-03-08 |  |  |
| A5010 |  | Poste de Acero Galvanizado para Iluminación. | 4d | 2026-03-05 | 2026-03-08 | A4920 | 12d |
|  | 4 | **MONTAJE Y CONEXIONADO DE EQUIPOS ELÉCTRICOS TK-6060** |  | 2026-02-24 | 2026-03-30 |  |  |
| A5020 |  | Tablero Partidor de Motores TAG: 5817-TPM-1501 | 3d | 2026-02-24 | 2026-02-26 | A4900 SS | 25d |
| A5030 |  | Conexión de Motor TAG: 5817-MTR-6078 a TPM TAG: 5817-TPM-1501. | 1d | 2026-03-27 | 2026-03-27 | A4950, A5020 | 0d |
| A5040 |  | Conexión de Motor TAG: 5817-MTR-6070 a TPM TAG: 5817-TPM-1501. | 1d | 2026-03-27 | 2026-03-27 | A5030 SS | 0d |
| A5050 |  | Conexión de Motor TAG: 5817-MTR-6073 a TPM TAG: 5817-TPM-1501. | 1d | 2026-03-28 | 2026-03-28 | A5040 | 0d |
| A5060 |  | Conexión de Motor TAG: 5817-MTR-6062 a TPM TAG: 5817-TPM-1501. | 1d | 2026-03-28 | 2026-03-28 | A5050 SS | 0d |
| A5070 |  | Conexión de Motor TAG: 5817-MTR-6076 a TPM TAG: 5817-TPM-1501. | 1d | 2026-03-29 | 2026-03-29 | A5060 | 0d |
| A5080 |  | Conexión de Tablero Partidor de Motores TAG: 5817-TPM-1501 a Sala Eléctrica TAG: SEL-4016. | 1d | 2026-03-29 | 2026-03-29 | A5070 SS | 0d |
| A5090 |  | Conexión de Luminarias Tipo Pedestal. | 2d | 2026-03-29 | 2026-03-30 | A5080 SS | 0d |
| A5100 |  | Conexión de Luminarias Tipo Proyector. | 2d | 2026-03-29 | 2026-03-30 | A5090 SS, A5000 | 0d |
|  | 5 | **PRUEBAS DE FUNCIONAMIENTO Y PEM TK-6060** |  | 2026-03-31 | 2026-03-31 |  |  |
| A5110 |  | Pruebas de Funcionamiento y Puesta en Marcha de Motor TAG: 5817-MTR-6078. | 1d | 2026-03-31 | 2026-03-31 | A5100 | 0d |
| A5120 |  | Pruebas de Funcionamiento y Puesta en Marcha de Motor TAG: 5817-MTR-6070. | 1d | 2026-03-31 | 2026-03-31 | A5110 SS | 0d |
| A5130 |  | Pruebas de Funcionamiento y Puesta en Marcha de Motor TAG: 5817-MTR-6073. | 1d | 2026-03-31 | 2026-03-31 | A5120 SS | 0d |
| A5140 |  | Pruebas de Funcionamiento y Puesta en Marcha de Motor TAG: 5817-MTR-6062. | 1d | 2026-03-31 | 2026-03-31 | A5130 SS | 0d |
| A5150 |  | Pruebas de Funcionamiento y Puesta en Marcha de Motor TAG: 5817-MTR-6076. | 1d | 2026-03-31 | 2026-03-31 | A5140 SS | 0d |
| A5160 |  | Pruebas de Funcionamiento y Puesta de Luminarias Tipo Pedestal. | 1d | 2026-03-31 | 2026-03-31 | A5150 SS | 0d |
| A5170 |  | Pruebas de Funcionamiento y Puesta de Luminarias Tipo Proyector. | 1d | 2026-03-31 | 2026-03-31 | A5160 SS | 0d |
|  | 6 | **OBRAS DE INSTRUMENTACIÓN TK-6060** |  | 2026-02-24 | 2026-03-31 |  |  |
|  | 1 | **MONTAJE DE CANALIZACIÓN Y FERRETERÍA INST. TK-6060** |  | 2026-02-24 | 2026-03-21 |  |  |
| A5200 |  | Canalización y Copla de Conduit de Acero Galvanizado 1"Ø, Conduit ANSI C80.1 | 21d | 2026-02-24 | 2026-03-16 | A4900 SS | 0d |
| A5210 |  | Canalización y Copla de Conduit Flexible Metálico con Cubierta PVC 1" Ø Trabajo Pesado | 5d | 2026-03-17 | 2026-03-21 | A5200, A4860 | 9d |
|  | 2 | **TENDIDO Y CONEXIONADO DE CABLES DE INSTRUMENTACIÓN TK-6060** |  | 2026-02-24 | 2026-03-23 |  |  |
| A5220 |  | Cable Multiconductor de Cobre con Aislación de XLPE, 1x3C #12 AWG, Clase 1 kV | 14d | 2026-02-24 | 2026-03-09 | A5200 SS | 0d |
| A5230 |  | Cable de Instrumentación (Señales Análogas), 1x1 par #16 AWG Apantallado | 5d | 2026-03-10 | 2026-03-14 | A5220 | 0d |
| A5240 |  | Cable Multiconductor de Cobre Blando 1x3C #12 AWG, Clase 0,3 | 4d | 2026-03-10 | 2026-03-13 | A5230 SS | 0d |
| A5250 |  | Cable Multiconductor de Cobre Blando 1x5C #12 AWG, Clase 0,3 | 4d | 2026-03-14 | 2026-03-17 | A5240 | 0d |
| A5260 |  | Conductor Fibra Óptica Multimodo 12 Hilos | 10d | 2026-03-14 | 2026-03-23 | A5250 SS | 0d |
|  | 3 | **MONTAJE Y CONEXIONADO DE EQUIPOS E INSTRUMENTOS TK-6060** |  | 2026-02-27 | 2026-03-26 |  |  |
| A5270 |  | Pruebas de Funcionamiento y Puesta en Marcha de TAG: 5817-RIO-1501. | 1d | 2026-02-27 | 2026-02-27 | A5020 | 25d |
| A5280 |  | Conexión de Fibra Óptica en RIO y Sala Eléctrica TAG: SEL-4016. | 1d | 2026-03-24 | 2026-03-24 | A5270 SS, A5260 | 0d |
| A5290 |  | Instrumento TAG: FIT-6207 a Panel de Señales Remotas TAG: 5817-RIO-1501. | 1d | 2026-03-24 | 2026-03-24 | A5280 SS | 0d |
| A5300 |  | Instrumento TAG: FIT-6209 a Panel de Señales Remotas TAG: 5817-RIO-1501. | 1d | 2026-03-24 | 2026-03-24 | A5290 SS | 0d |
| A5310 |  | Instrumento TAG: FIT-6260 a Panel de Señales Remotas TAG: 5817-RIO-1501. | 1d | 2026-03-24 | 2026-03-24 | A5300 SS | 0d |
| A5320 |  | Instrumento TAG: FIT-6261 a Panel de Señales Remotas TAG: 5817-RIO-1501. | 1d | 2026-03-24 | 2026-03-24 | A5310 SS | 0d |
| A5330 |  | Instrumento TAG: DIT-6279 a Panel de Señales Remotas TAG: 5817-RIO-1501. | 1d | 2026-03-24 | 2026-03-24 | A5320 SS | 0d |
| A5340 |  | Instrumento TAG: PIT-6226 a Panel de Señales Remotas TAG: 5817-RIO-1501. | 1d | 2026-03-24 | 2026-03-24 | A5330 SS | 0d |
| A5350 |  | Instrumento TAG: PIT-6236 a Panel de Señales Remotas TAG: 5817-RIO-1501. | 1d | 2026-03-24 | 2026-03-24 | A5340 SS | 0d |
| A5360 |  | Instrumento TAG: PIT-6222 a Panel de Señales Remotas TAG: 5817-RIO-1501. | 1d | 2026-03-24 | 2026-03-24 | A5350 SS | 0d |
| A5370 |  | Instrumento TAG: FV-6208 a Panel de Señales Remotas TAG: 5817-RIO-1501. | 1d | 2026-03-24 | 2026-03-24 | A5360 SS | 0d |
| A5380 |  | Instrumento TAG: FV-6217 a Panel de Señales Remotas TAG: 5817-RIO-1501. | 1d | 2026-03-25 | 2026-03-25 | A5370 | 0d |
| A5390 |  | Instrumento TAG: XV-1178 a Panel de Señales Remotas TAG: 5817-RIO-1501. | 1d | 2026-03-25 | 2026-03-25 | A5380 SS | 0d |
| A5400 |  | Instrumento TAG: XV-1179 a Panel de Señales Remotas TAG: 5817-RIO-1501. | 1d | 2026-03-25 | 2026-03-25 | A5390 SS | 0d |
| A5410 |  | Instrumento TAG: XV-1180 a Panel de Señales Remotas TAG: 5817-RIO-1501. | 1d | 2026-03-25 | 2026-03-25 | A5400 SS | 0d |
| A5420 |  | Instrumento TAG: XV-1181 a Panel de Señales Remotas TAG: 5817-RIO-1501. | 1d | 2026-03-25 | 2026-03-25 | A5410 SS | 0d |
| A5430 |  | Instrumento TAG: XV-1182 a Panel de Señales Remotas TAG: 5817-RIO-1501. | 1d | 2026-03-25 | 2026-03-25 | A5420 SS | 0d |
| A5440 |  | Instrumento TAG: XV-6206 a Panel de Señales Remotas TAG: 5817-RIO-1501. | 1d | 2026-03-25 | 2026-03-25 | A5430 SS | 0d |
| A5450 |  | Instrumento TAG: XV-6209 a Panel de Señales Remotas TAG: 5817-RIO-1501. | 1d | 2026-03-25 | 2026-03-25 | A5440 SS | 0d |
| A5460 |  | Instrumento TAG: XV-6216 a Panel de Señales Remotas TAG: 5817-RIO-1501. | 1d | 2026-03-25 | 2026-03-25 | A5450 SS | 0d |
| A5470 |  | Instrumento TAG: XV-6219 a Panel de Señales Remotas TAG: 5817-RIO-1501. | 1d | 2026-03-25 | 2026-03-25 | A5460 SS | 0d |
| A5480 |  | Instrumento TAG: XV-6223 a Panel de Señales Remotas TAG: 5817-RIO-1501. | 1d | 2026-03-25 | 2026-03-25 | A5470 SS | 0d |
| A5490 |  | Instrumento TAG: XV-6223 a Panel de Señales Remotas TAG: 5817-RIO-1501. | 1d | 2026-03-25 | 2026-03-25 | A5480 SS | 0d |
| A5500 |  | Instrumento TAG: XV-6224 a Panel de Señales Remotas TAG: 5817-RIO-1501. | 1d | 2026-03-26 | 2026-03-26 | A5490 | 0d |
| A5510 |  | Instrumento TAG: XV-6225 a Panel de Señales Remotas TAG: 5817-RIO-1501. | 1d | 2026-03-26 | 2026-03-26 | A5500 SS | 0d |
| A5520 |  | Instrumento TAG: XV-6226 a Panel de Señales Remotas TAG: 5817-RIO-1501. | 1d | 2026-03-26 | 2026-03-26 | A5510 SS | 0d |
| A5530 |  | Instrumento TAG: XV-6227 a Panel de Señales Remotas TAG: 5817-RIO-1501. | 1d | 2026-03-26 | 2026-03-26 | A5520 SS | 0d |
| A5540 |  | Instrumento TAG: XV-6228 a Panel de Señales Remotas TAG: 5817-RIO-1501. | 1d | 2026-03-26 | 2026-03-26 | A5530 SS | 0d |
| A5550 |  | Instrumento TAG: XV-6233 a Panel de Señales Remotas TAG: 5817-RIO-1501. | 1d | 2026-03-26 | 2026-03-26 | A5540 SS | 0d |
| A5560 |  | Instrumento TAG: XV-6234 a Panel de Señales Remotas TAG: 5817-RIO-1501. | 1d | 2026-03-26 | 2026-03-26 | A5550 SS | 0d |
| A5570 |  | Instrumento TAG: XV-6237 a Panel de Señales Remotas TAG: 5817-RIO-1501. | 1d | 2026-03-26 | 2026-03-26 | A5560 SS | 0d |
| A5580 |  | Instrumento TAG: XV-6238 a Panel de Señales Remotas TAG: 5817-RIO-1501. | 1d | 2026-03-26 | 2026-03-26 | A5570 SS | 0d |
| A5590 |  | Instrumento TAG: XV-6243 a Panel de Señales Remotas TAG: 5817-RIO-1501. | 1d | 2026-03-26 | 2026-03-26 | A5580 SS | 0d |

| ID | WBS | Task | Duration | Start | Finish | Predecessors | Total float |
| --- | --- | --- | --- | --- | --- | --- | --- |
| A5600 |  | Instrumento TAG: XV-6259 a Panel de Señales Remotas TAG: 5817-RIO-1501. | 1d | 2026-03-26 | 2026-03-26 | A5590 SS | 0d |
| A5610 |  | Instrumento TAG: XV-6263 a Panel de Señales Remotas TAG: 5817-RIO-1501. | 1d | 2026-03-26 | 2026-03-26 | A5600 SS | 0d |
|  | 4 | **PRUEBAS DE FUNCIONAMIENTO Y PEM INST. TK-6060** |  | 2026-03-27 | 2026-03-31 |  |  |
| A5620 |  | Pruebas de Funcionamiento y Puesta en Marcha de TAG: 5817-RIO-1501. | 2d | 2026-03-27 | 2026-03-28 | A5610 | 0d |
| A5630 |  | Pruebas de Operación y Puesta en Marcha de Instrumento TAG: FIT-6207 | 1d | 2026-03-29 | 2026-03-29 | A5620 | 0d |
| A5640 |  | Pruebas de Operación y Puesta en Marcha de Instrumento TAG: FIT-6209 | 1d | 2026-03-29 | 2026-03-29 | A5630 SS | 0d |
| A5650 |  | Pruebas de Operación y Puesta en Marcha de Instrumento TAG: FIT-6260 | 1d | 2026-03-29 | 2026-03-29 | A5640 SS | 0d |
| A5660 |  | Pruebas de Operación y Puesta en Marcha de Instrumento TAG: FIT-6261 | 1d | 2026-03-29 | 2026-03-29 | A5650 SS | 0d |
| A5670 |  | Pruebas de Operación y Puesta en Marcha de Instrumento TAG: DIT-6279 | 1d | 2026-03-29 | 2026-03-29 | A5660 SS | 0d |
| A5680 |  | Pruebas de Operación y Puesta en Marcha de Instrumento TAG: PIT-6226 | 1d | 2026-03-29 | 2026-03-29 | A5670 SS | 0d |
| A5690 |  | Pruebas de Operación y Puesta en Marcha de Instrumento TAG: PIT-6236 | 1d | 2026-03-29 | 2026-03-29 | A5680 SS | 0d |
| A5700 |  | Pruebas de Operación y Puesta en Marcha de Instrumento TAG: PIT-6222 | 1d | 2026-03-29 | 2026-03-29 | A5690 SS | 0d |
| A5710 |  | Pruebas de Operación y Puesta en Marcha de Instrumento TAG: FV-6208 | 1d | 2026-03-29 | 2026-03-29 | A5700 SS | 0d |
| A5720 |  | Pruebas de Operación y Puesta en Marcha de Instrumento TAG: FV-6217 | 1d | 2026-03-29 | 2026-03-29 | A5710 SS | 0d |
| A5730 |  | Pruebas de Operación y Puesta en Marcha de Instrumento TAG: XV-1178 | 1d | 2026-03-29 | 2026-03-29 | A5720 SS | 0d |
| A5740 |  | Pruebas de Operación y Puesta en Marcha de Instrumento TAG: XV-1179 | 1d | 2026-03-29 | 2026-03-29 | A5730 SS | 0d |
| A5750 |  | Pruebas de Operación y Puesta en Marcha de Instrumento TAG: XV-1180 | 1d | 2026-03-29 | 2026-03-29 | A5740 SS | 0d |
| A5760 |  | Pruebas de Operación y Puesta en Marcha de Instrumento TAG: XV-1181 | 1d | 2026-03-30 | 2026-03-30 | A5750 | 0d |
| A5770 |  | Pruebas de Operación y Puesta en Marcha de Instrumento TAG: XV-1182 | 1d | 2026-03-30 | 2026-03-30 | A5760 SS | 0d |
| A5780 |  | Pruebas de Operación y Puesta en Marcha de Instrumento TAG: XV-6206 | 1d | 2026-03-30 | 2026-03-30 | A5770 SS | 0d |
| A5790 |  | Pruebas de Operación y Puesta en Marcha de Instrumento TAG: XV-6209 | 1d | 2026-03-30 | 2026-03-30 | A5780 SS | 0d |
| A5800 |  | Pruebas de Operación y Puesta en Marcha de Instrumento TAG: XV-6216 | 1d | 2026-03-30 | 2026-03-30 | A5790 SS | 0d |
| A5810 |  | Pruebas de Operación y Puesta en Marcha de Instrumento TAG: XV-6219 | 1d | 2026-03-30 | 2026-03-30 | A5800 SS | 0d |
| A5820 |  | Pruebas de Operación y Puesta en Marcha de Instrumento TAG: XV-6223 | 1d | 2026-03-30 | 2026-03-30 | A5810 SS | 0d |
| A5830 |  | Pruebas de Operación y Puesta en Marcha de Instrumento TAG: XV-6223 | 1d | 2026-03-30 | 2026-03-30 | A5820 SS | 0d |
| A5840 |  | Pruebas de Operación y Puesta en Marcha de Instrumento TAG: XV-6224 | 1d | 2026-03-30 | 2026-03-30 | A5830 SS | 0d |
| A5850 |  | Pruebas de Operación y Puesta en Marcha de Instrumento TAG: XV-6225 | 1d | 2026-03-30 | 2026-03-30 | A5840 SS | 0d |
| A5860 |  | Pruebas de Operación y Puesta en Marcha de Instrumento TAG: XV-6226 | 1d | 2026-03-30 | 2026-03-30 | A5850 SS | 0d |
| A5870 |  | Pruebas de Operación y Puesta en Marcha de Instrumento TAG: XV-6227 | 1d | 2026-03-30 | 2026-03-30 | A5860 SS | 0d |
| A5880 |  | Pruebas de Operación y Puesta en Marcha de Instrumento TAG: XV-6228 | 1d | 2026-03-31 | 2026-03-31 | A5870 | 0d |
| A5890 |  | Pruebas de Operación y Puesta en Marcha de Instrumento TAG: XV-6233 | 1d | 2026-03-31 | 2026-03-31 | A5880 SS | 0d |
| A5900 |  | Pruebas de Operación y Puesta en Marcha de Instrumento TAG: XV-6234 | 1d | 2026-03-31 | 2026-03-31 | A5890 SS | 0d |
| A5910 |  | Pruebas de Operación y Puesta en Marcha de Instrumento TAG: XV-6237 | 1d | 2026-03-31 | 2026-03-31 | A5900 SS | 0d |
| A5920 |  | Pruebas de Operación y Puesta en Marcha de Instrumento TAG: XV-6238 | 1d | 2026-03-31 | 2026-03-31 | A5910 SS | 0d |
| A5930 |  | Pruebas de Operación y Puesta en Marcha de Instrumento TAG: XV-6243 | 1d | 2026-03-31 | 2026-03-31 | A5920 SS | 0d |
| A5940 |  | Pruebas de Operación y Puesta en Marcha de Instrumento TAG: XV-6259 | 1d | 2026-03-31 | 2026-03-31 | A5930 SS | 0d |
| A5950 |  | Pruebas de Operación y Puesta en Marcha de Instrumento TAG: XV-6263 | 1d | 2026-03-31 | 2026-03-31 | A5940 SS, A5210, A4810 | 0d |
|  | 2 | **ÁREA 5772 - SECTOR TK-800** |  | 2025-09-18 | 2026-01-06 |  |  |
|  | 1 | **OBRAS CIVILES TK-800** |  | 2025-09-18 | 2025-10-02 |  |  |
|  | 1 | **OOCC SECTOR ESTANQUE DE AGUA BLANDA TAG:5772-EST-800** |  | 2025-09-18 | 2025-10-02 |  |  |
| A5970 |  | Nivelación Pedestal | 3d | 2025-09-18 | 2025-09-20 | A3920 | 84d |
| A5980 |  | Armadura de Refuerzo A630-420H para Estructura Monorriel | 3d | 2025-09-21 | 2025-09-23 | A5970 | 85d |
| A5960 |  | Ampliación Pedestal (TAG: 5772-BBA-1601 y TAG: 5772-BBA-1604) | 3d | 2025-09-24 | 2025-09-26 | A5980 | 85d |
| A6000 |  | Emplantillado Estructura Monorriel | 3d | 2025-09-27 | 2025-09-29 | A5960 | 111d |
| A5990 |  | Estructura Monorriel | 3d | 2025-09-30 | 2025-10-02 | A6000 | 111d |
|  | 2 | **OBRAS MECÁNICAS TK-800** |  | 2025-10-03 | 2025-10-13 |  |  |
|  | 1 | **MONTAJE Y PRUEBAS DE EQUIPOS MECÁNICOS ÁREA 5772 SECTOR TK-800** |  | 2025-10-03 | 2025-10-13 |  |  |
| A6010 |  | Bomba Centrífuga y Motor TAG: 5772-BBA-1601; 5772-MTR-1602 | 4d | 2025-10-03 | 2025-10-06 | A5960, A5990 | 111d |
| A6020 |  | Bomba Centrífuga y Motor TAG: 5772-BBA-1604; 5772-MTR-1605 | 4d | 2025-10-07 | 2025-10-10 | A6010 | 111d |
| A6030 |  | Tecle Mantenimiento de Bombas TAG: 5772-TEC-1607 | 3d | 2025-10-11 | 2025-10-13 | A5990, A6020 | 111d |
|  | 3 | **OBRAS PIPING TK-800** |  | 2025-09-21 | 2025-12-19 |  |  |
|  | 1 | **FABRICACIÓN Y MONTAJE DE CAÑERÍAS ÁREA TK-800** |  | 2025-09-21 | 2025-12-15 |  |  |
| A6040 |  | Ø 200 mm - Cañería HDPE, PE 100, PN20 (8") - Fabricación | 18d | 2025-09-21 | 2025-10-08 | A1070, A5970 | 84d |
| A6110 |  | Ø 200 mm - Cañería HDPE, PE 100, PN20 (8") - Montaje | 28d | 2025-09-24 | 2025-10-21 | A6040 SS+3d | 84d |
| A6050 |  | Ø 8" - Cañería Acero Inoxidable - Fabricación | 5d | 2025-10-09 | 2025-10-13 | A6040 | 103d |
| A6060 |  | Ø 6" - Cañería Acero Inoxidable - Fabricación | 7d | 2025-10-14 | 2025-10-20 | A6050 | 103d |
| A6070 |  | Ø 4" - Cañería Acero Inoxidable - Fabricación | 14d | 2025-10-21 | 2025-11-03 | A6060 | 103d |
| A6080 |  | Ø 3" - Cañería Acero Inoxidable - Fabricación | 2d | 2025-11-04 | 2025-11-05 | A6070 | 103d |
| A6090 |  | Ø 2" - Cañería Acero Inoxidable - Fabricación | 4d | 2025-11-06 | 2025-11-09 | A6080 | 103d |
| A6100 |  | Ø 1" - Cañería Acero Inoxidable - Fabricación | 2d | 2025-11-10 | 2025-11-11 | A6090 | 103d |
| A6120 |  | Ø 8" - Cañería Acero Inoxidable - Montaje | 5d | 2025-11-12 | 2025-11-16 | A6070, A6100, A6110 | 103d |
| A6130 |  | Ø 6" - Cañería Acero Inoxidable - Montaje | 7d | 2025-11-17 | 2025-11-23 | A6120 | 103d |
| A6140 |  | Ø 4" - Cañería Acero Inoxidable - Montaje | 14d | 2025-11-24 | 2025-12-07 | A6130, A6100 | 103d |
| A6150 |  | Ø 3" - Cañería Acero Inoxidable - Montaje | 4d | 2025-12-08 | 2025-12-11 | A6140 | 103d |
| A6160 |  | Ø 2" - Cañería Acero Inoxidable - Montaje | 3d | 2025-12-13 | 2025-12-15 | A6150, A6180 FF, A6179 FF, A6170 | 102d |
|  | 2 | **MONTAJE DE VÁLVULAS Y FITTING SECTOR TK-800** |  | 2025-09-27 | 2025-12-15 |  |  |
| A6179 |  | Fitting Sector TK-800 (Global) | 80d | 2025-09-27 | 2025-12-15 | A6040 SS+3d, A6110 SS+3d | 102d |
| A6180 |  | Válvulas Sector TK-800 (Global) | 80d | 2025-09-27 | 2025-12-15 | A6040 SS, A6179 SS | 102d |
|  | 3 | **TIE IN LÍNEAS ASOCIADAS A TK-800** |  | 2025-12-16 | 2025-12-19 |  |  |
| A6190 |  | TIE-IN N° 1431 - 5772-EST-800 FRP a Línea Proyectada 150-TW-5772-I1-1661 | 2d | 2025-12-16 | 2025-12-17 | A6160 | 102d |

| ID | WBS | Task | Duration | Start | Finish | Predecessors | Total float |
| --- | --- | --- | --- | --- | --- | --- | --- |
| A6200 |  | TIE-IN N° 1432 - 5772-EST-800 FRP a Línea Proyectada 150-TW-5772-I1-1663 | 2d | 2025-12-18 | 2025-12-19 | A6190 | 102d |
|  | 4 | **FABRICACIÓN Y MONTAJE DE SOPORTES TK-800** |  | 2025-10-22 | 2025-11-09 |  |  |
| A6220 |  | Soporte N°001 - Pedestal Tipo TEE, Acero Estructural para Tuberías Diámetros Pequeños | 4d | 2025-10-22 | 2025-10-25 | A6110 | 84d |
| A6230 |  | Soporte N°002B - Pedestal con Repisa de Acero Estructural para Tuberías Diámetros Pequeños | 4d | 2025-10-26 | 2025-10-29 | A6220 | 84d |
| A6240 |  | Soporte N°003 - Tirángulo Tipo Repisa (Existente), Acero Estructural (NOTA 4) | 1d | 2025-10-30 | 2025-10-30 | A6230 | 84d |
| A6250 |  | Soporte Primario Tipo "U" (Para Uso General) | 3d | 2025-10-31 | 2025-11-02 | A6240 | 84d |
| A6170 |  | Retiro Perfil Exsitente y Soporte de Tuberias Existentes | 7d | 2025-11-03 | 2025-11-09 | A5990, A6250 | 84d |
|  | 4 | **OBRAS ELÉCTRICAS TK-800** |  | 2025-11-10 | 2025-12-22 |  |  |
|  | 1 | **MONTAJE DE CANALIZACIÓN Y FERRETERÍA TK-800** |  | 2025-11-10 | 2025-11-27 |  |  |
| A6260 |  | Canalización y Copla de Conduit de Acero Galvanizado 6"Ø, Conduit ANSI C80.1 | 10d | 2025-11-10 | 2025-11-19 | A6030, A6170 | 84d |
| A6270 |  | Canalización y Copla de Conduit Flexible Metálico con Cubierta PVC 6" Ø Trabajo Pesado | 2d | 2025-11-20 | 2025-11-21 | A6260 | 84d |
| A6280 |  | Canalización y Copla de Conduit de Acero Galvanizado 1 Ø"Ø, Conduit ANSI C80.1 | 4d | 2025-11-22 | 2025-11-25 | A6270 | 84d |
| A6290 |  | Canalización y Copla de Conduit Flexible Metálico con Cubierta PVC 1 Ø" Ø Trabajo Pesado | 2d | 2025-11-26 | 2025-11-27 | A6280 | 84d |
|  | 2 | **TENDIDO Y CONEXIONADO DE CABLES DE ALIMENTACIÓN TK-800** |  | 2025-11-28 | 2025-12-11 |  |  |
| A6300 |  | Cable Monoconductor de Cobre con Aislación XLPE, 1C #350 MCM, Clase 1 kV | 14d | 2025-11-28 | 2025-12-11 | A6290, A6280 | 84d |
| A6310 |  | Cable Multiconductor de Cobre con Aislación de XLPE, 1x5C #12 AWG, Clase 1 kV | 5d | 2025-12-07 | 2025-12-11 | A6300 FF | 98d |
|  | 3 | **MONTAJE Y CONEXIONADO DE EQUIPOS ELÉCTRICOS TK-800** |  | 2025-12-12 | 2025-12-20 |  |  |
| A6320 |  | Variador de Frecuencia TAG: 5772-VSD-1603 en SEL-403. | 2d | 2025-12-12 | 2025-12-13 | A6310 | 98d |
| A6330 |  | Variador de Frecuencia TAG: 5772-VSD-1605 en SEL-403. | 2d | 2025-12-14 | 2025-12-15 | A6320 | 98d |
| A6340 |  | Modificación de Cubiculo Existente en TAG: 5770-CCM-488, para Suministro de Energía de TAG: 5772-VSD-1603. | 2d | 2025-12-16 | 2025-12-17 | A6330 | 98d |
| A6350 |  | Modificación de Cubiculo Existente en TAG: 5770-CCM-488, para Suministro de Energía de TAG: 5772-VSD-1605. | 2d | 2025-12-18 | 2025-12-19 | A6340 | 98d |
| A6360 |  | Conexión de entre CCM TAG: 5770-CCM-488 y VDF TAG: 5772-VSD-1603. | 1d | 2025-12-20 | 2025-12-20 | A6350 | 98d |
| A6370 |  | Conexión de entre CCM TAG: 5770-CCM-488 y VDF TAG: 5772-VSD-1605. | 1d | 2025-12-20 | 2025-12-20 | A6360 SS | 98d |
| A6380 |  | Conexión de entre VDF TAG: 5772-VSD-1603 y Motor TAG: 5772-MTR-1602. | 1d | 2025-12-20 | 2025-12-20 | A6370 SS | 98d |
| A6390 |  | Conexión de entre VDF TAG: 5772-VSD-1605 y Motor TAG: 5772-MTR-1604. | 1d | 2025-12-20 | 2025-12-20 | A6380 SS | 98d |
|  | 4 | **PRUEBAS DE FUNCIONAMIENTO Y PEM TK-800** |  | 2025-12-21 | 2025-12-22 |  |  |
| A6400 |  | Pruebas de Funcionamiento y Puesta en Marcha de Motor TAG: 5772-MTR-1602. | 1d | 2025-12-21 | 2025-12-21 | A6390 | 98d |
| A6410 |  | Pruebas de Funcionamiento y Puesta en Marcha de Motor TAG: 5772-MTR-1604. | 1d | 2025-12-22 | 2025-12-22 | A6400, A6250 | 98d |
|  | 5 | **OBRAS DE INSTRUMENTACIÓN TK-800** |  | 2025-12-12 | 2026-01-06 |  |  |
|  | 1 | **MONTAJE DE CANALIZACIÓN Y FERRETERÍA INST. TK-800** |  | 2025-12-12 | 2025-12-20 |  |  |
| A6420 |  | Canalización y Copla de Conduit de Acero Galvanizado 1"Ø, Conduit ANSI C80.1 | 7d | 2025-12-12 | 2025-12-18 | A6290, A6300 | 84d |
| A6430 |  | Canalización y Copla de Conduit Flexible Metálico con Cubierta PVC 1" Ø Trabajo Pesado | 2d | 2025-12-19 | 2025-12-20 | A6420 | 84d |
|  | 2 | **TENDIDO Y CONEXIONADO DE CABLES INSTRUMENTACIÓN TK-800** |  | 2025-12-21 | 2026-01-02 |  |  |
| A6440 |  | Cable Multiconductor de Cobre con Aislación de XLPE, 1x3C #12 AWG, Clase 1 kV | 3d | 2025-12-21 | 2025-12-23 | A6430 | 84d |
| A6450 |  | Cable de Instrumentación (Señales Análogas), 1x1 par #16 AWG Apantallado | 10d | 2025-12-24 | 2026-01-02 | A6440 | 84d |
|  | 3 | **MONTAJE Y CONEXIONADO DE EQUIPOS E INSTRUMENTOSTK-800** |  | 2026-01-03 | 2026-01-04 |  |  |
| A6460 |  | Instrumento TAG: PIT-1151 | 1d | 2026-01-03 | 2026-01-03 | A6450 | 84d |
| A6470 |  | Instrumento TAG: FIT-1152 | 1d | 2026-01-04 | 2026-01-04 | A6460 | 84d |
|  | 4 | **PRUEBAS DE FUNCIONAMIENTO Y PEM INST. TK-800** |  | 2026-01-05 | 2026-01-06 |  |  |
| A6480 |  | Pruebas de Operación y Puesta en Marcha de Instrumento TAG: PIT-1151 | 1d | 2026-01-05 | 2026-01-05 | A6470 | 84d |
| A6490 |  | Pruebas de Operación y Puesta en Marcha de Instrumento TAG: FIT-1152 | 1d | 2026-01-06 | 2026-01-06 | A6480, A6410 | 84d |
|  | 3 | **ÁREA 5728 - SECTOR TK-3000** |  | 2025-09-27 | 2026-03-16 |  |  |
|  | 1 | **OBRAS CIVILES TK-3000** |  | 2025-09-27 | 2025-10-01 |  |  |
|  | 2 | **FABRICACIÓN Y MONTAJE DE ESTRUCTURA MONORRIEL TK-3000** |  | 2025-09-27 | 2025-10-01 |  |  |
| A6550 |  | Armadura de refuerzo A630-420H Fundaciones TK-3000 | 3d | 2025-09-27 | 2025-09-29 | A5960 | 85d |
| A6540 |  | Hormigón G30 Pedestal PD-1 (TAG: 5728-BBA-6066 y TAG: 5728-BBA-6063) | 2d | 2025-09-30 | 2025-10-01 | A6550 | 123d |
|  | 2 | **OBRAS MECÁNICAS TK-3000** |  | 2026-02-07 | 2026-02-10 |  |  |
|  | 1 | **MONTAJE Y PRUEBAS DE EQUIPOS MECÁNICOS TK-3000** |  | 2026-02-07 | 2026-02-10 |  |  |
| A6580 |  | Bomba Centrífuga y Motor TAG: 5728-BBA-6063; 5728-MTR-6064 | 4d | 2026-02-07 | 2026-02-10 | A8370 | 8d |
| A6590 |  | Bomba Centrífuga y Motor TAG: 5728-BBA-6066; 5728-MTR-6067 | 4d | 2026-02-07 | 2026-02-10 | A6580 SS | 8d |
|  | 4 | **OBRAS PIPING TK-3000** |  | 2025-12-19 | 2026-02-28 |  |  |
|  | 1 | **FABRICACIÓN Y MONTAJE DE CAÑERÍAS ÁREA TK-3000** |  | 2025-12-19 | 2026-02-17 |  |  |
| A6610 |  | Ø 6" - Cañería Acero Inoxidable - Fabricación | 30d | 2025-12-19 | 2026-01-17 | A6550 SS+4d, A4380 | 6d |
| A6660 |  | Ø 6" - Cañería Acero Inoxidable - Montaje | 30d | 2025-12-23 | 2026-01-21 | A6610 SS+4d, A6700 SS, A6710 SS, A4490 SS | 33d |
| A6620 |  | Ø 4" - Cañería Acero Inoxidable - Fabricación | 4d | 2026-01-18 | 2026-01-21 | A6610 | 22d |
| A6630 |  | Ø 3" - Cañería Acero Inoxidable - Fabricación | 3d | 2026-01-19 | 2026-01-21 | A6620 FF | 22d |
| A6680 |  | Ø 3" - Cañería Acero Inoxidable - Montaje | 3d | 2026-01-21 | 2026-01-23 | A6670 FF | 34d |
| A6640 |  | Ø 2" - Cañería Acero Inoxidable - Fabricación | 14d | 2026-01-22 | 2026-02-04 | A6630 | 22d |
| A6670 |  | Ø 4" - Cañería Acero Inoxidable - Montaje | 2d | 2026-01-22 | 2026-01-23 | A6620 | 34d |
| A6650 |  | Ø 1" - Cañería Acero Inoxidable - Fabricación | 3d | 2026-02-02 | 2026-02-04 | A6640 FF, A4000 | 34d |
| A6690 |  | Ø 2" - Cañería Acero Inoxidable - Montaje | 13d | 2026-02-05 | 2026-02-17 | A6680, A6640 FF, A6640 | 22d |
|  | 2 | **MONTAJE DE VÁLVULAS Y FITTING SECTOR TK-3000** |  | 2025-12-19 | 2026-02-28 |  |  |
| A6700 |  | Fitting Sector TK-3000 (Global) | 72d | 2025-12-19 | 2026-02-28 | A6610 SS | 37d |
| A6710 |  | Válvulas Sector TK-3000 (Global) | 72d | 2025-12-19 | 2026-02-28 | A6610 SS | 37d |
|  | 3 | **TIE IN LÍNEAS ASOCIADAS A TK-3000** |  | 2026-02-13 | 2026-02-17 |  |  |
| A6720 |  | Perforación de Estanque Existente TK-001 para TIE-IN N°6451, 6452 y 6453. | 5d | 2026-02-13 | 2026-02-17 | A6690 FF | 22d |
| A6730 |  | TIE-IN N° 6451 - 5728-EST-001 FRP a Línea Proyectada 150-LC-5728-I1-6633-A | 1d | 2026-02-17 | 2026-02-17 | A6720 FF | 22d |
| A6740 |  | TIE-IN N° 6452 - 5728-EST-001 FRP a Línea Proyectada 150-LC-5728-I1-6605-A | 1d | 2026-02-17 | 2026-02-17 | A6730 FF | 22d |
| A6750 |  | TIE-IN N° 6453 - 5728-EST-001 FRP a Línea Proyectada 150-LC-5817-I1-6604-A | 1d | 2026-02-17 | 2026-02-17 | A6740 FF, A6650 | 22d |
|  | 4 | **AISLACIÓN LÍNEAS TK-3000** |  | 2026-01-22 | 2026-02-26 |  |  |

| ID | WBS | Task | Duration | Start | Finish | Predecessors | Total float |
| --- | --- | --- | --- | --- | --- | --- | --- |
| A6760 |  | Ø 6" - Aislación de Lana Mineral de 1,5" de espesor | 30d | 2026-01-22 | 2026-02-20 | A6660 FF+8d, A6660 | 33d |
| A6770 |  | Ø 4" - Aislación de Lana Mineral de 1,5" de espesor | 3d | 2026-02-21 | 2026-02-23 | A6670, A6760 | 33d |
| A6780 |  | Ø 3" - Aislación de Lana Mineral de 1,5" de espesor | 3d | 2026-02-24 | 2026-02-26 | A6680, A6770 | 33d |
|  | 6 | **FABRICACIÓN Y MONTAJE DE SOPORTES TK-3000** |  | 2026-01-28 | 2026-02-02 |  |  |
| A6820 |  | Soporte N°001 - Pedestal Tipo TEE, Acero Estructural para Tuberías Diámetros Pequeños | 6d | 2026-01-28 | 2026-02-02 | A6660 SS, A4630 SS | 1d |
| A6830 |  | Soporte N°002 - Pedestal con Repisa de Acero Estructural para Tuberías Diámetros Pequeños | 4d | 2026-01-28 | 2026-01-31 | A6820 SS | 1d |
| A6840 |  | Soporte N°003 - Pedestal, Acero Estructural para Tuberías Diámetros Pequeños | 4d | 2026-01-28 | 2026-01-31 | A6830 SS | 1d |
| A6850 |  | Soporte N°004 - Pedestal y Voladizo Tipo Simple, Acero Estructural para Tuberías Diámetros Pequeños | 4d | 2026-01-28 | 2026-01-31 | A6840 SS | 1d |
| A6860 |  | Soporte N°005 - Arco Tipo Colgante, Acero Estructural para Tuberías Diámetros Pequeños | 4d | 2026-01-28 | 2026-01-31 | A6850 SS | 1d |
| A6870 |  | Soporte Primario Tipo "U" (Para Uso General) | 6d | 2026-01-28 | 2026-02-02 | A6860 SS | 1d |
|  | 5 | **OBRAS ELÉCTRICAS TK-3000** |  | 2026-02-11 | 2026-03-14 |  |  |
|  | 1 | **MONTAJE DE CANALIZACIÓN Y FERRETERÍA TK-3000** |  | 2026-02-11 | 2026-02-17 |  |  |
| A6880 |  | Canalización y Copla de Conduit de Acero Galvanizado 6"Ø, Conduit ANSI C80.1 | 4d | 2026-02-11 | 2026-02-14 | A6590, A6260 SS | 8d |
| A6890 |  | Canalización y Copla de Conduit Flexible Metálico con Cubierta PVC 6" Ø Trabajo Pesado. | 2d | 2026-02-11 | 2026-02-12 | A6880 SS | 8d |
| A6900 |  | Canalización y Copla de Conduit de Acero Galvanizado 1 Ø"Ø, Conduit ANSI C80.1 | 5d | 2026-02-13 | 2026-02-17 | A6890 | 8d |
| A6910 |  | Canalización y Copla de Conduit Flexible Metálico con Cubierta PVC 1 Ø" Ø Trabajo Pesado. | 2d | 2026-02-13 | 2026-02-14 | A6900 SS | 8d |
|  | 2 | **TENDIDO Y CONEXIONADO DE CABLES DE ALIMENTACIÓN TK-3000** |  | 2026-02-13 | 2026-02-27 |  |  |
| A6920 |  | Cable Monoconductor de Cobre con Aislación XLPE, 1C #350 MCM, Clase 1 kV | 15d | 2026-02-13 | 2026-02-27 | A6880 SS, A6910 SS | 15d |
| A6930 |  | Cable Multiconductor de Cobre con Aislación de XLPE, 1x5C #12 AWG, Clase 1 kV | 5d | 2026-02-23 | 2026-02-27 | A6920 FF | 15d |
|  | 3 | **MONTAJE Y CONEXIONADO DE EQUIPOS ELÉCTRICOS TK-3000** |  | 2026-02-28 | 2026-03-10 |  |  |
| A6940 |  | Variador de Frecuencia TAG: 5728-VSD-6065 en SEL-401. | 2d | 2026-02-28 | 2026-03-01 | A6920, A6930 | 15d |
| A6950 |  | Variador de Frecuencia TAG: 5728-VSD-6068 en SEL-401. | 2d | 2026-03-02 | 2026-03-03 | A6940 | 15d |
| A6960 |  | Modificación de Cubiculo Existente en TAG: 5770-CCM-431, para Suministro de Energía de TAG: 5728-VSD-6065. | 2d | 2026-03-04 | 2026-03-05 | A6950 | 15d |
| A6970 |  | Modificación de Cubiculo Existente en TAG: 5770-CCM-431, para Suministro de Energía de TAG: 5728-VSD-6068. | 2d | 2026-03-06 | 2026-03-07 | A6960 | 15d |
| A6980 |  | Conexión de entre CCM TAG: 5770-CCM-431 y VDF TAG: 5728-VSD-6065. | 1d | 2026-03-07 | 2026-03-07 | A6970 FF | 15d |
| A6990 |  | Conexión de entre CCM TAG: 5770-CCM-431 y VDF TAG: 5728-VSD-6068. | 1d | 2026-03-08 | 2026-03-08 | A6980 | 15d |
| A7000 |  | Conexión de entre VDF TAG: 5728-VSD-6065 y Motor TAG: 5728-MTR-6064. | 1d | 2026-03-09 | 2026-03-09 | A6990 | 15d |
| A7010 |  | Conexión de entre VDF TAG: 5728-VSD-6068 y Motor TAG: 5728-MTR-6067. | 1d | 2026-03-10 | 2026-03-10 | A7000 | 15d |
|  | 4 | **PRUEBAS DE FUNCIONAMIENTO Y PEM TK-3000** |  | 2026-03-11 | 2026-03-14 |  |  |
| A7020 |  | Pruebas de Funcionamiento y Puesta en Marcha de Motor TAG: 5728-MTR-6065. | 2d | 2026-03-11 | 2026-03-12 | A7010, A6690 | 15d |
| A7030 |  | Pruebas de Funcionamiento y Puesta en Marcha de Motor TAG: 5728-MTR-6067. | 2d | 2026-03-13 | 2026-03-14 | A7020 | 15d |
|  | 6 | **OBRAS DE INSTRUMENTACIÓN TK-3000** |  | 2026-02-13 | 2026-03-16 |  |  |
|  | 1 | **MONTAJE DE CANALIZACIÓN Y FERRETERÍA INST. TK-3000** |  | 2026-02-13 | 2026-02-28 |  |  |
| A7040 |  | EPC y Copla Porta Conductores 600x100mm e:2,5 mm, tiras 3m. Incluir tapa dos aguas, eclisas y pernos de Unión. | 3d | 2026-02-13 | 2026-02-15 | A6910 SS | 8d |
| A7050 |  | EPC Curva Tipo "T", 600x100x2,5mm. Incluir tapa dos aguas, eclisas y pernos de Unión. | 3d | 2026-02-13 | 2026-02-15 | A7040 FF | 8d |
| A7060 |  | Canalización y Copla de Conduit de Acero Galvanizado 1"Ø, Conduit ANSI C80.1 | 12d | 2026-02-13 | 2026-02-24 | A7050 SS | 8d |
| A7070 |  | Canalización y Copla de Conduit Flexible Metálico con Cubierta PVC 1" Ø Trabajo Pesado | 4d | 2026-02-25 | 2026-02-28 | A7060 | 31d |
|  | 2 | **TENDIDO Y CONEXIONADO DE CABLES INSTRUMENTACIÓN TK-3000** |  | 2026-02-13 | 2026-03-06 |  |  |
| A7080 |  | Cable Multiconductor de Cobre con Aislación de XLPE, 1x3C #12 AWG, Clase 1 kV | 5d | 2026-02-13 | 2026-02-17 | A7060 SS | 8d |
| A7090 |  | Cable de Instrumentación (Señales Análogas), 1x1 par #16 AWG Apantallado | 8d | 2026-02-13 | 2026-02-20 | A7080 SS | 8d |
| A7100 |  | Cable Multiconductor de Cobre Blando 1x3C #12 AWG, Clase 0,3 | 14d | 2026-02-21 | 2026-03-06 | A7090 | 8d |
| A7110 |  | Cable Multiconductor de Cobre Blando 1x5C #12 AWG, Clase 0,3 | 14d | 2026-02-21 | 2026-03-06 | A7100 SS | 8d |
|  | 3 | **MONTAJE Y CONEXIONADO DE EQUIPOS E INSTRUMENTOSTK-3000** |  | 2026-03-07 | 2026-03-14 |  |  |
| A7120 |  | Instrumento TAG: PIT-6204 | 2d | 2026-03-07 | 2026-03-08 | A6660, A7110 | 8d |
| A7130 |  | Instrumento TAG: PIT-6214 | 2d | 2026-03-07 | 2026-03-08 | A7120 SS | 8d |
| A7140 |  | Instrumento TAG: UIT-6218 | 2d | 2026-03-07 | 2026-03-08 | A7130 SS | 8d |
| A7150 |  | Instrumento TAG: UIT-6220 | 2d | 2026-03-07 | 2026-03-08 | A7140 SS | 8d |
| A7160 |  | Instrumento TAG: XV-1153 | 2d | 2026-03-07 | 2026-03-08 | A7150 SS | 8d |
| A7170 |  | Instrumento TAG: XV-1154 | 2d | 2026-03-09 | 2026-03-10 | A7160 | 8d |
| A7180 |  | Instrumento TAG: XV-1155 | 2d | 2026-03-09 | 2026-03-10 | A7170 SS | 8d |
| A7190 |  | Instrumento TAG: XV-1156 | 2d | 2026-03-09 | 2026-03-10 | A7180 SS | 8d |
| A7200 |  | Instrumento TAG: XV-1157 | 2d | 2026-03-09 | 2026-03-10 | A7190 SS | 8d |
| A7210 |  | Instrumento TAG: XV-6201 | 2d | 2026-03-09 | 2026-03-10 | A7200 SS | 8d |
| A7220 |  | Instrumento TAG: XV-6204 | 2d | 2026-03-11 | 2026-03-12 | A7210 | 8d |
| A7230 |  | Instrumento TAG: XV-6205 | 2d | 2026-03-11 | 2026-03-12 | A7220 SS | 8d |
| A7240 |  | Instrumento TAG: XV-6210 | 2d | 2026-03-11 | 2026-03-12 | A7230 SS | 8d |
| A7250 |  | Instrumento TAG: XV-6211 | 2d | 2026-03-11 | 2026-03-12 | A7240 SS | 8d |
| A7260 |  | Instrumento TAG: XV-6214 | 2d | 2026-03-11 | 2026-03-12 | A7250 SS | 8d |
| A7270 |  | Instrumento TAG: XV-6215 | 2d | 2026-03-13 | 2026-03-14 | A7260 | 8d |
| A7280 |  | Instrumento TAG: XV-6221 | 2d | 2026-03-13 | 2026-03-14 | A7270 SS | 8d |
|  | 4 | **PRUEBAS DE FUNCIONAMIENTO Y PEM INST. TK-3000** |  | 2026-03-11 | 2026-03-16 |  |  |
| A7290 |  | Pruebas de Operación y Puesta en Marcha de Instrumento TAG: PIT-6204 | 2d | 2026-03-11 | 2026-03-12 | A7210 | 15d |
| A7300 |  | Pruebas de Operación y Puesta en Marcha de Instrumento TAG: PIT-6214 | 2d | 2026-03-11 | 2026-03-12 | A7290 SS | 15d |
| A7310 |  | Pruebas de Operación y Puesta en Marcha de Instrumento TAG: UIT-6218 | 2d | 2026-03-11 | 2026-03-12 | A7300 SS | 15d |
| A7320 |  | Pruebas de Operación y Puesta en Marcha de Instrumento TAG: UIT-6220 | 2d | 2026-03-11 | 2026-03-12 | A7310 SS | 15d |
| A7330 |  | Pruebas de Operación y Puesta en Marcha de Instrumento TAG: XV-1153 | 2d | 2026-03-11 | 2026-03-12 | A7320 SS | 15d |
| A7340 |  | Pruebas de Operación y Puesta en Marcha de Instrumento TAG: XV-1154 | 2d | 2026-03-13 | 2026-03-14 | A7260, A7330 | 15d |
| A7350 |  | Pruebas de Operación y Puesta en Marcha de Instrumento TAG: XV-1155 | 2d | 2026-03-13 | 2026-03-14 | A7340 SS | 15d |
| A7360 |  | Pruebas de Operación y Puesta en Marcha de Instrumento TAG: XV-1156 | 2d | 2026-03-13 | 2026-03-14 | A7350 SS | 15d |
| A7370 |  | Pruebas de Operación y Puesta en Marcha de Instrumento TAG: XV-1157 | 2d | 2026-03-13 | 2026-03-14 | A7360 SS | 15d |

| ID | WBS | Task | Duration | Start | Finish | Predecessors | Total float |
| --- | --- | --- | --- | --- | --- | --- | --- |
| A7380 |  | Pruebas de Operación y Puesta en Marcha de Instrumento TAG: XV-6201 | 2d | 2026-03-13 | 2026-03-14 | A7370 SS | 15d |
| A7390 |  | Pruebas de Operación y Puesta en Marcha de Instrumento TAG: XV-6204 | 2d | 2026-03-15 | 2026-03-16 | A7280, A7380, A7030 | 15d |
| A7400 |  | Pruebas de Operación y Puesta en Marcha de Instrumento TAG: XV-6205 | 2d | 2026-03-15 | 2026-03-16 | A7390 SS | 15d |
| A7410 |  | Pruebas de Operación y Puesta en Marcha de Instrumento TAG: XV-6210 | 2d | 2026-03-15 | 2026-03-16 | A7400 SS | 15d |
| A7420 |  | Pruebas de Operación y Puesta en Marcha de Instrumento TAG: XV-6211 | 2d | 2026-03-15 | 2026-03-16 | A7410 SS | 15d |
| A7430 |  | Pruebas de Operación y Puesta en Marcha de Instrumento TAG: XV-6214 | 2d | 2026-03-15 | 2026-03-16 | A7420 SS | 15d |
| A7440 |  | Pruebas de Operación y Puesta en Marcha de Instrumento TAG: XV-6215 | 2d | 2026-03-15 | 2026-03-16 | A7430 SS | 15d |
|  | 4 | **ÁREA 5827 - SECTOR ESTANQUES L5 LiOH (TK-6100)** |  | 2026-01-18 | 2026-03-25 |  |  |
|  | 1 | **OBRAS PIPING SECTOR ESTANQUES L5 LiOH (TK-6100)** |  | 2026-01-18 | 2026-03-25 |  |  |
|  | 1 | **FABRICACIÓN Y MONTAJE DE CAÑERÍAS ÁREA ESTANQUES L5 LiOH (TK-6100)** |  | 2026-01-18 | 2026-03-22 |  |  |
| A7450 |  | Ø 6" - Cañería Acero Inoxidable - Fabricación | 34d | 2026-01-18 | 2026-02-20 | A6610 | 6d |
| A7470 |  | Ø 3" - Cañería Acero Inoxidable - Fabricación | 28d | 2026-01-23 | 2026-02-19 | A7450 SS+5d | 38d |
| A7520 |  | Ø 3" - Cañería Acero Inoxidable - Montaje | 28d | 2026-01-25 | 2026-02-21 | A7470 FF+2d | 38d |
| A7480 |  | Ø 2" - Cañería Acero Inoxidable - Fabricación | 14d | 2026-02-07 | 2026-02-20 | A7460 FF | 25d |
| A7490 |  | Ø 3" - Cañería CPVC, SCH 80 - Fabricación | 8d | 2026-02-07 | 2026-02-14 | A7480 SS | 39d |
| A7460 |  | Ø 4" - Cañería Acero Inoxidable - Fabricación | 10d | 2026-02-11 | 2026-02-20 | A7450 FF | 25d |
| A7540 |  | Ø 3" - Cañería CPVC, SCH 80 - Montaje | 14d | 2026-02-18 | 2026-03-03 | A7490 FF, A6750 | 22d |
| A7500 |  | Ø 6" - Cañería Acero Inoxidable - Montaje | 30d | 2026-02-21 | 2026-03-22 | A7450 SS+2d, A7450 | 6d |
| A7530 |  | Ø 2" - Cañería Acero Inoxidable - Montaje | 14d | 2026-02-21 | 2026-03-06 | A7480 FF, A7480 | 25d |
| A7510 |  | Ø 4" - Cañería Acero Inoxidable - Montaje | 10d | 2026-03-13 | 2026-03-22 | A7500 FF, A7460 FF, A7460 | 9d |
|  | 2 | **MONTAJE DE VÁLVULAS Y FITTING SECTOR ESTANQUES L5 LiOH (TK-6100)** |  | 2026-01-18 | 2026-03-22 |  |  |
| A7550 |  | Fitting Sector L5 LiOH - TK-6100 (Global) | 64d | 2026-01-18 | 2026-03-22 | A7450 SS, A7530 FF | 9d |
| A7560 |  | Válvulas Sector L5 LiOH - TK-6100 (Global) | 64d | 2026-01-18 | 2026-03-22 | A7450 SS, A7530 FF, A7550 SS | 9d |
|  | 3 | **TIE IN LÍNEAS ASOCIADAS A ESTANQUES L5 LiOH (TK-6100)** |  | 2026-03-04 | 2026-03-24 |  |  |
| A7610 |  | TIE-IN N° 6456 - 5827-EST-6050 Ac. Inoc. a Línea Proyectada 80-DR-5827-P2-6625 | 2d | 2026-03-04 | 2026-03-05 | A7540 | 22d |
| A7620 |  | TIE-IN N° 6457 - 5827-EST-6050 Ac. Inox. a Línea Proyectada 80-DR-5827-P2-6622 | 2d | 2026-03-04 | 2026-03-05 | A7610 SS | 22d |
| A7630 |  | TIE-IN N° 6460 -5827-EST-7050 Ac. Inox. a Línea Proyectada 80-DR-5827-P2-6627 | 2d | 2026-03-06 | 2026-03-07 | A7620 | 22d |
| A7640 |  | TIE-IN N° 6461 - 5827-EST-7050 Ac. Inox. a Línea Proyectada 80-DR-5827-P2-6624 | 2d | 2026-03-06 | 2026-03-07 | A7630 SS | 22d |
| A7570 |  | TIE-IN N° 6454 - 5827-EST-6100 Ac. Inox. a Línea Proyectada 100-LC-5827-I1-6615-A | 2d | 2026-03-23 | 2026-03-24 | A7530 FF, A7560 FF, A7500 | 7d |
| A7580 |  | TIE-IN N° 6455 - 5827-EST-6100 Ac. Inox. a Línea Proyectada 100-LC-5827-I1-6619-A | 2d | 2026-03-23 | 2026-03-24 | A7570 SS | 7d |
| A7590 |  | TIE-IN N° 6458 - 5827-EST-7100 Ac Inox. a Línea Proyectada 80-LC-5827-I1-6623-A | 2d | 2026-03-23 | 2026-03-24 | A7580 FF | 7d |
| A7600 |  | TIE-IN N° 6459 - 5827-EST-7100 Ac. Inox. a Línea Proyectada 80-LC-5827-I1-6626-A | 2d | 2026-03-23 | 2026-03-24 | A7590 FF, A7640, A7520 FF | 7d |
|  | 4 | **AISLACIÓN LÍNEAS L5 LiOH (TK-6100)** |  | 2026-03-12 | 2026-03-25 |  |  |
| A7670 |  | Ø 3" - Aislación de Lana Mineral de 1,5" de espesor | 14d | 2026-03-12 | 2026-03-25 | A7660 FF, A7530 FF, A7640 FF, A7520 FF, A7600 FF | 6d |
| A7650 |  | Ø 6" - Aislación de Lana Mineral de 1,5" de espesor | 3d | 2026-03-23 | 2026-03-25 | A7500 FF, A7500 | 6d |
| A7660 |  | Ø 4" - Aislación de Lana Mineral de 1,5" de espesor | 3d | 2026-03-23 | 2026-03-25 | A7650 FF, A7510 FF | 6d |
|  | 2 | **OBRAS DE INSTRUMENTACIÓN SECTOR ESTANQUES L5 LiOH (TK-6100)** |  | 2026-02-15 | 2026-03-23 |  |  |
|  | 1 | **MONTAJE DE CANALIZACIÓN Y FERRETERÍA INST. ESTANQUES L5 LiOH (TK-6100)** |  | 2026-02-15 | 2026-02-15 |  |  |
| A7680 |  | Canalización y Copla de Conduit de Acero Galvanizado 1"Ø, Conduit ANSI C80.1 | 1d | 2026-02-15 | 2026-02-15 | A6910 | 21d |
| A7690 |  | Canalización y Copla de Conduit Flexible Metálico con Cubierta PVC 1" Ø Trabajo Pesado | 1d | 2026-02-15 | 2026-02-15 | A7680 SS | 21d |
|  | 2 | **TENDIDO Y CONEXIONADO DE CABLES INSTRUMENTACIÓN ESTANQUES L5 LiOH (TK-6100)** |  | 2026-02-15 | 2026-02-22 |  |  |
| A7700 |  | Cable Multiconductor de Cobre con Aislación de XLPE, 1x3C #12 AWG, Clase 1 kV | 6d | 2026-02-15 | 2026-02-20 | A7690 SS | 21d |
| A7710 |  | Cable de Instrumentación (Señales Análogas), 1x1 par #16 AWG Apantallado | 3d | 2026-02-15 | 2026-02-17 | A7700 SS | 21d |
| A7720 |  | Cable Multiconductor de Cobre Blando 1x3C #12 AWG, Clase 0,3 | 5d | 2026-02-18 | 2026-02-22 | A7710 | 21d |
| A7730 |  | Cable Multiconductor de Cobre Blando 1x5C #12 AWG, Clase 0,3 | 5d | 2026-02-18 | 2026-02-22 | A7720 SS | 21d |
|  | 3 | **MONTAJE Y CONEXIONADO DE EQUIPOS E INSTRUMENTOS ESTANQUES L5 LiOH (TK-6100)** |  | 2026-02-23 | 2026-03-19 |  |  |
| A7740 |  | Módulos de Entradas y Salidas Análogas/Digitales en TAG: 5804-PNC-6402. | 8d | 2026-02-23 | 2026-03-02 | A7730 | 21d |
| A7750 |  | Módulos de Entradas y Salidas Análogas/Digitales en TAG: 5804-PNC-7502. | 8d | 2026-02-23 | 2026-03-02 | A7740 SS | 21d |
| A7760 |  | Brazo Prealambrado para Módulos de Entradas y Salidas Análogas/Digitales en TAG: 5804-PNC-6402. | 8d | 2026-02-23 | 2026-03-02 | A7750 SS | 21d |
| A7770 |  | Brazo Prealambrado para Módulos de Entradas y Salidas Análogas/Digitales en TAG: 5804-PNC-7502. | 8d | 2026-02-23 | 2026-03-02 | A7760 SS | 21d |
| A7780 |  | Instrumento TAG: FIT-6230 | 1d | 2026-03-15 | 2026-03-15 | A7770 FF, A7280 | 8d |
| A7790 |  | Instrumento TAG: FIT-6240 | 1d | 2026-03-15 | 2026-03-15 | A7780 SS | 8d |
| A7800 |  | Instrumento TAG: FIT-6268 | 1d | 2026-03-15 | 2026-03-15 | A7790 SS | 8d |
| A7810 |  | Instrumento TAG: FIT-6670 | 1d | 2026-03-15 | 2026-03-15 | A7800 SS | 8d |
| A7820 |  | Instrumento TAG: FV-6264 | 1d | 2026-03-15 | 2026-03-15 | A7810 SS | 8d |
| A7830 |  | Instrumento TAG: FV-6265 | 1d | 2026-03-15 | 2026-03-15 | A7820 SS | 8d |
| A7840 |  | Instrumento TAG: FV-6264 | 1d | 2026-03-15 | 2026-03-15 | A7830 SS | 8d |
| A7850 |  | Instrumento TAG: FV-6265 | 1d | 2026-03-15 | 2026-03-15 | A7840 SS | 8d |
| A7860 |  | Instrumento TAG: XV-6251 | 1d | 2026-03-16 | 2026-03-16 | A7850 | 8d |
| A7870 |  | Instrumento TAG: XV-6229 | 1d | 2026-03-16 | 2026-03-16 | A7860 SS | 8d |
| A7880 |  | Instrumento TAG: XV-6232 | 1d | 2026-03-16 | 2026-03-16 | A7870 SS | 8d |
| A7890 |  | Instrumento TAG: XV-6245 | 1d | 2026-03-16 | 2026-03-16 | A7880 SS | 8d |
| A7900 |  | Instrumento TAG: XV-6246 | 1d | 2026-03-16 | 2026-03-16 | A7890 SS | 8d |
| A7910 |  | Instrumento TAG: XV-6247 | 1d | 2026-03-16 | 2026-03-16 | A7900 SS | 8d |
| A7920 |  | Instrumento TAG: XV-6252 | 1d | 2026-03-16 | 2026-03-16 | A7910 SS | 8d |
| A7930 |  | Instrumento TAG: XV-6253 | 1d | 2026-03-16 | 2026-03-16 | A7920 SS | 8d |
| A7940 |  | Instrumento TAG: XV-6258 | 1d | 2026-03-17 | 2026-03-17 | A7930 | 8d |
| A7950 |  | Instrumento TAG: XV-6249 | 1d | 2026-03-17 | 2026-03-17 | A7940 SS | 8d |
| A7960 |  | Instrumento TAG: XV-6229 | 1d | 2026-03-17 | 2026-03-17 | A7950 SS | 8d |
| A7970 |  | Instrumento TAG: XV-6230 | 1d | 2026-03-17 | 2026-03-17 | A7960 SS | 8d |

| ID | WBS | Task | Duration | Start | Finish | Predecessors | Total float |
| --- | --- | --- | --- | --- | --- | --- | --- |
| A7980 |  | Instrumento TAG: XV-6240 | 1d | 2026-03-17 | 2026-03-17 | A7970 SS | 8d |
| A7990 |  | Instrumento TAG: XV-6242 | 1d | 2026-03-17 | 2026-03-17 | A7980 SS | 8d |
| A8000 |  | Instrumento TAG: XV-6245 | 1d | 2026-03-17 | 2026-03-17 | A7990 SS | 8d |
| A8010 |  | Instrumento TAG: XV-6250 | 1d | 2026-03-17 | 2026-03-17 | A8000 SS | 8d |
| A8020 |  | Instrumento TAG: XV-6251 | 1d | 2026-03-18 | 2026-03-18 | A8010 | 8d |
| A8030 |  | Instrumento TAG: XV-6258 | 1d | 2026-03-19 | 2026-03-19 | A8020 | 8d |
|  | 4 | **PRUEBAS DE FUNCIONAMIENTO Y PEM INST. ESTANQUES L5 LiOH (TK-6100)** |  | 2026-03-20 | 2026-03-23 |  |  |
| A8040 |  | Pruebas de Operación y PEM de Entradas y Salidas Análogas/Digitales en TAG: 5801-PNC-7502 | 1d | 2026-03-20 | 2026-03-20 | A8030 | 8d |
| A8050 |  | Pruebas de Operación y PEM Módulos de Entradas y Salidas Análogas/Digitales en TAG: 5804-PNC-6402 | 1d | 2026-03-20 | 2026-03-20 | A8040 SS | 8d |
| A8060 |  | Pruebas de Operación y PEM de Brazo Prealambrado Módulos de Entradas y Salidas Análogas/Digitales en TAG: 5804-PNC | 1d | 2026-03-20 | 2026-03-20 | A8050 SS | 8d |
| A8070 |  | Pruebas de Operación y PEM de Brazo Prealambrado Módulos de Entradas y Salidas Análogas/Digitales en TAG: 5801-PNC | 1d | 2026-03-20 | 2026-03-20 | A8060 SS | 8d |
| A8080 |  | Pruebas de Operación y Puesta en Marcha de Instrumento TAG: FIT-6230 | 1d | 2026-03-20 | 2026-03-20 | A8070 SS | 8d |
| A8090 |  | Pruebas de Operación y Puesta en Marcha de Instrumento TAG: FIT-6240 | 1d | 2026-03-20 | 2026-03-20 | A8080 SS | 8d |
| A8100 |  | Pruebas de Operación y Puesta en Marcha de Instrumento TAG: FIT-6268 | 1d | 2026-03-20 | 2026-03-20 | A8090 SS | 8d |
| A8110 |  | Pruebas de Operación y Puesta en Marcha de Instrumento TAG: FIT-6670 | 1d | 2026-03-21 | 2026-03-21 | A8100 | 8d |
| A8120 |  | Pruebas de Operación y Puesta en Marcha de Instrumento TAG: FV-6264 | 1d | 2026-03-21 | 2026-03-21 | A8110 SS | 8d |
| A8130 |  | Pruebas de Operación y Puesta en Marcha de Instrumento TAG: FV-6265 | 1d | 2026-03-21 | 2026-03-21 | A8120 SS | 8d |
| A8140 |  | Pruebas de Operación y Puesta en Marcha de Instrumento TAG: FV-6264 | 1d | 2026-03-21 | 2026-03-21 | A8130 SS | 8d |
| A8150 |  | Pruebas de Operación y Puesta en Marcha de Instrumento TAG: FV-6265 | 1d | 2026-03-21 | 2026-03-21 | A8140 SS | 8d |
| A8160 |  | Pruebas de Operación y Puesta en Marcha de Instrumento TAG: XV-6251 | 1d | 2026-03-21 | 2026-03-21 | A8150 SS | 8d |
| A8170 |  | Pruebas de Operación y Puesta en Marcha de Instrumento TAG: XV-6229 | 1d | 2026-03-21 | 2026-03-21 | A8160 SS | 8d |
| A8180 |  | Pruebas de Operación y Puesta en Marcha de Instrumento TAG: XV-6232 | 1d | 2026-03-21 | 2026-03-21 | A8170 SS | 8d |
| A8190 |  | Pruebas de Operación y Puesta en Marcha de Instrumento TAG: XV-6245 | 1d | 2026-03-22 | 2026-03-22 | A8180 | 8d |
| A8200 |  | Pruebas de Operación y Puesta en Marcha de Instrumento TAG: XV-6246 | 1d | 2026-03-22 | 2026-03-22 | A8190 SS | 8d |
| A8210 |  | Pruebas de Operación y Puesta en Marcha de Instrumento TAG: XV-6247 | 1d | 2026-03-22 | 2026-03-22 | A8200 SS | 8d |
| A8220 |  | Pruebas de Operación y Puesta en Marcha de Instrumento TAG: XV-6252 | 1d | 2026-03-22 | 2026-03-22 | A8210 SS | 8d |
| A8230 |  | Pruebas de Operación y Puesta en Marcha de Instrumento TAG: XV-6253 | 1d | 2026-03-22 | 2026-03-22 | A8220 SS | 8d |
| A8240 |  | Pruebas de Operación y Puesta en Marcha de Instrumento TAG: XV-6258 | 1d | 2026-03-22 | 2026-03-22 | A8230 SS | 8d |
| A8250 |  | Pruebas de Operación y Puesta en Marcha de Instrumento TAG: XV-6249 | 1d | 2026-03-22 | 2026-03-22 | A8240 SS | 8d |
| A8260 |  | New Activity | 1d | 2026-03-23 | 2026-03-23 | A8250 | 8d |
| A8270 |  | Pruebas de Operación y Puesta en Marcha de Instrumento TAG: XV-6230 | 1d | 2026-03-23 | 2026-03-23 | A8260 SS | 8d |
| A8280 |  | Pruebas de Operación y Puesta en Marcha de Instrumento TAG: XV-6240 | 1d | 2026-03-23 | 2026-03-23 | A8270 SS | 8d |
| A8290 |  | Pruebas de Operación y Puesta en Marcha de Instrumento TAG: XV-6242 | 1d | 2026-03-23 | 2026-03-23 | A8280 SS | 8d |
| A8300 |  | Pruebas de Operación y Puesta en Marcha de Instrumento TAG: XV-6245 | 1d | 2026-03-23 | 2026-03-23 | A8290 SS | 8d |
| A8310 |  | Pruebas de Operación y Puesta en Marcha de Instrumento TAG: XV-6250 | 1d | 2026-03-23 | 2026-03-23 | A8300 SS | 8d |
| A8320 |  | Pruebas de Operación y Puesta en Marcha de Instrumento TAG: XV-6251 | 1d | 2026-03-23 | 2026-03-23 | A8310 SS | 8d |
| A8330 |  | Pruebas de Operación y Puesta en Marcha de Instrumento TAG: XV-6258 | 1d | 2026-03-23 | 2026-03-23 | A8320 SS | 8d |
|  | 5 | **ÁREA 5872 - SECTOR TK-3016** |  | 2026-01-28 | 2026-03-31 |  |  |
|  | 6 | **OBRAS CIVILES TK-3016** |  | 2026-01-28 | 2026-02-02 |  |  |
|  | 1 | **OOCC SECTOR ESTANQUE DE AGUA ULTRA PURA TAG:5872-EST-3016** |  | 2026-01-28 | 2026-02-02 |  |  |
| A8350 |  | Armadura de Refuerzo A630-420H para PD-1 | 4d | 2026-01-28 | 2026-01-31 | A6870 SS | 1d |
| A8340 |  | Hormigón G30 Pedestal PD-1 (TAG: 5817-BBA-1681 y TAG: 5817-BBA-1684) | 2d | 2026-02-01 | 2026-02-02 | A8350, A6540 | 1d |
|  | 1 | **OBRAS MECÁNICAS TK-3016** |  | 2026-02-03 | 2026-02-06 |  |  |
|  | 1 | **MONTAJE Y PRUEBAS DE EQUIPOS MECÁNICOS ÁREA 5872 TK3016 HIDRÓXIDO** |  | 2026-02-03 | 2026-02-06 |  |  |
| A8360 |  | Bomba Centrífuga y Motor TAG: 5872-BBA-1681; 5872-MTR-1682 | 4d | 2026-02-03 | 2026-02-06 | A8340, A6030 | 1d |
| A8370 |  | Bomba Centrífuga y Motor TAG: 5872-BBA-1684; 5872-MTR-1685 | 4d | 2026-02-03 | 2026-02-06 | A8360 SS | 1d |
|  | 2 | **OBRAS PIPING TK-3016** |  | 2026-02-03 | 2026-03-13 |  |  |
|  | 1 | **FABRICACIÓN Y MONTAJE DE CAÑERÍAS ÁREA TK-3016** |  | 2026-02-03 | 2026-03-11 |  |  |
| A8380 |  | Ø 200 mm - Cañería HDPE, PE 100, PN20 (8") - Fabricación | 6d | 2026-02-03 | 2026-02-08 | A3600, A8370 SS | 1d |
| A8390 |  | Ø 8" - Cañería Acero Inoxidable - Fabricación | 4d | 2026-02-09 | 2026-02-12 | A8380 | 21d |
| A8400 |  | Ø 6" - Cañería Acero Inoxidable - Fabricación | 30d | 2026-02-09 | 2026-03-10 | A6610 SS, A8380, A4540 | 1d |
| A8460 |  | Ø 6" - Cañería Acero Inoxidable - Montaje | 28d | 2026-02-12 | 2026-03-11 | A8400 FF+1d, A8510 FF, A8520 FF | 1d |
| A8410 |  | Ø 4" - Cañería Acero Inoxidable - Fabricación | 3d | 2026-02-13 | 2026-02-15 | A8390 | 21d |
| A8420 |  | Ø 3" - Cañería Acero Inoxidable - Fabricación | 3d | 2026-02-16 | 2026-02-18 | A8410 | 21d |
| A8430 |  | Ø 2" - Cañería Acero Inoxidable - Fabricación | 4d | 2026-02-19 | 2026-02-22 | A8420 | 23d |
| A8500 |  | Ø 200 mm - Cañería HDPE, PE 100, PN20 (8") - Montaje | 3d | 2026-02-19 | 2026-02-21 | A8420 | 21d |
| A8450 |  | Ø 8" - Cañería Acero Inoxidable - Montaje | 3d | 2026-02-22 | 2026-02-24 | A8500 | 21d |
| A8440 |  | Ø 1" - Cañería Acero Inoxidable - Fabricación | 3d | 2026-02-23 | 2026-02-25 | A8430 | 23d |
| A8480 |  | Ø 3" - Cañería Acero Inoxidable - Montaje | 3d | 2026-02-25 | 2026-02-27 | A8450 | 21d |
| A8490 |  | Ø 2" - Cañería Acero Inoxidable - Montaje | 3d | 2026-02-28 | 2026-03-02 | A8480 | 21d |
| A8470 |  | Ø 4" - Cañería Acero Inoxidable - Montaje | 3d | 2026-03-03 | 2026-03-05 | A8490 | 21d |
|  | 2 | **MONTAJE DE VÁLVULAS Y FITTING SECTOR TK-3016** |  | 2026-02-03 | 2026-03-10 |  |  |
| A8510 |  | Fitting Sector TK-3016 (Global) | 36d | 2026-02-03 | 2026-03-10 | A8380 SS | 2d |
| A8520 |  | Válvulas Sector TK-3016(Global) | 36d | 2026-02-03 | 2026-03-10 | A8380 SS | 2d |
|  | 3 | **TIE IN LÍNEAS ASOCIADAS A TK-3016** |  | 2026-03-12 | 2026-03-13 |  |  |
| A8530 |  | TIE-IN N° 1421 - 5872-EST-3016 a Línea Proyectada 150-IW-5872-I1-1621 | 2d | 2026-03-12 | 2026-03-13 | A8460 | 1d |
| A8540 |  | TIE-IN N° 1422 - 5872-EST-3016 a Línea Proyectada 150-IW-5872-I1-1622 | 2d | 2026-03-12 | 2026-03-13 | A8530 FF | 1d |
| A8550 |  | PerforaciØn de Estanque Existente TK-3016 para TIE-IN N°1421 y 1422. | 2d | 2026-03-12 | 2026-03-13 | A8540 FF, A8580, A7070 FF | 18d |
|  | 4 | **FABRICACIÓN Y MONTAJE DE SOPORTES TK-3016** |  | 2026-02-26 | 2026-03-08 |  |  |
| A8560 |  | Soporte N°001 - Pedestal Tipo TEE, Acero Estructural para Tuberías Diámetros Pequeños | 3d | 2026-02-26 | 2026-02-28 | A8440 | 23d |

| ID | WBS | Task | Duration | Start | Finish | Predecessors | Total float |
| --- | --- | --- | --- | --- | --- | --- | --- |
| A8570 |  | Soporte N°002A - Pedestal con Repisa de Acero Estructural para Tuberías Diámetros Pequeños | 3d | 2026-03-01 | 2026-03-03 | A8560 | 23d |
| A8580 |  | Soporte Primario Tipo "U" (Para Uso General) | 3d | 2026-03-06 | 2026-03-08 | A8570, A8470 | 21d |
|  | 3 | **OBRAS ELÉCTRICAS TK-3016** |  | 2026-03-14 | 2026-03-27 |  |  |
|  | 1 | **MONTAJE DE CANALIZACIÓN Y FERRETERÍA TK-3016** |  | 2026-03-14 | 2026-03-19 |  |  |
| A8610 |  | Canalización y Copla de Conduit de Acero Galvanizado 2 1/2"Ø, Conduit ANSI C80.1 | 4d | 2026-03-14 | 2026-03-17 | A8540 | 1d |
| A8620 |  | Canalización y Copla de Conduit Flexible Metálico con Cubierta PVC 2 1/2" Ø Trabajo Pesado | 2d | 2026-03-14 | 2026-03-15 | A8610 SS | 1d |
| A8630 |  | Canalización y Copla de Conduit de Acero Galvanizado 1 1/2"Ø, Conduit ANSI C80.1 | 4d | 2026-03-16 | 2026-03-19 | A8620 | 1d |
| A8640 |  | Canalización y Copla de Conduit Flexible Metálico con Cubierta PVC 1 1/2" Ø Trabajo Pesado | 2d | 2026-03-16 | 2026-03-17 | A8630 SS | 1d |
|  | 2 | **TENDIDO Y CONEXIONADO DE CABLES DE ALIMENTACIÓN TK-3016** |  | 2026-03-18 | 2026-03-24 |  |  |
| A8650 |  | Cable Monoconductor de Cobre con Aislación XLPE, 1C #250 MCM, Clase 1 kV | 7d | 2026-03-18 | 2026-03-24 | A8640 | 1d |
| A8660 |  | Cable Multiconductor de Cobre con Aislación XLPE, 1X4C #2 AWG, Clase 1 kV | 4d | 2026-03-18 | 2026-03-21 | A8650 SS | 1d |
| A8670 |  | Cable Multiconductor de Cobre con Aislación de XLPE, 1x5C #12 AWG, Clase 1 kV | 4d | 2026-03-18 | 2026-03-21 | A8660 SS | 1d |
|  | 3 | **MONTAJE Y CONEXIONADO DE EQUIPOS ELÉCTRICOS TK-3016** |  | 2026-03-22 | 2026-03-24 |  |  |
| A8680 |  | Tablero Partidor de Motores TAG: 5817-TPM-1502. | 3d | 2026-03-22 | 2026-03-24 | A8670 | 4d |
| A8690 |  | Conexión de Motor TAG: 5872-MTR-1682 a TPM TAG: 5817-TPM-1502. | 2d | 2026-03-22 | 2026-03-23 | A8680 SS | 4d |
| A8700 |  | Conexión de Motor TAG: 5872-MTR-1685 a TPM TAG: 5817-TPM-1502. | 2d | 2026-03-22 | 2026-03-23 | A8690 SS | 4d |
| A8710 |  | Conexión de Tablero Partidor de Motores TAG: 5817-TPM-1502 a Sala Eléctrica TAG: SEL-4016. | 2d | 2026-03-22 | 2026-03-23 | A8700 SS | 4d |
|  | 4 | **PRUEBAS DE FUNCIONAMIENTO Y PEM TK-3016** |  | 2026-03-24 | 2026-03-27 |  |  |
| A8720 |  | Pruebas de Funcionamiento y Puesta en Marcha de Motor TAG: 5872-MTR-1682. | 2d | 2026-03-24 | 2026-03-25 | A8710 | 4d |
| A8730 |  | Pruebas de Funcionamiento y Puesta en Marcha de Motor TAG: 5872-MTR-1685. | 2d | 2026-03-26 | 2026-03-27 | A8720 | 4d |
|  | 4 | **OBRAS DE INSTRUMENTACIÓN TK-3016** |  | 2026-03-22 | 2026-03-31 |  |  |
|  | 1 | **MONTAJE DE CANALIZACIÓN Y FERRETERÍA INST. TK-3016** |  | 2026-03-22 | 2026-03-26 |  |  |
| A8740 |  | Canalización y Copla de Conduit de Acero Galvanizado 1"Ø, Conduit ANSI C80.1 | 3d | 2026-03-22 | 2026-03-24 | A8670 | 1d |
| A8750 |  | Canalización y Copla de Conduit Flexible Metálico con Cubierta PVC 1" Ø Trabajo Pesado | 2d | 2026-03-25 | 2026-03-26 | A8740 | 1d |
|  | 2 | **TENDIDO Y CONEXIONADO DE CABLES INSTRUMENTACIÓN TK-3016** |  | 2026-03-27 | 2026-03-31 |  |  |
| A8760 |  | Cable Multiconductor de Cobre con Aislación de XLPE, 1x3C #12 AWG, Clase 1 kV | 4d | 2026-03-27 | 2026-03-30 | A8750 | 1d |
| A8770 |  | Cable de Instrumentación (Señales Análogas), 1x1 par #16 AWG Apantallado | 5d | 2026-03-27 | 2026-03-31 | A8760 SS | 1d |
| A8780 |  | Conductor Fibra Óptica Multimodo 12 Hilos | 4d | 2026-03-27 | 2026-03-30 | A8770 SS | 1d |
|  | 3 | **MONTAJE Y CONEXIONADO DE EQUIPOS E INSTRUMENTOSTK-3016** |  | 2026-03-27 | 2026-03-30 |  |  |
| A8820 |  | Fibra Óptica en TAG: SEL-4016. | 3d | 2026-03-27 | 2026-03-29 | A8780 SS | 1d |
| A8830 |  | Instrumento TAG: FIT-1177 | 2d | 2026-03-27 | 2026-03-28 | A8820 SS | 1d |
| A8840 |  | Instrumento TAG: PIT-1176 | 2d | 2026-03-29 | 2026-03-30 | A8830 | 1d |
|  | 4 | **PRUEBAS DE FUNCIONAMIENTO Y PEM INST. TK-3016** |  | 2026-03-29 | 2026-03-30 |  |  |
| A8790 |  | Pruebas de Funcionamiento de Conectividad de Fibra Óptica desde SEL-4016 a TPM-1502. | 1d | 2026-03-29 | 2026-03-29 | A8840 SS | 1d |
| A8800 |  | Pruebas de Operación y Puesta en Marcha de Instrumento TAG: FIT-1177 | 2d | 2026-03-29 | 2026-03-30 | A8790 SS | 1d |
| A8810 |  | Pruebas de Operación y Puesta en Marcha de Instrumento TAG: PIT-1176 | 2d | 2026-03-29 | 2026-03-30 | A8800 SS, A8730 SS | 1d |

## Version 2 (data date 2025-12-14, saved 2026-03-10, file 15682-SEG al 14-12.xer)

Note of the change: chore: fix gitignore - add pycache, destrackear privados

Last finish 2026-04-14 → 2026-03-15 (-30d). Complete tasks 0 → 65.

Added:

| ID | Task | Duration | Start | Finish | Predecessors | Constraint | Resources |
| --- | --- | --- | --- | --- | --- | --- | --- |
| 2 | **MONTAJE DE BOMBAS** |  | 2025-08-03 | 2025-12-24 |  |  |  |
| A1230 | Bomba Centrífuga y Motor TAG: 5817-BBA-4003; 5817-MTR-4004 | 5.45d | 2025-09-12 A | 2025-12-20 | A1200 FF |  | SQM-MECANICA |
| A1240 | Bomba Centrífuga y Motor TAG: 5817-BBA-4006; 5817-MTR-4007 | 5.45d | 2025-09-17 A | 2025-12-20 | A1230 FF |  | SQM-MECANICA |
| A1310 | Bomba Centrífuga y Motor TAG: 5817-BBA-5002; 5817-MTR-5003 | 4.91d | 2025-12-15 | 2025-12-20 | A1300 FF |  | SQM-MECANICA |
| A1320 | Bomba Centrífuga y Motor TAG: 5817-BBA-5005; 5817-MTR-5006 | 4.91d | 2025-12-15 | 2025-12-20 | A1310 SS, A1230 FF |  | SQM-MECANICA |
| A1470 | Parron Patio de Estanques Planchas | 2.18d | 2025-11-14 A | 2025-12-15 | A1450 SS, A1440 SS |  | SQM-ESTRUCTURA [888.32 h] |
| A1610 | Conexiones Parrón desde Patio de Estanques hasta L5 LiOH. | 26.18d | 2026-01-22 | 2026-02-17 | A1580 FF, A1590 FF |  | SQM-ESTRUCTURA [3696.05 h] |
| A1619 | Entrega de fundaciones | 0d | 2025-12-15 | 2025-12-15 | A1060 SS | mandatory start 2025-12-15 |  |
| A1620 | Estructura liviana: 0@30 kg/m Desde L5 LiOH hasta L3 LiOH | 10.91d | 2025-12-15 | 2025-12-25 | A1619 SS |  | SQM-ESTRUCTURA [284.08 h] |
| A1630 | Planchas Desde L5 LiOH hasta L3 LiOH | 10.91d | 2025-12-15 | 2025-12-25 | A1620 SS |  | SQM-ESTRUCTURA [255.67 h] |
| 2 | **MONTAJE DE CAÑERÍAS HDPE PN10 (P1) PATIO DE ESTANQUES** |  | 2025-08-26 | 2026-02-17 |  |  |  |
| 4 | **MONTAJE DE FITTING, VÁLVULAS Y FILTROS LÍNEAS PATIO DE ESTANQUES** |  | 2025-12-01 | 2026-01-07 |  |  |  |
| A1870 | DN 2" - Conjunto Portafiltro y Filtro de Insolubles | 3.27d | 2025-12-31 | 2026-01-03 | A1820 |  | SQM-PIPING [31.8 h] |
| A1900 | P1.9 x 3 un. - Pedestales para Tuberías Elevadas | 7.64d | 2025-10-21 A | 2025-12-31 | A1890 SS |  | SQM-PIPING |
| A2000 | Tie-In N° 4405A - Conexión de equipo existente TAG: 250-BB-5759-P5-3156 a equipo proyectado TAG: 5817-BBA-4006 | 1d | 2026-01-08 | 2026-01-09 | A1700 |  | SQM-PIPING |
| A2040 | Tie-In N° 5403A - TAG: 250-LMB-5759-P5-3356 a Succión TAG: 5817-BBA-5002 | 1d | 2026-01-09 | 2026-01-10 | A2000 |  | SQM-PIPING |
| A2060 | Tie-In N° 5404A - TAG: 250-LMB-5759-P5-3355 a Succión TAG: 5817-BBA-5005 | 1d | 2026-01-10 | 2026-01-11 | A2040 |  | SQM-PIPING |
| A1980 | Tie-In N° 4404A - Conexión de equipo existente TAG: 250-BB-5759-P5-3155 a equipo proyectado TAG: 5817-BBA-4003 | 1d | 2026-02-21 | 2026-02-22 | A1970 |  | SQM-PIPING |
| A1990 | Tie-In N° 4404B - Conexión de equipo existente TAG: 160-BB-5759-P5-3153 a equipo proyectado TAG: 5817-BBA-4003 | 1d | 2026-02-22 | 2026-02-23 | A1980 |  | SQM-PIPING |
| A2010 | Tie-In N° 4405B - TAG: 160-BB-5759-P5-3154 a Descarga TAG: 5817-BBA-4006 | 1d | 2026-02-23 | 2026-02-24 | A1990 |  | SQM-PIPING |
| A2050 | Tie-In N° 5403B - TAG: 160-LMB-5759-P7-3352 a Descarga TAG: 5817-BBA-5002 | 1d | 2026-02-26 | 2026-02-27 | A2030 |  | SQM-PIPING |
| A2070 | Tie-In N° 5404B - TAG: 160-LMB-5759-P7-3352 a Descarga TAG: 5817-BBA-5005 | 1d | 2026-02-27 | 2026-02-28 | A2050 |  | SQM-PIPING |
| A2090 | Cable Multiconductor para VDF BT (3C#6 + 3C#12) AWG | 8.73d | 2025-12-01 A | 2025-12-29 | A2080 FF, A2190 SS |  | SQM-ELÉCTRICO |
| A2100 | Cable Multiconductor para VDF BT (3C#2 + 3C#10) AWG | 4.36d | 2025-12-01 A | 2025-12-25 | A2090 SS |  | SQM-ELÉCTRICO |
| A2110 | Cable Multiconductor para VDF BT (3C#2/0 + 3C#6) AWG | 3.27d | 2025-12-01 A | 2025-12-24 | A2100 SS |  | SQM-ELÉCTRICO |
| A2080 | Cable de Fuerza Monoconductor de Cobre Blando, 1C #500 MCM | 13.09d | 2025-12-16 | 2025-12-29 | A2430 SS |  | SQM-ELÉCTRICO [631.2 h] |
| A2120 | Cable de Fuerza Multiconductor de Cobre Blando, 1x4C #10 AWG | 3.27d | 2025-12-25 | 2025-12-28 | A2110 |  | SQM-ELÉCTRICO [79.95 h] |
| A2130 | Cable de Fuerza Multiconductor de Cobre Blando, 1x4C #8 AWG | 6d | 2025-12-28 | 2026-01-03 | A2120 |  | SQM-ELÉCTRICO |
| A2190 | Conduit de Acero Galvanizado, 6"Ø, tipo Conduit ANSI C80.1 | 3.27d | 2025-12-01 A | 2025-12-17 | A2400 SS |  | SQM-ELÉCTRICO [31.5 h] |
| A2200 | Conduit Flexible Metálico con Cubierta PVC 6" Ø Trabajo Pesado | 2.18d | 2025-12-01 A | 2025-12-18 | A2190 SS |  | SQM-ELÉCTRICO [16.8 h] |
| A2210 | Copla para Cañería de Acero Galvanizado 6"Ø | 2.18d | 2025-12-01 A | 2025-12-18 | A2200 SS |  | SQM-ELÉCTRICO [5.6 h] |
| A2220 | Conexión Terminal para Cañería de Acero Galvanizado 6"Ø | 1.09d | 2025-12-01 A | 2025-12-17 | A2210 SS |  | SQM-ELÉCTRICO [2.8 h] |
| A2270 | Conduit de Acero Galvanizado 2 1/2"Ø, tipo Conduit ANSI C80.1. Incluye Copla | 5.45d | 2025-12-01 A | 2025-12-22 | A2260 SS |  | SQM-ELÉCTRICO [220.5 h] |
| A2280 | Conduit Flexible Metálico con Cubierta PVC 2 1/2" Ø Trabajo Pesado | 3.27d | 2025-12-01 A | 2025-12-19 | A2270 SS |  | SQM-ELÉCTRICO [21 h] |
| A2290 | Conexión Terminal para Cañería de Acero Galvanizado 2 1/2"Ø | 3.27d | 2025-12-01 A | 2025-12-19 | A2280 SS |  | SQM-ELÉCTRICO [8.4 h] |
| A2350 | Conexión Terminal para Cañería de Acero Galvanizado 1 1/2"Ø | 4.36d | 2025-12-01 A | 2026-01-16 | A2340 SS, A2330 SS, A1570 FF |  | SQM-ELÉCTRICO [22.05 h] |
| A2410 | EPC Porta Conductores 400x100mm e:2mm, tiras 3m. Incluir tapa dos aguas, eclisas y pernos de unión. | 6.55d | 2025-12-01 A | 2025-12-22 | A2400 SS |  | SQM-ELÉCTRICO |
| A2420 | EPC Curva Vertical Interior de 90°, 400x100mm e:2mm. Incluir tapa dos aguas, eclisas y pernos de unión. | 7.64d | 2025-12-01 A | 2025-12-23 | A2410 SS |  | SQM-ELÉCTRICO |
| A2430 | EPC Derivación tipo TEE, 400x100mm e:2mm. Incluir tapa dos aguas, eclisas y pernos de unión. | 7d | 2025-12-16 | 2025-12-23 | A2420 SS |  | SQM-ELÉCTRICO |
| A2450 | Tablero Partidor de Motores Tag. N° 5817-TPM-7501 | 5.45d | 2026-01-12 | 2026-01-18 | A2440 SS |  | SQM-ELÉCTRICO [288 h] |
| A2460 | Fabricación de Fundaciones y Montaje de Transformador TAG:5817-TRF-7501 | 6.55d | 2026-01-12 | 2026-01-19 | A2450 SS, A2320 |  | SQM-ELÉCTRICO [432 h] |
| A2540 | Cable de Cobre Desnudo Temple Blando, Nº 250 MCM , 19 Hebra. | 6.55d | 2025-12-01 A | 2025-12-23 | A2430 FF |  | SQM-ELÉCTRICO [200.72 h] |
| A2560 | Barra Copperweld 5/8" Ø x 3 metros de largo. | 2.18d | 2025-12-23 | 2025-12-25 | A2650 SS |  | SQM-ELÉCTRICO [42 h] |
| A2570 | Cámara de registro de Concreto 8" Ø con Tapa. | 2.18d | 2025-12-23 | 2025-12-25 | A2550 SS |  | SQM-ELÉCTRICO [28 h] |
| A2580 | Molde Cadweld para Unión Termofusión Conexión "TA", Móldelo TAC-2G2G. | 1.09d | 2025-12-23 | 2025-12-24 | A2560 SS |  | SQM-ELÉCTRICO [3.5 h] |
| A2590 | Molde Cadweld para Unión Termofusión Conexión "XB", Modelo XBM-2G2G. | 1.09d | 2025-12-23 | 2025-12-24 | A2580 SS |  | SQM-ELÉCTRICO [3.5 h] |
| A2600 | Molde Cadweld para Unión Termofusión Conexión "GY", Modelo GYE-162V. | 1.09d | 2025-12-23 | 2025-12-24 | A2590 SS |  | SQM-ELÉCTRICO [3.5 h] |
| A2610 | Molde Cadweld para Unión Termofusión Conexión a Superficie Metálica, Modelo HSC-2G. | 1.09d | 2025-12-23 | 2025-12-24 | A2600 SS |  | SQM-ELÉCTRICO [3.5 h] |
| A2620 | Carga para Termofusión Número 150. | 2.18d | 2025-12-23 | 2025-12-25 | A2610 SS |  | SQM-ELÉCTRICO [42 h] |
| A2630 | Carga para Termofusión Número 200. | 2.18d | 2025-12-23 | 2025-12-25 | A2620 SS |  | SQM-ELÉCTRICO [42 h] |
| A2640 | Carga para Termofusión Número 90. | 4.36d | 2026-01-12 | 2026-01-17 | A2630 SS, A2460 SS, A2530 |  | SQM-ELÉCTRICO [84 h] |
| A2670 | Cable de Comunicaciones de Datos 1x4 Par #22 AWG Apantallado, Categoría 6 | 2.18d | 2025-12-01 A | 2025-12-22 | A2660 SS |  | SQM-INSTRUMENTACIÓN [29.52 h] |
| A2720 | Cable de Control Multiconductor de Cobre Blando, 1 x 3c #8 AWG, Clase 1,0 kV | 3.27d | 2025-12-01 A | 2025-12-29 | A2710 SS |  | SQM-INSTRUMENTACIÓN [23.9 h] |
| 4 | **MONTAJE DE CANALIZACIÓN Y FERRETERÍA PATIO DE ESTANQUES** |  | 2025-12-01 | 2026-01-02 |  |  |  |
| A2750 | EPC Curva Tipo "Cruz" 600x100x2,5mm. Incluye eclipsas, pernos y tapa dos aguas. | 1.09d | 2025-12-19 | 2025-12-20 | A2740 SS |  | SQM-INSTRUMENTACIÓN [11.2 h] |
| A2780 | Conduit flexible metálico con cubierta PVC 1" Ø | 2.18d | 2025-12-21 | 2025-12-23 | A2770 |  | SQM-INSTRUMENTACIÓN [3.15 h] |
| A2820 | Tablero controlador Tag N° 5817-PLC-1201 | 2.18d | 2025-12-22 | 2025-12-24 | A2660 |  | SQM-INSTRUMENTACIÓN [170 h] |
| A2830 | Tablero de Distribución de Instrumentación Tag N°5817-TDI-1203 | 2.18d | 2025-12-24 | 2025-12-26 | A2820 |  | SQM-INSTRUMENTACIÓN [170 h] |
| 6 | **MONTAJE, CONEXIONADO Y PRUEBAS DE INSTRUMENTOS - SENSORES Y TRANSMISORES DE FLUJO** |  | 2025-12-01 | 2025-12-29 |  |  |  |
| A2880 | Tubo sensor de Flujo Magnético y Transmisor Remoto Tag FE/FIT-1204 | 1.09d | 2025-12-01 A | 2025-12-29 | A2870 SS |  | SQM-INSTRUMENTACIÓN [31.5 h] |
| 7 | **MONTAJE, PRUEBAS Y CONEXIONADO DE INSTRUMENTOS - TRANSMISORES DE NIVEL** |  | 2025-12-01 | 2025-12-29 |  |  |  |
| 8 | **MONTAJE, PRUEBAS Y CONEXIONADO DE INSTRUMENTOS - INTERRUPTOR DE PRESIÓN** |  | 2025-12-01 | 2025-12-29 |  |  |  |
| 9 | **MONTAJE, PRUEBAS Y CONEXIONADO DE INSTRUMENTOS - INTERRUPTOR DE NIVEL** |  | 2025-12-01 | 2025-12-29 |  |  |  |
| 10 | **MONTAJE, PRUEBAS Y CONEXIONADO DE INSTRUMENTOS - INTERRUPTOR DE FLUJO** |  | 2025-12-01 | 2025-12-29 |  |  |  |
| 11 | **MONTAJE DE INSTRUMENTOS - INDICADORES DE PRESIÓN (MANÓMETROS)** |  | 2025-12-01 | 2025-12-31 |  |  |  |
| A3110 | Indicador de Presión (manómetro) Tag PI-1205 | 1.09d | 2025-12-01 A | 2025-12-29 | A3100 SS |  | SQM-INSTRUMENTACIÓN [2.5 h] |
| A3120 | Indicador de Presión (manómetro) Tag PI-1206 | 1.09d | 2025-12-01 A | 2025-12-29 | A3110 SS |  | SQM-INSTRUMENTACIÓN [2.5 h] |
| 2 | **SECTOR SX5** |  | 2025-12-01 | 2025-12-25 |  |  |  |
| 1 | **OBRAS ELÉCTRICAS SX5** |  | 2025-12-01 | 2025-12-25 |  |  |  |
| 1 | **TENDIDO Y CONEXIONADO DE CABLES BAJA TENSIÓN SX5** |  | 2025-12-01 | 2025-12-25 |  |  |  |
| A3260 | Cable de fuerza Multiconductor de Cobre Blando 1x4C #6 AWG. Clase de Aislación 1 kV. Categoría C. | 5.45d | 2025-12-01 A | 2025-12-25 | A3300 SS |  | SQM-ELÉCTRICO |
| A3270 | Cable de Control Multiconductor de Cobre Blando 1x5C #14 AWG. Clase de Aislación 1 kV. Categoría C. | 3.27d | 2025-12-01 A | 2025-12-23 | A3260 SS |  | SQM-ELÉCTRICO |
| A3280 | Cable de Control Multiconductor de Cobre Blando 1x5C #14 AWG. Tensión de Servicio 1.0 kV. | 4.36d | 2025-12-01 A | 2025-12-24 | A3270 SS, A3320 SS |  | SQM-ELÉCTRICO |
| 2 | **MONTAJE DE CANALIZACIÓN Y FERRETERÍA SX5** |  | 2025-12-01 | 2025-12-24 |  |  |  |
| A3290 | Conduit Acero Galvanizado Ø 2" con Cubierta PVC | 4.36d | 2025-12-01 A | 2025-12-24 | A3330 FF |  | SQM-ELÉCTRICO |
| A3300 | Conduit Flexible Metálico de Ø 2" con Cubierta PVC | 2.18d | 2025-12-01 A | 2025-12-22 | A3290 SS |  | SQM-ELÉCTRICO |
| 3 | **ARMADO, MONTAJE Y HABILITACIÓN DE EQUIPOS SX5** |  | 2025-12-01 | 2025-12-24 |  |  |  |
| A3310 | Variador de Frecuencia 30kW, 400Vca. Ya instalado en Sala Eléctrica Existente. | 3.27d | 2025-12-01 A | 2025-12-23 | A3290 SS |  | SQM-ELÉCTRICO |
| A3320 | Estación de Control con Cubierta “Rosite Glass Polyester” | 4.36d | 2025-12-01 A | 2025-12-24 | A3310 SS |  | SQM-ELÉCTRICO |
| 4 | **MONTAJE DE SISTEMA PUESTA A TIERRA SX5** |  | 2025-12-22 | 2025-12-24 |  |  |  |
| A3330 | Cable de Cobre Desnudo Temple Blando, Nº 2/0 AWG, 19 Hebras. | 2.18d | 2025-12-22 | 2025-12-24 | A2660 |  | SQM-ELÉCTRICO [46.32 h] |
| 1 | **ÁREA 5801 - SECTOR DATA CENTER** |  | 2025-09-21 | 2025-12-29 |  |  |  |
| 1 | **OBRAS CIVILES DATA CENTER** |  | 2025-10-16 | 2025-12-16 |  |  |  |
| 1 | **SUMINISTRO Y MONTAJE ASOCIADO A CERCO PERIMETRAL DATA CENTER** |  | 2025-10-16 | 2025-12-16 |  |  |  |
| 2 | **OBRAS ESTRUCTURALES DATA CENTER** |  | 2025-11-13 | 2025-12-16 |  |  |  |
| 1 | **ACERO ESTRUCTURAL, PLATAFORMA DATA CENTER** |  | 2025-11-13 | 2025-12-16 |  |  |  |
| 3 | **OBRAS MECÁNICAS DATA CENTER** |  | 2025-09-21 | 2025-12-15 |  |  |  |
| 1 | **MONTAJE Y PRUEBAS DE DATA CENTER** |  | 2025-09-21 | 2025-12-08 |  |  |  |
| 2 | **MONTAJE Y PRUEBAS DE BOMBAS DOSIFICADORAS DATA CENTER** |  | 2025-10-20 | 2025-12-15 |  |  |  |
| 3 | **MONTAJE Y PRUEBAS DE ESTANQUES DATA CENTER** |  | 2025-10-16 | 2025-12-08 |  |  |  |
| 4 | **OBRAS PIPING DATA CENTER** |  | 2025-10-28 | 2025-12-29 |  |  |  |
| 1 | **MONTAJE DE CAÑERÍA DATA CENTER** |  | 2025-10-28 | 2025-12-29 |  |  |  |
| 2 | **MONTAJE DE VÁLVULAS Y FITTING PIPING DATA CENTER** |  | 2025-12-15 | 2025-12-29 |  |  |  |
| 5 | **OBRAS ELÉCTRICAS DATA CENTER** |  | 2025-10-16 | 2025-12-28 |  |  |  |
| 1 | **MONTAJE Y CONEXIONADO CONDUCTORES FUERZA Y CONTROL** |  | 2025-10-18 | 2025-12-16 |  |  |  |
| 1 | **TENDIDO Y CONEXIONADO CABLES FUERZA MONOCONDUCTOR** |  | 2025-10-18 | 2025-12-15 |  |  |  |
| 2 | **TENDIDO Y CONEXIONADO CABLES FUERZA MULTICONDUCTOR** |  | 2025-10-29 | 2025-12-16 |  |  |  |
| 2 | **MONTAJE DE CANALIZACIÓN Y FERRETERÍA DATA CENTER** |  | 2025-10-16 | 2025-12-15 |  |  |  |
| 3 | **MONTAJE Y CONEXIONADO EQUIPOS DE ALUMBRADO** |  | 2025-10-18 | 2025-12-19 |  |  |  |
| 4 | **MONTAJE, CONEXIÓN Y PRUEBAS EQUIPOS DE CONTROL BOMBAS** |  | 2025-11-03 | 2025-12-15 |  |  |  |
| 5 | **MONTAJE/HABILITACÓN DE EQUIPOS ELÉCTRICOS PRINCIPALES DATA CENTER** |  | 2025-11-17 | 2025-12-28 |  |  |  |
| 6 | **OBRAS DE INSTRUMENTACIÓN SECTOR DATA CENTER** |  | 2025-11-29 | 2025-12-29 |  |  |  |
| 1 | **MONTAJE DE EQUIPOS DE COMUNICACIÓN Y CABECERAS DE F.O. EN RACK DE 19"** |  | 2025-11-29 | 2025-12-27 |  |  |  |
| 2 | **TENDIDO Y CONEXIONADO DE CABLES DE ALIMENTACIÓN DATA CENTER** |  | 2025-12-05 | 2025-12-13 |  |  |  |
| 3 | **SUMINSITRO Y MONTAJE DE PROTECCIONES ELÉCTRICAS** |  | 2025-12-05 | 2025-12-29 |  |  |  |
| 2 | **RED GN-GL L5 LiOH, ALIMENTACIÓN CALDERA UTILITIES - ÁREA 5801** |  | 2025-10-09 | 2025-12-30 |  |  |  |
| 1 | **ÁREA 5801 - SECTOR GNL** |  | 2025-10-09 | 2025-12-30 |  |  |  |
| 1 | **OBRAS CIVILES SECTOR LÍNEA DE GAS** |  | 2025-10-29 | 2025-12-18 |  |  |  |
| 1 | **MOVIMIENTO DE TIERRAS, EXCAVACIÓN PARA CRUCE DE CAMINO GNL** |  | 2025-11-02 | 2025-12-15 |  |  |  |
| 2 | **EXCAVACIÓN PARA CAÑERÍA ENTERRADA GNL** |  | 2025-10-29 | 2025-12-13 |  |  |  |
| 3 | **SERVICIOS, CRUCE DE CAMINO GNL** |  | 2025-11-15 | 2025-12-18 |  |  |  |
| 2 | **OBRAS PIPING SECTOR LÍNEA DE GAS** |  | 2025-10-09 | 2025-12-30 |  |  |  |
| 1 | **MONTAJE DE CAÑERÍAS, LÍNEAS DE GAS** |  | 2025-10-09 | 2025-12-26 |  |  |  |
| 2 | **MONTAJE DE VÁLVULAS MANUALES Y FITTING, LÍNEA DE GAS** |  | 2025-10-09 | 2025-12-29 |  |  |  |
| 3 | **TIE-IN LÍNEAS ASOCIADAS A GNL** |  | 2025-12-26 | 2025-12-29 |  |  |  |
| 4 | **FABRICACIÓN Y MONTAJE DE SOPORTES** |  | 2025-10-30 | 2025-12-30 |  |  |  |
| 1 | **OBRAS CIVILES TK-6060** |  | 2025-09-11 | 2025-12-27 |  |  |  |
| 1 | **LOSA Y FUNDACIONES TK-6060** |  | 2025-09-11 | 2025-12-21 |  |  |  |
| 1 | **MOVIMIENTO MASIVO DE TIERRA** |  | 2025-09-11 | 2025-12-17 |  |  |  |
| A4100 | Excavación Losa Estanque Pivote | 3.27d | 2025-09-11 A | 2025-12-17 | A1070 SS |  | SQM-OOCC |
| A4110 | Relleno Losa Estanque Pivote | 2.18d | 2025-09-14 A | 2025-12-16 | A4100 SS |  | SQM-OOCC |
| 2 | **SISTEMA DE IMPERMEABILIZACIÓN** |  | 2025-09-16 | 2025-12-19 |  |  |  |
| A4120 | Carpeta de HDPE Losa Estanque Pivote | 3.27d | 2025-09-16 A | 2025-12-17 | A4110 SS |  | SQM-OOCC |
| A4130 | Membrana de Geotextil Losa Estanque Pivote | 5.45d | 2025-09-19 A | 2025-12-19 | A4120 SS |  | SQM-OOCC |
| 3 | **FABRICACIÓN DE LOSA Y FUNDACIONES** |  | 2025-09-14 | 2025-12-21 |  |  |  |
| A4160 | Armadura de refuerzo A630-420H Losa Estanque Pivote | 7.64d | 2025-09-14 A | 2025-12-21 | A4100 SS |  | SQM-OOCC |
| A4140 | Hormigón G30 Losa Fundación Estanque Pivote | 7.64d | 2025-09-24 A | 2025-12-21 | A4160 SS, A4130 SS |  | SQM-OOCC |
| A4150 | Hormigón G30 Pedestal PD-1 Bombas Estanque Pivote | 2.18d | 2025-10-01 A | 2025-12-16 | A4140 SS |  | SQM-OOCC |
| 2 | **CRUCE DE CAMINO** |  | 2025-09-24 | 2025-12-27 |  |  |  |
| 1 | **MOVIMIENTO MASIVO DE TIERRA PARA CRUCE DE CAMINOS** |  | 2025-09-24 | 2025-12-15 |  |  |  |
| 2 | **ENCAMISADO PARA CRUCE DE CAMINOS** |  | 2025-10-05 | 2025-12-27 |  |  |  |
| A4270 | Cañería 20" Cruce de Camino 1 | 14.18d | 2025-10-05 A | 2025-12-27 | A4220 SS |  | SQM-OOCC |
| A4290 | Cañería 20" Cruce de Camino 2 | 14.18d | 2025-10-17 A | 2025-12-27 | A4280 SS |  | SQM-OOCC |
| 3 | **OBRAS MECÁNICAS TK-6060** |  | 2025-10-01 | 2025-12-21 |  |  |  |
| 1 | **MONTAJE Y PRUEBAS DE EQUIPOS MECÁNICOS TK-6060** |  | 2025-10-01 | 2025-12-21 |  |  |  |
| 4 | **OBRAS PIPING TK-6060** |  | 2025-10-05 | 2026-02-05 |  |  |  |
| 1 | **MONTAJE Y FABRICACIÓN DE CAÑERÌAS TK-6060** |  | 2025-10-05 | 2026-02-05 |  |  |  |
| 1 | **FABRICACIÓN CAÑERÍAS TK-6060** |  | 2025-10-05 | 2026-02-04 |  |  |  |
| 2 | **MONTAJE CAÑERÍAS TK-6060** |  | 2025-10-12 | 2026-02-05 |  |  |  |
| 2 | **MONTAJE DE FITTING Y VÁLVULAS TK-6060** |  | 2025-10-05 | 2026-02-04 |  |  |  |
| 3 | **FABRICACIÓN Y MONTAJE DE SOPORTES TK-6060** |  | 2025-10-24 | 2026-02-02 |  |  |  |
| 4 | **TIE-IN DE LÍNEAS ASOCIADAS A TK-6060** |  | 2026-01-30 | 2026-02-04 |  |  |  |
| 5 | **AISLACIÓN LÍNEAS TK-6060** |  | 2025-11-05 | 2026-02-04 |  |  |  |
| 6 | **RED DE AIRE** |  | 2026-01-10 | 2026-02-01 |  |  |  |
| 1 | **FABRICACIÓN Y MONTAJE DE CAÑERÍAS RED DE AIRE** |  | 2026-01-10 | 2026-02-01 |  |  |  |
| 2 | **MONTAJE DE FITTING Y VÁLVULAS RED DE AIRE** |  | 2026-01-17 | 2026-01-25 |  |  |  |
| 3 | **TIE-IN DE LÍNEAS ASOCIADAS A RED DE AIRE** |  | 2026-01-21 | 2026-01-31 |  |  |  |
| 5 | **OBRAS ELÉCTRICAS TK-6060** |  | 2025-11-08 | 2026-01-25 |  |  |  |
| 1 | **MONTAJE DE CANALIZACIÓN Y FERRETERÍA TK-6060** |  | 2025-11-08 | 2025-12-25 |  |  |  |
| A4880 | Canalización y Copla de Conduit de Acero Galvanizado 2"Ø, Conduit ANSI C80.1 | 3.27d | 2025-12-19 | 2025-12-23 | A4820 |  | SQM-ELÉCTRICO [56.7 h] |
| A4890 | Canalización y Copla de Conduit Flexible Metálico con Cubierta PVC 2" Ø Trabajo Pesado | 1.09d | 2025-12-24 | 2025-12-25 | A4870 |  | SQM-ELÉCTRICO [9.45 h] |
| 2 | **TENDIDO Y CONEXIONADO DE CABLES DE ALIMENTACIÓN TK-6060** |  | 2025-12-01 | 2026-01-12 |  |  |  |
| 3 | **MONTAJE DE POSTACIÓN TK-6060** |  | 2025-12-11 | 2025-12-25 |  |  |  |
| A5180 | EPC y Copla Porta Conductores 600x100mm e:2,5 mm, tiras 3m. Incluir tapa dos aguas, eclisas y pernos de unión. | 18.55d | 2025-11-20 A | 2026-01-03 | A4830 SS |  | SQM-INSTRUMENTACIÓN [1120 h] |
| A5190 | EPC Curva de 90°, 600x100mm e:2,5mm. Incluir tapa dos aguas, eclisas y pernos de unión. | 3.27d | 2025-12-01 A | 2025-12-20 | A5180 SS |  | SQM-INSTRUMENTACIÓN [56 h] |
| A6210 | Perforación de Estanque Existente TK-800 para TIE-IN N°1431 y 1432. | 2.18d | 2026-01-22 | 2026-01-24 | A6200 SS, A6250 |  | SQM-PIPING [101.33 h] |
| 1 | **EXTRACCIÓN DE ESTRUCTURA, FUNDACIONES Y DEM TK3000** |  | 2025-12-15 | 2025-12-18 |  |  |  |
| A6500 | Recorte de Grating Existente a Plomo Peldaño Escalera | 1.09d | 2025-12-15 | 2025-12-16 | A5990 |  | SQM-OOCC [0.55 h] |
| A6510 | Extracción Columnas Existentes de Estructura Monorriel | 3.27d | 2025-12-15 | 2025-12-18 | A6500 SS |  | SQM-OOCC [9.94 h] |
| A6520 | Extracción Diagonales Existentes de Estructura Monorriel | 1.09d | 2025-12-15 | 2025-12-16 | A6510 SS |  | SQM-OOCC [1.11 h] |
| A6530 | Extracción de Ducha | 1.09d | 2025-12-16 | 2025-12-17 | A6520 |  | SQM-OOCC [9.15 h] |
| A6560 | Columna Nueva de Estructura Monorriel | 3.27d | 2025-10-27 A | 2025-12-15 | A5970 |  | SQM-OOCC [12.84 h] |
| A6570 | Diagonales Nuevas de Refuerzo Estructura Monorriel | 2.18d | 2025-12-15 | 2025-12-17 | A6560 |  | SQM-OOCC [5.12 h] |
| 3 | **OBRAS DE ESTRUCTURA TK-3000** |  | 2025-12-01 | 2025-12-15 |  |  |  |
| 1 | **MONTAJE Y PRUEBAS DE EQUIPOS MECÁNICOS ÁREA 5827 SECTOR TK-3000** |  | 2025-12-01 | 2025-12-15 |  |  |  |
| A6600 | Modificación de Estructura para Tecle Monorriel Existente | 3.27d | 2025-12-01 A | 2025-12-15 | A3450 SS |  | SQM-ESTRUCTURA [254.5 h] |
| 5 | **RETIRO DE ELEMENTOS EXISTENTES TK-3000** |  | 2025-12-15 | 2026-02-03 |  |  |  |
| A6790 | Retiro y Reubicación de Ducha Existente | 5.45d | 2025-12-15 | 2025-12-20 | A6610 SS |  | SQM-PIPING [60 h] |
| A6800 | Corte y Retiro de Parrilla de Piso Existente | 6.55d | 2025-12-15 | 2025-12-21 | A6790 SS |  | SQM-PIPING [66 h] |
| A6810 | Corte y Retiro de Columna Estructural Existente y Reforzamiento de Viga Voladizo. | 6.55d | 2026-01-27 | 2026-02-03 | A6800 FF, A6760, A6870 FF |  | SQM-PIPING [624 h] |
| A8590 | Canalización y Copla de Conduit de Acero Galvanizado 4"Ø, Conduit ANSI C80.1 | 3.27d | 2025-12-16 | 2025-12-19 | A6310 |  | SQM-ELÉCTRICO [73.5 h] |
| A8600 | Canalización y Copla de Conduit Flexible Metálico con Cubierta PVC 4" Ø Trabajo Pesado | 2.18d | 2025-12-19 | 2025-12-22 | A8590 |  | SQM-ELÉCTRICO [14.7 h] |

Removed: MONTAJE DE BOMBAS PATIO ESTANQUES; MONTAJE DE CAÑERÍAS HDPE PN16 (P1) PATIO DE ESTANQUES; MONTAJE DE FITTING Y VÁLVULAS PATIO DE ESTANQUES; MONTAJE DE CANALIZACIÒN Y FERRETERÍA PATIO DE ESTANQUES; MONTAJE, CONEXIONADO Y PRUEBAS DE INSTRUMENTOS - SENSORES Y TRANSMISORES DE FLUJO PATIO ESTANQUES; MONTAJE, PRUEBAS Y CONEXIONADO DE INSTRUMENTOS - TRANSMISORES DE NIVEL PATIO ESTANQUES; MONTAJE, PRUEBAS Y CONEXIONADO DE INSTRUMENTOS - INTERRUPTOR DE PRESIÓN PATIO ESTANQUES; MONTAJE, PRUEBAS Y CONEXIONADO DE INSTRUMENTOS - INTERRUPTOR DE NIVEL PATIO ESTANQUES; MONTAJE, PRUEBAS Y CONEXIONADO DE INSTRUMENTOS - INTERRUPTOR DE FLUJO PATIO ESTANQUES; MONTAJE DE INSTRUMENTOS - INDICADORES DE PRESIÓN (MANÓMETROS) PATIO ESTANQUES; ÁREA 5801 - SECTOR DATA CENTER 5801; OBRAS CIVILES DATA CENTER 5801; SUMINISTRO Y MONTAJE ASOCIADO A CERCO PERIMETRAL DATA CENTER 5801; OBRAS ESTRUCTURALES DATA CENTER 5801; ACERO ESTRUCTURAL, PLATAFORMA DATA CENTER 5801; OBRAS MECÁNICAS DATA CENTER 5801; MONTAJE Y PRUEBAS DE DATA CENTER 5801; MONTAJE Y PRUEBAS DE BOMBAS DOSIFICADORAS DATA CENTER 5801; MONTAJE Y PRUEBAS DE ESTANQUES DATA CENTER 5801; OBRAS PIPING DATA CENTER 5801; MONTAJE DE CAÑERÍAS DATA CENTER 5801; MONTAJE DE VÁLVULAS Y FITTING PIPING DATA CENTER 5801; OBRAS ELÉCTRICAS DATA CENTER 5801; MONTAJE Y CONEXIONADO CONDUCTORES FUERZA Y CONTROL DATA CENTER 5801; TENDIDO Y CONEXIONADO CABLES FUERZA MONOCONDUCTOR DATA CENTER 5801; TENDIDO Y CONEXIONADO CABLES FUERZA MULTICONDUCTOR DATA CENTER 5801; MONTAJE DE CANALIZACIÓN Y FERRETERÍA DATA CENTER 5801; MONTAJE Y CONEXIONADO EQUIPOS DE ALUMBRADO DATA CENTER 5801; MONTAJE, CONEXIÓN Y PRUEBAS EQUIPOS DE CONTROL BOMBAS DATA CENTER 5801; MONTAJE/HABILITACIÓN DE EQUIPOS ELÉCTRICOS PRINCIPALES DATA CENTER 5801; OBRAS DE INSTRUMENTACIÓN SECTOR DATA CENTER 5801; MONTAJE DE EQUIPOS DE COMUNICACIÓN Y CABECERAS DE F.O. EN RACK DE 19" DATA CENTER 5801; TENDIDO Y CONEXIONADO DE CABLES DE ALIMENTACIÓN DATA CENTER 5801; SUMINSITRO Y MONTAJE DE PROTECCIONES ELÉCTRICAS DATA CENTER 5801; RED GN-GL L5 LiOH, ALIMENTACIÓN CALDERA UTILITIES - ÁREA 5801 GNL 5801; ÁREA 5801 - SECTOR GNL 5801; OBRAS CIVILES SECTOR LÍNEA DE GAS 5801; MOVIMIENTO DE TIERRAS, EXCAVACIÓN PARA CRUCE DE CAMINO GNL 5801; EXCAVACIÓN PARA CAÉRÍAS ENTERRADA GNL 5801; SERVICIOS, CRUCE DE CAMINO GNL 5801; OBRAS PIPING SECTOR LÍNEA DE GAS 5801; MONTAJE DE CAÑERÍA, LÍNEAS DE GAS 5801; MONTAJE DE VÁLVULAS MANUALES Y FITTING, LÍNEA DE GAS 5801; TIE-IN LÍNEAS ASOCIADAS A GNL 5801; FABRICACIÓN Y MONTAJE DE SOPORTES GNL 5801; OBRAS CIVILES TK-6060 5817; LOSA Y FUNDACIONES TK-6060 5817; FABRICACIÓN DE LOSA Y FUNDACIONES 5817; CRUCE DE CAMINO 5817; MOVIMIENTO MASIVO DE TIERRA PARA CRUCE DE CAMINOS 5817; ENCAMISADO PARA CRUCE DE CAMINOS 5817; OBRAS MECÁNICAS TK-6060 5817; MONTAJE Y PRUEBAS DE EQUIPOS MECÁNICOS TK-6060 5817; OBRAS PIPING TK-6060 5817; MONTAJE Y FABRICACIÓN DE CAÑERÍAS TK-6060 5817; FABRICACIÓN CAÑERÍAS TK-6060 5817; MONTAJE CAÑERÍAS TK-6060 5817; MONTAJE DE FITTING Y VÁLVULAS TK-6060 5817; FABRICACIÓN Y MONTAJE DE SOPORTES TK-6060 5817; TIE-IN DE LÍNEAS ASOCIADAS A TK-6060 5817; AISLACIÓN LÍNEAS TK-6060 5817; RED DE AIRE 5817; FABRICACIÓN Y MONTAJE DE CAÑERÍAS RED DE AIRE 5817; MONTAJE DE FITTING Y VÁLVULAS RED DE AIRE 5817; TIE-IN DE LÍNEAS ASOCIADAS A RED DE AIRE 5817; OBRAS ELÉCTRICAS TK-6060 5817; MONTAJE DE CANALIZACIÓN Y FERRETERÍA TK-6060 5817; TENDIDO Y CONEXIONADO DE CABLES DE ALIMENTACIÓN TK-6060 5817; MONTAJE DE POSTACIÓN TK-6060 5817; A6170 Retiro Perfil Exsitente y Soporte de Tuberias Existentes

Changed:

| ID | Task | Start | Finish | Duration | Complete | Total float | Predecessors | Other |
| --- | --- | --- | --- | --- | --- | --- | --- | --- |
| 1 | **HITOS** |  | 2026-04-14 → 2026-03-15 (-30d) |  |  |  |  |  |
| A1000 | Inicio de Proyecto | 2025-06-30 A | 2025-06-30 A |  | 0% → 100% | 0.67d → none |  |  |
| A1010 | Movilización, Instalación de Faenas y Proceso de Acreditación MEM Patio de Estanques | 2025-06-30 → 2025-07-30 A (+30d) | 2025-07-13 → 2025-07-30 A (+17d) | 14d → 15.27d | 0% → 100% | 0.67d → none |  |  |
| A1020 | Adjudicación OOCC Misceláneos Addendum 01 | 2025-08-28 A | 2025-08-28 A |  | 0% → 100% | 0d → none |  |  |
| A1030 | Proceso de Acreditación OOCC Misceláneos | 2025-08-28 A | 2025-09-10 A | 14d → 15.27d | 0% → 100% | 0d → none |  |  |
| A1040 | Desmovilización | 2026-04-01 → 2026-02-28 (-32d) | 2026-04-14 → 2026-03-15 (-30d) | 14d → 15.27d |  |  | A1080, A1090 → A1080 |  |
| A1050 | Término de Proyecto | 2026-04-14 → 2026-03-15 (-30d) | 2026-04-14 → 2026-03-15 (-30d) |  |  |  | A1040 FF, A1090 FF → A1040 FF |  |
| 2 | **HITOS CONTRACTUALES** |  | 2026-03-31 → 2026-02-28 (-31d) |  |  |  |  |  |
| A1060 | Inicio Constructuvo Contractual MEM Patio de Estanques | 2025-07-14 A | 2025-07-14 A |  | 0% → 100% | 0.67d → none |  |  |
| A1070 | Inicio Constructuvo Contractual OOCC Misceláneos (Addendum 01) | 2025-09-11 A | 2025-09-11 A |  | 0% → 100% | 0d → none |  |  |
| A1090 | Término Constructivo Contractual OOCC Misceláneos (Addendum 01) | 2026-03-31 → 2026-02-05 (-54d) | 2026-03-31 → 2026-02-05 (-54d) |  |  | 0d → 38.14d | A4690 FF, A5170 FF, A7440, A3910 FF, A3980 FF, A8330, A8840, A4060, A4480, A5950, A6490, A8550, A7670 FF, A6870 FF, A1920 FF, A4660 FF, A6200 FF, A6780 FF, A4380 FF → A4690 FF, A5170 FF, A7440, A3910 FF, A3980 FF, A8330, A8840, A4060, A4480, A5950, A6490, A6600, A8550, A7670 FF |  |
| A1080 | Término Constructivo Contractual MEM Patio de Estanques | 2026-03-31 → 2026-02-28 (-31d) | 2026-03-31 → 2026-02-28 (-31d) |  |  | 0.67d → 0d | A2180 FF, A1940, A3250 FF, A3940, A1910, A2030 FF, A1380 FF, A1430 FF, A1740 FF, A1720 FF → A2180 FF, A2060 FF, A1940, A2640, A2720, A3250 FF, A3280, A2070, A3940, A1910 |  |
| 3 | **CONSTRUCCIÓN** |  | 2026-03-31 → 2026-02-28 (-31d) |  |  |  |  |  |
| 1 | **CONTRATO SC15682 - MEM PATIO DE ESTANQUES** |  | 2026-03-31 → 2026-02-28 (-31d) |  |  |  |  |  |
| 1 | **SECTOR PATIO DE ESTANQUES** |  | 2026-03-31 → 2026-02-28 (-31d) |  |  |  |  |  |
| 1 | **OBRAS MECÁNICAS PATIO DE ESTANQUES** |  | 2026-01-18 → 2025-12-24 (-25d) |  |  |  |  |  |
| 1 | **MONTAJE DE ESTANQUES** |  | 2025-10-19 → 2025-10-31 (+12d) |  |  |  |  |  |
| 1 | **MONTAJE DE ESTANQUES RED CONTRA INCENDIOS (RCI)** |  | 2025-10-19 → 2025-08-31 (-49d) |  |  |  |  |  |
| A1100 | Estanques de Agua para RCI TAG: 5764-EST-001 | 2025-07-14 A | 2025-10-19 → 2025-08-31 A (-49d) | 98d → 106.91d | 0% → 100% | 0.67d → none |  |  |
| A1110 | Estanques de Agua para RCI TAG: 5764-EST-015 | 2025-07-19 → 2025-08-03 A (+15d) | 2025-10-09 → 2025-08-30 A (-40d) | 83d → 90.55d | 0% → 100% | 0.67d → none | A1100 SS+5d → A1100 SS |  |
| 2 | **MONTAJE DE ESTANQUES DE AGUA, ÁREA 1000** | 2025-07-24 → 2025-08-07 (+14d) | 2025-10-17 → 2025-10-31 (+14d) |  |  |  |  |  |
| A1130 | Estanque Agua Industrial y Plataforma Superior TAG: 5817-EST-1041 | 2025-07-24 → 2025-08-07 A (+14d) | 2025-10-07 → 2025-10-30 A (+23d) | 76d → 82.91d | 0% → 100% | 0.67d → none | A1110 SS+5d → A1110 SS+3.27d |  |
| A1140 | Estanque Agua Potable y Plataforma Superior TAG: 5817-EST-1071 | 2025-07-29 → 2025-08-11 A (+13d) | 2025-10-15 → 2025-10-31 A (+16d) | 79d → 86.18d | 0% → 100% | 0.67d → none | A1130 SS+5d → A1130 SS+3.27d |  |
| A1120 | Estanque Agua Ultrapura y Plataforma Superior TAG: 5817-EST-1001 | 2025-08-03 → 2025-08-15 A (+12d) | 2025-10-17 → 2025-10-30 A (+13d) | 76d → 82.91d | 0% → 100% | 0.67d → none | A1140 SS+5d → A1140 SS+3.27d |  |
| A1170 | Bomba Centrífuga y Motor TAG: 5817-BBA-1052; 5817-MTR-1053 | 2025-07-24 → 2025-08-03 A (+10d) | 2025-08-01 → 2025-12-18 (+139d) | 9d → 5.45d | 0% → 35% | 72d → 52.24d | A1110 SS+5d → A1110 SS | resources SQM-MECANICA [98.25 h] → SQM-MECANICA [139.9 h] |
| A1150 | Bomba Centrífuga y Motor TAG: 5817-BBA-1042; 5817-MTR-1043 | 2025-08-02 → 2025-08-08 A (+6d) | 2025-08-10 → 2025-12-18 (+130d) | 9d → 5.45d | 0% → 65% | 72d → 52.24d | A1170 → A1170 FF |  |
| A1190 | Bomba Centrífuga y Motor TAG: 5817-BBA-1074; 5817-MTR-1075 | 2025-08-11 → 2025-08-13 A (+2d) | 2025-08-19 → 2025-12-18 (+121d) | 9d → 5.45d | 0% → 65% | 72d → 52.24d | A1150 → A1150 FF |  |
| A1210 | Bomba Centrífuga y Motor TAG: 5817-BBA-1080; 5817-MTR-1081 | 2025-08-20 → 2025-08-18 A (-2d) | 2025-08-28 → 2025-12-18 (+112d) | 9d → 5.45d | 0% → 65% | 72d → 52.24d | A1190 → A1190 FF |  |
| A1220 | Bomba Centrífuga y Motor TAG: 5817-BBA-1083; 5817-MTR-1084 | 2025-08-29 → 2025-08-23 A (-6d) | 2025-09-06 → 2025-12-18 (+103d) | 9d → 5.45d | 0% → 65% | 72d → 52.24d | A1210 → A1210 FF |  |
| A1160 | Bomba Centrífuga y Motor TAG: 5817-BBA-1072; 5817-MTR-1073 | 2025-09-07 → 2025-08-28 A (-10d) | 2025-09-15 → 2025-12-18 (+94d) | 9d → 5.45d | 0% → 65% | 72d → 52.24d | A1220 → A1220 FF | resources SQM-MECANICA [139.9 h] → SQM-MECANICA [98.25 h] |
| A1180 | Bomba Centrífuga y Motor TAG: 5817-BBA-1055; 5817-MTR-1056 | 2025-09-16 → 2025-09-02 A (-14d) | 2025-09-24 → 2025-12-18 (+85d) | 9d → 5.45d | 0% → 65% | 72d → 52.24d | A1160 → A1160 FF |  |
| A1250 | Bomba Centrífuga y Motor TAG: 5817-BBA-4009; 5817-MTR-4010 | 2025-10-04 → 2025-09-22 A (-12d) | 2025-10-12 → 2025-12-20 (+69d) | 9d → 5.45d | 0% → 35% | 72d → 50.33d | A1200 → A1240 FF |  |
| A1260 | Bomba Centrífuga y Motor TAG: 5817-BBA-4012; 5817-MTR-4013 | 2025-10-13 → 2025-09-27 A (-16d) | 2025-10-21 → 2025-12-20 (+60d) | 9d → 5.45d | 0% → 35% | 72d → 50.33d | A1250 → A1250 FF |  |
| A1270 | Bomba Centrífuga y Motor TAG: 5817-BBA-4015; 5817-MTR-4016 | 2025-10-22 → 2025-10-02 A (-20d) | 2025-10-30 → 2025-12-20 (+51d) | 9d → 5.45d | 0% → 35% | 72d → 50.33d | A1260 → A1260 FF |  |
| A1280 | Bomba Centrífuga y Motor TAG: 5817-BBA-4018; 5817-MTR-4019 | 2025-10-31 → 2025-10-07 A (-24d) | 2025-11-08 → 2025-12-20 (+42d) | 9d → 5.45d | 0% → 35% | 72d → 50.33d | A1270 → A1270 FF |  |
| A1290 | Bomba Centrífuga y Motor TAG: 5817-BBA-4021; 5817-MTR-4022 | 2025-11-09 → 2025-10-12 A (-28d) | 2025-11-17 → 2025-12-20 (+33d) | 9d → 5.45d | 0% → 35% | 72d → 50.33d | A1280 → A1280 FF |  |
| A1300 | Bomba Centrífuga y Motor TAG: 5817-BBA-4024; 5817-MTR-4025 | 2025-11-18 → 2025-10-17 A (-32d) | 2025-11-26 → 2025-12-20 (+24d) | 9d → 5.45d | 0% → 35% | 72d → 50.33d | A1290 → A1290 FF |  |
| A1330 | Bomba Centrífuga y Motor TAG: 5817-BBA-5008; 5817-MTR-5009 | 2025-11-27 → 2025-11-01 A (-26d) | 2025-12-05 → 2025-12-21 (+16d) | 9d → 5.45d | 0% → 12% | 72d → 50.33d | A1300 → A1300 SS |  |
| A1340 | Bomba Centrífuga y Motor TAG: 5817-BBA-5011; 5817-MTR-5012 | 2025-12-06 → 2025-11-06 A (-30d) | 2025-12-14 → 2025-12-20 (+6d) | 9d → 5.45d | 0% → 35% | 72d → 50.33d | A1330 → A1330 SS |  |
| A1350 | Bomba Sumidero y Motor TAG: 5817-BBS-1050; 5817-MTR-1051 | 2025-12-15 → 2025-11-11 A (-34d) | 2025-12-23 → 2025-12-21 (-2d) | 9d → 5.45d | 0% → 12% | 72d → 50.33d | A1340 → A1340 SS |  |
| A1360 | Bomba Sumidero y Motor TTAG: 5817-BBS-4026; 5817-MTR-4027 | 2025-12-24 → 2025-11-16 A (-38d) | 2026-01-01 → 2025-12-21 (-11d) | 9d → 5.45d | 0% → 12% | 72d → 50.33d | A1350 → A1350 SS |  |
| A1370 | Bomba Sumidero y Motor TAG: 5817-BBS-5014; 5817-MTR-5015 | 2026-01-02 → 2025-11-21 A (-42d) | 2026-01-10 → 2025-12-21 (-20d) | 9d → 5.45d | 0% → 12% | 72d → 50.33d | A1360 → A1360 SS |  |
| A1200 | Bomba Centrífuga y Motor TAG: 5817-BBA-1077; 5817-MTR-1078 | 2025-09-25 → 2025-12-15 (+81d) | 2025-10-03 → 2025-12-20 (+78d) | 9d → 5.45d |  | 72d → 50.33d | A1180 → A1180 FF |  |
| A1380 | Alineamiento digital de Bombas de Proyecto | 2026-01-11 → 2025-12-21 (-21d) | 2026-01-18 → 2025-12-24 (-25d) | 8d → 3d |  | 72d → 69.58d | A1370 → A1370, A1320 SS |  |
| 3 | **OBRAS ESTRUCTURALES PATIO DE ESTANQUES** | 2025-10-08 → 2025-10-20 (+12d) | 2026-02-06 → 2026-02-17 (+11d) |  |  |  |  |  |
| 1 | **MONTAJE DE ESTRUCTURA DE ACCESO E INTERCONEXIÓN DE ESTANQUES** | 2025-10-08 → 2025-10-20 (+12d) | 2025-10-17 → 2025-12-15 (+59d) |  |  |  |  |  |
| A1430 | Montaje de Acceso e Interconexión de Estanques TAG: 5817-EST-1001; 5817-EST-1041; 5817-EST-1071 | 2025-10-08 → 2025-10-20 A (+12d) | 2025-10-17 → 2025-12-15 (+59d) | 10d → 10.91d | 0% → 93% | 165d → 0d |  | resources SQM-ESTRUCTURA [1439.97 h] → SQM-ESTRUCTURA [551.54 h] |
| 2 | **MONTAJE DE PARRÓN PATIO DE ESTANQUES ÁREA 7000** | 2025-10-18 → 2025-10-20 (+2d) | 2025-11-21 → 2025-12-24 (+33d) |  |  |  |  |  |
| A1440 | Parron Patio de Estanques Estructura liviana | 2025-10-18 → 2025-10-20 A (+2d) | 2025-11-16 → 2025-12-24 (+38d) | 30d → 32.73d | 0% → 72% | 29d → 42.08d | A1100 SS, A1120 → A1430 SS | resources SQM-ESTRUCTURA [3438.94 h] → SQM-ESTRUCTURA [1948.36 h] |
| A1450 | Parron Patio de Estanques Estructura Mediana | 2025-10-23 → 2025-10-20 A (-3d) | 2025-11-16 → 2025-12-22 (+36d) | 25d → 36d | 0% → 79% | 29d → 42.08d | A1440 SS+5d → A1430 SS | resources SQM-ESTRUCTURA [2223.03 h] → SQM-ESTRUCTURA [1644.38 h] |
| A1460 | Parron Patio de Estanques Estructura Pesada | 2025-10-28 → 2025-10-30 A (+2d) | 2025-11-21 → 2025-12-19 (+28d) | 25d → 27.27d | 0% → 82% | 41d → 0d | A1450 SS+5d → A1430 SS | resources SQM-ESTRUCTURA [4540.04 h] → SQM-ESTRUCTURA [2680.79 h] |
| 3 | **MONTAJE PLATAFORMA DE OPERACIÓN ÁREA 4000** |  | 2025-12-11 → 2025-12-24 (+13d) |  |  |  |  |  |
| A1480 | Plataforma de Operación área 4000 Estructura Liviana | 2025-11-22 A | 2025-11-25 → 2025-12-19 (+24d) | 4d → 4.36d | 0% → 7% | 41d → 42.08d | A1460 → A1490 SS | was named Plataforma de Operación Área 4000 Estructura Liviana; resources SQM-ESTRUCTURA [345.99 h] → SQM-ESTRUCTURA [258.65 h] |
| A1490 | Plataforma de Operación área 4000 Estructura Mediana | 2025-11-26 → 2025-11-22 A (-4d) | 2025-12-05 → 2025-12-24 (+19d) | 10d → 10.91d | 0% → 15% | 52d → 42.08d | A1480 → A1470 SS | was named Plataforma de Operación Área 4000 Estructura Mediana; resources SQM-ESTRUCTURA [1010.22 h] → SQM-ESTRUCTURA [764.38 h] |
| A1510 | Plataforma de Operación área 4000 Grating | 2025-11-28 → 2025-11-30 A (+2d) | 2025-12-06 → 2025-12-21 (+15d) | 9d → 9.82d | 0% → 100% | 46d → 42.08d | A1500 → A1500 FF | was named Plataforma de Operación Área 4000 Grating; resources SQM-ESTRUCTURA [194.51 h] → SQM-ESTRUCTURA [516.55 h] |
| A1520 | Plataforma de Operación área 4000 Barandas FRP | 2025-12-07 → 2025-12-01 A (-6d) | 2025-12-11 → 2025-12-22 (+11d) | 5d → 5.45d | 0% → 79% | 46d → 42.08d | A1510 → A1510 SS | was named Plataforma de Operación Área 4000 Barandas FRP; resources SQM-ESTRUCTURA [94.83 h] → SQM-ESTRUCTURA [109.98 h] |
| A1500 | Plataforma de Operación área 4000 Planchas | 2025-11-26 → 2025-12-19 (+23d) | 2025-11-27 → 2025-12-21 (+24d) | 2d → 2.18d |  | 46d → 42.08d |  | was named Plataforma de Operación Área 4000 Planchas; resources SQM-ESTRUCTURA [12.86 h] → SQM-ESTRUCTURA [12.22 h] |
| 4 | **MONTAJE PLATAFORMA DE OPERACIÓN ÁREA 5000** | 2025-11-26 → 2025-12-21 (+25d) | 2025-12-19 → 2026-01-16 (+28d) |  |  |  |  |  |
| A1540 | Plataforma de Operación área 5000 Estructura Mediana | 2025-11-26 → 2025-12-21 (+25d) | 2025-12-03 → 2025-12-29 (+26d) | 8d → 8.73d |  | 41d → 42.08d | A1480 SS, A1480 → A1520 SS | was named Plataforma de Operación Área 5000 Estructura Mediana; resources SQM-ESTRUCTURA [473.25 h] → SQM-ESTRUCTURA [367 h] |
| A1530 | Plataforma de Operación área 5000 Estructura Liviana | 2025-12-04 → 2025-12-29 (+25d) | 2025-12-07 → 2026-01-03 (+27d) | 4d → 4.36d |  | 41d → 42.08d |  | was named Plataforma de Operación Área 5000 Estructura Liviana; resources SQM-ESTRUCTURA [189.01 h] → SQM-ESTRUCTURA [131.39 h] |
| A1550 | Plataforma de Operación área 5000. Planchas | 2025-12-08 → 2026-01-03 (+26d) | 2025-12-10 → 2026-01-06 (+27d) | 3d → 3.27d |  | 41d → 42.08d |  | was named Plataforma de Operación Área 5000. Planchas; resources SQM-ESTRUCTURA [8.38 h] → SQM-ESTRUCTURA [5.4 h] |
| A1560 | Plataforma de Operación área 5000. Grating T3232 | 2025-12-11 → 2026-01-06 (+26d) | 2025-12-16 → 2026-01-13 (+28d) | 6d → 6.55d |  | 41d → 42.08d |  | was named Plataforma de Operación Área 5000. Grating T3232; resources SQM-ESTRUCTURA [99.17 h] → SQM-ESTRUCTURA [231.45 h] |
| A1570 | Plataforma de Operación área 5000. Barandas FRP Grado 3 | 2025-12-17 → 2026-01-13 (+27d) | 2025-12-19 → 2026-01-16 (+28d) | 3d → 3.27d |  | 41d → 42.08d | A1560, A1520, A1490 → A1560, A1520 | was named Plataforma de Operación Área 5000. Barandas FRP Grado 3; resources SQM-ESTRUCTURA [44.73 h] → SQM-ESTRUCTURA [61.1 h] |
| 5 | **MONTAJE PARRÓN DESDE PATIO DE ESTANQUES A L5 LiOH** | 2025-11-17 → 2025-11-14 (-3d) | 2026-02-06 → 2026-02-17 (+11d) |  |  |  |  |  |
| A1580 | Estructura A36 Liviana 0@30 Kg /m Parrón desde Patio de Estanques hasta L5 LiOH. | 2025-11-27 → 2025-11-14 A (-13d) | 2025-12-31 → 2026-01-13 (+13d) | 35d → 38.18d | 0% → 23% | 29d → 35.57d | A1590 SS+5d, A1570 FF → A1590 SS | resources SQM-ESTRUCTURA [6372.6 h] → SQM-ESTRUCTURA [5681.6 h] |
| A1590 | Estructura A36 Mediana 31@60 Kg /m Parrón desde Patio de Estanques hasta L5 LiOH. | 2025-11-22 → 2025-11-14 A (-8d) | 2026-02-06 → 2026-02-17 (+11d) | 77d → 84d | 0% → 23% | 29d → 0d | A1600 SS+5d → A1600 SS, A1460 SS | resources SQM-ESTRUCTURA [9325.65 h] → SQM-ESTRUCTURA [6500 h] |
| A1600 | Estructura A36 Pesada: > 61 Kg /m Parrón desde Patio de Estanques hasta L5 LiOH. | 2025-11-17 → 2025-11-14 A (-3d) |  | 77d → 84d | 0% → 42% | 29d → 0d | A1450 → A1460 SS | resources SQM-ESTRUCTURA [6541.74 h] → SQM-ESTRUCTURA [2646 h] |
| 6 | **MONTAJE PARRÓN DESDE L5 LiOH A L3 LiOH** | none → 2025-12-15 | none → 2025-12-25 |  |  |  |  |  |
| 4 | **OBRAS PIPING PATIO DE ESTANQUES** | 2025-08-08 → 2025-08-26 (+18d) | 2026-03-16 → 2026-02-28 (-16d) |  |  |  |  |  |
| 1 | **MONTAJE DE CAÑERÍAS ACERO INOXIDABLE PATIO DE ESTANQUES** | 2026-01-15 → 2025-11-29 (-47d) | 2026-03-07 → 2026-01-07 (-59d) |  |  |  |  |  |

| ID | Task | Start | Finish | Duration | Complete | Total float | Predecessors | Other |
| --- | --- | --- | --- | --- | --- | --- | --- | --- |
| A1650 | Ø 6" - Cañería Acero Inoxidable | 2026-01-15 → 2025-11-29 A (-47d) | 2026-01-24 → 2025-12-27 (-28d) | 10d → 10.91d | 0% → 74% | 15d → 67.06d | A1720, A1580 → A1380 FF, A1920 SS | resources SQM-PIPING [647.42 h] → SQM-PIPING [593.28 h] |
| A1640 | Ø 8" - Cañería Acero Inoxidable | 2026-01-25 → 2025-12-01 A (-55d) | 2026-01-31 → 2025-12-29 (-33d) | 7d → 7.64d | 0% → 35% | 24d → 67.06d | A1650 → A1650 SS, A1380 FF | resources SQM-PIPING [182.65 h] → SQM-PIPING [153.47 h] |
| A1680 | Ø 2" - Cañería Acero Inoxidable | 2026-02-08 → 2025-12-01 A (-69d) | 2026-02-21 → 2026-01-05 (-47d) | 14d → 15.27d | 0% → 64% | 24d → 67.06d | A1660, A1640 → A1660 FF, A1640 SS | resources SQM-PIPING [836.16 h] → SQM-PIPING [556.61 h] |
| A1660 | Ø 4" - Cañería Acero Inoxidable | 2026-02-01 → 2025-12-29 (-34d) | 2026-02-07 → 2026-01-05 (-33d) |  |  | 24d → 67.06d |  | resources SQM-PIPING [19.81 h] → SQM-PIPING |
| A1670 | Ø 3" - Cañería Acero Inoxidable | 2026-02-22 → 2025-12-30 (-54d) | 2026-02-28 → 2026-01-07 (-52d) | 7d → 7.64d |  | 24d → 67.06d | A1680 → A1680 SS | resources SQM-PIPING [3.31 h] → SQM-PIPING [1.03 h] |
| A1690 | Ø 1" - Cañería Acero Inoxidable | 2026-03-01 → 2025-12-30 (-61d) | 2026-03-07 → 2026-01-07 (-59d) | 7d → 7.64d |  | 24d → 67.06d | A1670, A1830 FF → A1670 SS | resources SQM-PIPING [1.99 h] → SQM-PIPING [0.14 h] |
| A1720 | Ø 160 mm - Cañería HDPE, PE 100, PN10 | 2025-08-08 → 2025-08-26 A (+18d) | 2026-01-14 → 2026-02-17 (+34d) | 160d → 193.09d | 0% → 71% | 0.67d → 0d | A1060 SS, A1120 SS+5d → A1590 SS, A1610 FF | resources SQM-PIPING [7927.22 h] → SQM-PIPING [9441.54 h] |
| A1700 | Ø 250 mm - Cañería HDPE, PE 100, PN10 | 2026-01-25 → 2025-11-04 A (-82d) | 2026-02-07 → 2026-01-08 (-30d) | 14d → 15.27d | 0% → 2% | 15d → 47.86d | A1650 → A1910 SS | resources SQM-PIPING [29.25 h] → SQM-PIPING [730.65 h] |
| A1710 | Ø 200 mm - Cañería HDPE, PE 100, PN10 | 2026-02-08 → 2025-11-18 A (-82d) | 2026-02-14 → 2025-12-31 (-45d) | 7d → 7.64d | 0% → 7% | 15d → 52.07d | A1700 → A1700 SS | resources SQM-PIPING [56.84 h] → SQM-PIPING [52.34 h] |
| A1730 | Ø 110 mm - Cañería HDPE, PE 100, PN10 | 2026-02-15 → 2025-11-25 A (-82d) | 2026-02-28 → 2026-01-04 (-55d) | 14d → 15.27d | 0% → 24% | 15d → 52.07d | A1710 → A1710 SS | resources SQM-PIPING [1730.21 h] → SQM-PIPING [726.45 h] |
| A1740 | Ø 90 mm - Cañería HDPE, PE 100, PN10 | 2026-03-01 → 2025-12-01 A (-90d) | 2026-03-14 → 2025-12-26 (-78d) | 14d → 15.27d | 0% → 88% | 15d → 62.84d | A1730, A1860 FF, A1840 FF → A1730 SS | resources SQM-PIPING [266.25 h] → SQM-PIPING [1.41 h] |
| A1750 | Ø 63 mm - Cañería HDPE, PE 100, PN10 | 2025-08-08 → 2025-12-01 A (+115d) | 2025-08-21 → 2026-02-17 (+180d) | 14d → 15.27d | 0% → 2% | 0.67d → 16.89d | A1720 SS → A1720 FF | resources SQM-PIPING [266.04 h] → SQM-PIPING [325.14 h] |
| A1760 | Ø 50 mm - Cañería HDPE, PE 100, PN10 | 2025-08-22 → 2025-12-01 A (+101d) | 2025-08-24 → 2026-02-04 (+164d) | 3d → 3.27d | 0% → 37% | 0.67d → 16.89d | A1750 → A1750 SS |  |
| A1780 | Ø 32 mm - Cañería HDPE, PE 100, PN10 | 2025-08-29 → 2025-12-01 A (+94d) | 2025-08-31 → 2026-02-09 (+162d) | 3d → 3.27d | 0% → 7% | 0.67d → 16.89d | A1770 → A1770 FF |  |
| A1770 | Ø 40 mm - Cañería HDPE, PE 100, PN10 | 2025-08-25 → 2026-02-04 (+163d) | 2025-08-28 → 2026-02-09 (+165d) | 4d → 4.36d |  | 0.67d → 16.89d |  |  |
| 3 | **MONTAJE DE CAÑERÍAS HDPE PN16 (P7) PATIO DE ESTANQUES** | 2025-09-01 → 2025-11-06 (+66d) | 2025-09-14 → 2025-12-31 (+108d) |  |  |  |  |  |
| A1790 | Ø 90 mm - Cañería HDPE, PE 100, PN16 | 2025-09-01 → 2025-11-06 A (+66d) | 2025-09-06 → 2025-12-24 (+109d) | 6d → 3.27d | 0% → 3% | 0.67d → 71.01d | A1110 SS, A1780 → A1110, A1380 FF | resources SQM-PIPING [0.77 h] → SQM-PIPING [0.1 h] |
| A1800 | DN 75 mm - Cañería HDPE, PE 100, PN16 | 2025-09-07 → 2025-12-01 A (+85d) | 2025-09-14 → 2025-12-30 (+107d) | 8d → 15.27d | 0% → 63% | 197d → 59.09d | A1790 → A1730 SS, A1860 FF | resources SQM-PIPING [1027.42 h] → SQM-PIPING [782.76 h] |
| A1810 | Ø 63 mm - Cañería HDPE, PE 100, PN16 | 2025-09-07 → 2025-12-24 (+108d) | 2025-09-09 → 2025-12-27 (+109d) | 3d → 3.27d |  | 0.67d → 71.01d |  | resources SQM-PIPING [14.02 h] → SQM-PIPING [19.89 h] |
| A1820 | Ø 40 mm - Cañería HDPE, PE 100, PN16 | 2025-09-10 → 2025-12-27 (+108d) | 2025-09-12 → 2025-12-31 (+110d) | 3d → 3.27d |  | 0.67d → 71.01d | A1810, A1850 FF → A1810 |  |
| A1830 | Montaje de Fitting Acero Inoxidable GL | 2026-01-15 → 2025-12-01 A (-45d) | 2026-01-24 → 2026-01-07 (-17d) | 10d → 0d |  | 66d → 67.06d | A1650 SS → A1740 SS, A1690 FF, A1870 FF | resources SQM-PIPING [1442.73 h] → SQM-PIPING |
| A1840 | Montaje de Fitting HDPE (P1) GL | 2025-08-12 → 2025-12-26 (+136d) | 2026-01-18 → 2025-12-26 (-23d) | 160d → 0d |  | 70d → 62.84d | A1720 SS+4d → A1740, A1830 | resources SQM-PIPING [5314.89 h] → SQM-PIPING |
| A1850 | Montaje de Fitting HDPE (P7) GL | 2025-08-08 → 2025-12-26 (+140d) | 2025-08-15 → 2025-12-26 (+133d) | 8d → 0d |  | 28.67d → 62.84d | A1750 SS → A1740, A1840 | resources SQM-PIPING [636.87 h] → SQM-PIPING |
| A1860 | Válvulas Patio de Estanques.(Global) | 2025-08-18 → 2025-12-26 (+130d) | 2026-01-24 → 2025-12-26 (-29d) | 160d → 0d |  | 64d → 62.84d | A1720 SS+10d → A1740, A1850 | resources SQM-PIPING [1423.5 h] → SQM-PIPING |
| 5 | **MONTAJE DE SOPORTACIÓN PIPING PATIO DE ESTANQUES** | 2025-09-10 → 2025-08-26 (-15d) | 2026-03-07 → 2026-02-07 (-28d) |  |  |  |  |  |
| A1880 | P1.3 x 37 un. - Pedestales para Tuberías Elevadas | 2025-09-10 → 2025-08-26 A (-15d) | 2025-09-21 → 2025-12-24 (+94d) | 12d → 15.27d | 0% → 100% | 0.67d → 35.67d | A1720 SS, A1750, A1820 SS → A1720 SS | resources SQM-PIPING [1178.1 h] → SQM-PIPING [486.26 h] |
| A1890 | P1.6 x 51 un. - Pedestales para Tuberías Elevadas | 2025-09-10 → 2025-09-09 A (-1d) | 2025-10-19 → 2026-02-04 (+108d) | 40d → 45.82d | 0% → 8% | 5.67d → 35.67d |  | was named P1.6 x 51 un. - Pedestal para Tuberías Elevadas.; resources SQM-PIPING [487.44 h] → SQM-PIPING |
| A1910 | P4 x 40 un. - Pedestales para Tuberías Elevadas | 2025-09-10 → 2025-10-28 A (+48d) | 2025-09-16 → 2025-12-31 (+106d) | 7d → 7.64d | 0% → 3% | 5.67d → 35.67d | A1890 SS → A1900 SS | resources SQM-PIPING [109.82 h] → SQM-PIPING [27.5 h] |
| A1920 | U3 x 5454 un. - Abrazadera para Tuberías Elevadas | 2026-01-31 → 2025-11-04 A (-88d) | 2026-03-07 → 2026-02-07 (-28d) | 36d → 50.18d | 0% → 9% | 24d → 35.67d | A1910, A1690 FF → A1910 SS | resources SQM-PIPING [253.07 h] → SQM-PIPING [1285.61 h] |
| 6 | **TIE-IN DE LÍNEAS ASOCIADAS A PATIO DE ESTANQUES** | 2026-01-14 → 2026-01-08 (-6d) | 2026-03-16 → 2026-02-28 (-16d) |  |  |  |  |  |
| A1930 | Tie-In N° 1442 - Línea proyectada TAG: 110-W-5817-P1-1715 con existente TAG: 50-WW-5752-IA-7575 | 2026-03-15 → 2026-02-09 (-34d) | 2026-03-15 → 2026-02-10 (-33d) | 1d → 1.09d |  | 15d → 16.89d | A1720, A1740 → A1730, A1780 |  |
| A1940 | Tie-In N° 1471 - Línea proyectada TAG: 75-PW-5817-P7-1910 con existente TAG: 63-PW-5759-P5-3900 | 2026-03-16 → 2026-02-10 (-34d) | 2026-03-16 → 2026-02-11 (-33d) | 1d → 1.09d |  | 15d → 16.89d |  |  |
| A1950 | Tie-In N° 4401 - Línea proyectada TAG: 160-BREF-5817-P1-4504 con existente TAG: 160-BB-5759-P5-3153 | 2026-01-14 → 2026-02-17 (+34d) | 2026-01-14 → 2026-02-18 (+35d) | 1d → 1.09d |  | 74d → 0d | A1720 FF → A1720 |  |
| A1960 | Tie-In N° 4402 - Línea proyectada TAG: 160-BREF-5817-P1-4520 con equipo existente TAG: 5735-EST-5250 | 2026-01-14 → 2026-02-18 (+35d) | 2026-01-14 → 2026-02-19 (+36d) | 1d → 1.09d |  | 74d → 0d | A1950 SS → A1950 |  |
| A1970 | Tie-In N° 4403 - Línea proyectada TAG: 160-BREF-5817-P1-4524 con equipo existente TAG: 5759-EST-001 | 2026-01-15 → 2026-02-19 (+35d) | 2026-01-15 → 2026-02-21 (+37d) | 1d → 1.09d |  | 74d → 0d | A1960 SS+1d → A1960 | resources SQM-PIPING → SQM-PIPING [15.75 h] |
| A2020 | Tie-In N° 5401 - Línea existente TAG:160-LMB-5759-P5-3352 a proyectada TAG:160-SAB-5817-P1-5504 | 2026-01-16 → 2026-02-24 (+39d) | 2026-01-16 → 2026-02-25 (+40d) | 1d → 1.09d |  | 74d → 0d | A1970 → A2010 |  |
| A2030 | Tie-In N° 5402 - Línea proyectada TAG: 160-SAB-5817- P1-5503 con equipo existente TAG: 5735-EST-1800 | 2026-01-16 → 2026-02-25 (+40d) | 2026-01-16 → 2026-02-26 (+41d) | 1d → 1.09d |  | 74d → 0d | A2020 SS → A2020 | resources SQM-PIPING → SQM-PIPING [15.75 h] |
| 5 | **OBRAS ELÉCTRICAS PATIO DE ESTANQUES** | 2025-09-22 → 2025-10-30 (+38d) | 2026-01-21 → 2026-01-19 (-2d) |  |  |  |  |  |
| 1 | **TENDIDO Y CONEXIONADO DE CABLES BAJA TENSIÓN PATIO DE ESTANQUES** | 2025-11-01 → 2025-12-01 (+30d) | 2025-12-05 → 2026-01-10 (+36d) |  |  |  |  |  |
| A2140 | Cable de Fuerza Multiconductor de Cobre Blando, 1x4C #6 AWG | 2025-11-01 → 2025-12-01 A (+30d) | 2025-11-05 → 2026-01-03 (+59d) | 4d → 4.36d | 0% → 6% | 0.67d → 50.33d | A2300, A2360 → A2130 FF | resources SQM-ELÉCTRICO [319.8 h] → SQM-ELÉCTRICO [123 h] |
| A2150 | Cable de Fuerza Multiconductor de Cobre Blando, 1x4C #4 AWG | 2025-11-01 → 2025-12-01 A (+30d) | 2025-11-07 → 2026-01-05 (+59d) | 6d → 6.55d | 0% → 1% | 116.67d → 50.33d |  | resources SQM-ELÉCTRICO [621.26 h] → SQM-ELÉCTRICO [300.2 h] |
| A2170 | Cable de Fuerza Multiconductor de Cobre Blando, 1x3C #6 AWG | 2025-11-07 → 2025-12-01 A (+24d) | 2025-11-21 → 2026-01-08 (+48d) | 14d → 15.27d | 0% → 16% | 116.67d → 50.33d | A2160 SS → A2160 FF | resources SQM-ELÉCTRICO [227.3 h] → SQM-ELÉCTRICO [432.96 h] |
| A2180 | Cable de Fuerza Multiconductor de Cobre Blando, 1x5C #14 AWG | 2025-11-07 → 2025-12-01 A (+24d) | 2025-12-05 → 2026-01-10 (+36d) | 28d → 30.55d | 0% → 13% | 116.67d → 48.67d | A2170 SS → A2170 FF | resources SQM-ELÉCTRICO [940.7 h] → SQM-ELÉCTRICO [1185.72 h] |
| A2160 | Cable de Fuerza Multiconductor de Cobre Blando, 1x4C #2 AWG | 2025-11-07 → 2026-01-05 (+59d) | 2025-11-10 → 2026-01-08 (+59d) | 3d → 3.27d |  | 116.67d → 50.33d |  | resources SQM-ELÉCTRICO [384.26 h] → SQM-ELÉCTRICO [94.8 h] |
| 2 | **MONTAJE DE CANALIZACIÓN Y FERRETERÍA PATIO DE ESTANQUES** | 2025-10-19 → 2025-12-01 (+43d) | 2025-11-12 → 2026-01-16 (+65d) |  |  |  |  |  |
| A2230 | Conduit de Acero Galvanizado 3"Ø, tipo Conduit ANSI C80.1 | 2025-10-19 → 2025-12-01 A (+43d) | 2025-10-23 → 2025-12-21 (+59d) | 5d → 5.45d | 0% → 20% | 0.67d → 66.51d | A2360, A2400 → A2190 SS | resources SQM-ELÉCTRICO [121.8 h] → SQM-ELÉCTRICO [220.5 h] |
| A2240 | Conduit Flexible Metálico con Cubierta PVC 3" Ø Trabajo Pesado | 2025-10-19 → 2025-12-01 A (+43d) | 2025-10-20 → 2025-12-18 (+59d) | 2d → 2.18d | 0% → 20% | 0.67d → 66.51d | A2230 SS → A2230 SS, A2220 SS | resources SQM-ELÉCTRICO [19.95 h] → SQM-ELÉCTRICO [10.5 h] |
| A2250 | Copla para Cañería de Acero Galvanizado 3"Ø. Incluye Copla | 2025-10-21 → 2025-12-01 A (+41d) | 2025-10-24 → 2025-12-19 (+56d) | 3.33d → 3.27d | 0% → 20% | 0.67d → 66.51d | A2240 → A2240 SS | was named Instalación de Copla para Cañería de Acero Galvanizado 3"Ø. Incluye Copla.; resources SQM-ELÉCTRICO [8.4 h] → SQM-ELÉCTRICO [18.48 h] |
| A2260 | Conexión Terminal para Cañería de Acero Galvanizado 3"Ø | 2025-10-24 → 2025-12-01 A (+38d) | 2025-10-27 → 2025-12-20 (+54d) | 3.33d → 4.36d | 0% → 20% | 0.67d → 66.51d | A2250 → A2250 SS | was named Instalación de Conexión Terminal para Cañería de Acero Galvanizado 3"Ø.; resources SQM-ELÉCTRICO [1.68 h] → SQM-ELÉCTRICO [4.2 h] |
| A2300 | Conduit de Acero Galvanizado, 2"Ø, tipo Conduit ANSI C80.1.Incluye Copla | 2025-10-24 → 2025-12-01 A (+38d) | 2025-11-01 → 2025-12-22 (+51d) | 8d → 8.73d | 0% → 30% | 0.67d → 66.51d | A2260 SS → A2290 SS | resources SQM-ELÉCTRICO [611.1 h] → SQM-ELÉCTRICO [840.26 h] |
| A2310 | Conduit Flexible Metálico con Cubierta PVC 2" Ø Trabajo Pesado | 2025-11-01 → 2025-12-01 A (+30d) | 2025-11-09 → 2025-12-23 (+44d) | 8d → 8.73d | 0% → 20% | 50.67d → 66.51d | A2300 → A2300 SS | resources SQM-ELÉCTRICO [85.05 h] → SQM-ELÉCTRICO [252 h] |
| A2320 | Conexión Terminal para Cañería de Acero Galvanizado 2"Ø | 2025-11-09 → 2025-12-01 A (+22d) | 2025-11-12 → 2025-12-19 (+37d) | 3d → 3.27d | 0% → 25% | 50.67d → 66.51d | A2310 → A2310 SS | resources SQM-ELÉCTRICO [7.35 h] → SQM-ELÉCTRICO [9.45 h] |
| A2330 | Conduit de Acero Galvanizado, 1 1/2"Ø, tipo Conduit ANSI C80.1. Incluye Copla | 2025-11-01 → 2025-12-01 A (+30d) | 2025-11-09 → 2025-12-23 (+44d) | 8d → 8.73d | 0% → 23% | 1.33d → 68.96d | A2300 → A2300 SS+2.18d | resources SQM-ELÉCTRICO [283.5 h] → SQM-ELÉCTRICO [516.6 h] |
| A2340 | Conduit Flexible Metálico con Cubierta PVC 1 1/2" Ø Trabajo Pesado | 2025-11-01 → 2025-12-01 A (+30d) | 2025-11-04 → 2025-12-21 (+47d) | 3.33d → 5.45d | 0% → 15% | 1.33d → 68.96d |  | was named Conduit Flexible Metálico con Cubierta PVC 1 1/2" Ø Trabajo Pesado.; resources SQM-ELÉCTRICO → SQM-ELÉCTRICO [37.8 h] |
| 3 | **MONTAJE DE ESCALERILLAS Y PIEZAS ESPECIALES PATIO DE ESTANQUES** | 2025-09-22 → 2025-11-26 (+65d) | 2025-10-18 → 2025-12-24 (+67d) |  |  |  |  |  |
| A2360 | EPC Porta Conductores 600x100mm e:2 mm, tiras 3m. Incluir tapa dos aguas, eclisas y pernos de unión. | 2025-09-22 → 2025-11-26 A (+65d) | 2025-10-04 → 2025-12-24 (+81d) | 13d → 10.91d | 0% → 34% | 0.67d → 50.33d | A1880, A1910 → A1370 SS, A1460 SS | was named EPC Porta Conductores 600x100mm e:2 mm, tiras 3m. Incluir tapa dos aguas, eclisas y pernos de Unión.; resources SQM-ELÉCTRICO [1848 h] → SQM-ELÉCTRICO [1904 h] |
| A2370 | EPC Curva Horizontal de 90°, 600x100mm e:2mm. Incluir tapa dos aguas, eclisas y pernos de unión. | 2025-09-28 → 2025-12-04 A (+67d) | 2025-10-06 → 2025-12-20 (+75d) | 9d → 4.36d | 0% → 8% | 0.67d → 50.33d | A2360 FF+2d → A2360 SS | was named EPC Curva Horizontal de 90°, 600x100mm e:2mm. Incluir tapa dos aguas, eclisas y pernos de Unión.; resources SQM-ELÉCTRICO [11.2 h] → SQM-ELÉCTRICO |
| A2380 | EPC Curva Vertical Interior de 90°, 600x100mm e:2mm. Incluir tapa dos aguas, eclisas y pernos de unión. | 2025-10-07 → 2025-12-04 A (+58d) | 2025-10-10 → 2025-12-18 (+69d) | 4d → 2.18d | 0% → 8% | 0.67d → 50.33d | A2370 SS, A2370 → A2370 SS | was named EPC Curva Vertical Interior de 90°, 600x100mm e:2mm. Incluir tapa dos aguas, eclisas y pernos de Unión.; resources SQM-ELÉCTRICO [5.6 h] → SQM-ELÉCTRICO |
| A2390 | EPC Curva Vertical Exterior de 90°, 600x100mm e:2mm. Incluir tapa dos aguas, eclisas y pernos de unión. | 2025-10-11 → 2025-12-06 A (+56d) | 2025-10-14 → 2025-12-18 (+65d) | 4d → 2.18d | 0% → 8% | 0.67d → 50.33d | A2380 → A2380 SS | was named EPC Curva Vertical Exterior de 90°, 600x100mm e:2mm. Incluir tapa dos aguas, eclisas y pernos de Unión. |
| A2400 | EPC Derivación tipo TEE, 600x100mm e:2mm. Incluir tapa dos aguas, eclisas y pernos de unión. | 2025-10-11 → 2025-12-06 A (+56d) | 2025-10-18 → 2025-12-20 (+63d) | 8d → 4.36d | 0% → 13% | 0.67d → 50.33d |  | was named EPC DerivaciØn tipo TEE, 600x100mm e:2mm. Incluir tapa dos aguas, eclisas y pernos de Unión.; resources SQM-ELÉCTRICO [67.2 h] → SQM-ELÉCTRICO [44.8 h] |
| 4 | **MONTAJE DE EQUIPOS ELÉCTRICOS PATIO DE ESTANQUES** | 2025-11-12 → 2025-12-01 (+19d) | 2025-11-22 → 2026-01-19 (+58d) |  |  |  |  |  |
| A2440 | Estación Local Marca Allen Bradley o Equivalente, para Trabajo Pesado, NEMA 4X | 2025-11-12 → 2025-12-01 A (+19d) | 2025-11-22 → 2026-01-18 (+57d) | 10d → 10.91d | 0% → 50% | 50.67d → 42.08d | A2320, A2230 → A2350 SS, A2520 SS | resources SQM-ELÉCTRICO [616 h] → SQM-ELÉCTRICO [588 h] |
| 5 | **MONTAJE DE SISTEMA DE ILUMINACIÓN PATIO DE ESTANQUES** | 2025-11-05 → 2025-10-30 (-6d) | 2025-12-22 → 2025-12-23 (+1d) |  |  |  |  |  |
| A2510 | Poste Recto Acero Galvanizado 3" Ø 2,5m | 2025-11-05 → 2025-10-30 A (-6d) | 2025-11-07 → 2025-12-16 (+39d) | 2d → 2.18d | 0% → 18% | 0.67d → 66.9d | A2140, A2340 → A1120 | resources SQM-ELÉCTRICO → SQM-ELÉCTRICO [50.4 h] |
| A2500 | Postes Abatible Swivelpole Acero Galvanizado 1½" Ø x 4m | 2025-11-05 → 2025-11-01 A (-4d) | 2025-11-12 → 2025-12-21 (+39d) | 7d → 7.64d | 0% → 11% | 0.67d → 66.9d |  | was named Poste Recto Acero Galvanizado 3" Ø 4m; resources SQM-ELÉCTRICO [126 h] → SQM-ELÉCTRICO [294 h] |
| A2490 | Postes Abatible Swivelpole Acero Galvanizado 1½" Ø x 4m | 2025-11-12 → 2025-11-08 A (-4d) | 2025-11-22 → 2025-12-22 (+30d) | 10d → 10.91d | 0% → 33% | 0.67d → 66.9d | A2500 → A2500 SS | was named Postes Abatible Swivelpole Acero Galvanizado 1 1/2" Ø x 4m; resources SQM-ELÉCTRICO [319.2 h] → SQM-ELÉCTRICO [285.6 h] |
| A2480 | Proyector de Área LED 200W - 220VAC - 50Hz, IP65, 2.200°K, 12.800 Lm | 2025-11-22 → 2025-11-18 A (-4d) | 2025-12-02 → 2025-12-23 (+21d) | 10d → 10.91d | 0% → 18% | 0.67d → 66.9d | A2490 → A2490 SS | was named Proyector de Área LED 200W - 220VAC - 50Hz, IP65, 2.200ØK, 12.800 Lm; resources SQM-ELÉCTRICO [882 h] → SQM-ELÉCTRICO [499.8 h] |
| A2470 | Luminaria LED Tipo Campana Industrial Según DS N°1 35W - 220VAC - 50Hz, IP65 o Nema4X, 2.200°K, 432,0 Lm | 2025-12-02 → 2025-11-28 A (-4d) | 2025-12-13 → 2025-12-22 (+9d) | 11d → 12d | 0% → 40% | 0.67d → 66.9d | A2480 → A2480 SS | was named Luminaria LED Tipo Campana Industrial Según DS N°1 35W - 220VAC - 50Hz, IP65 o Nema4X, 2.200ØK, 432,0 Lm |
| A2520 | Caja de Conexión Hermética 100x100x60 mm. Nema 4X con 6 Bornes de 6mm. | 2025-12-13 → 2025-12-01 A (-12d) | 2025-12-18 → 2025-12-19 (+1d) | 5d → 5.45d | 0% → 15% | 0.67d → 66.9d | A2470 → A2470 SS | resources SQM-ELÉCTRICO [308.57 h] → SQM-ELÉCTRICO [144 h] |
| A2530 | Instalación y Conexión de !quipos de Iluminación. | 2025-12-18 → 2025-12-13 A (-5d) | 2025-12-22 → 2025-12-18 (-4d) | 4d → 4.36d | 0% → 9% | 0.67d → 66.9d | A2520 → A2520 SS |  |

| ID | Task | Start | Finish | Duration | Complete | Total float | Predecessors | Other |
| --- | --- | --- | --- | --- | --- | --- | --- | --- |
| 6 | **MONTAJE SISTEMA PUESTA A TIERRA PATIO DE ESTANQUES** | 2025-12-22 → 2025-12-01 (-21d) | 2026-01-21 → 2026-01-17 (-4d) |  |  |  |  |  |
| A2550 | Cable de Cobre Desnudo Temple Blando, Nº 2/0 AWG, 19 Hebras. | 2025-12-22 → 2025-12-01 A (-21d) |  | 20d → 21.82d | 0% → 12% | 0.67d → 62.18d | A2400, A2530 → A2540 SS | was named Cable de Cobre Desnudo Temple Blando, N° 2/0 AWG, 19 Hebras.; resources SQM-ELÉCTRICO [710.24 h] → SQM-ELÉCTRICO [1080.8 h] |
| A2650 | Caja de Barra Puesta a Tierra 500x400x200mm, de Poliéster con Tapa. | 2026-01-11 → 2025-12-23 (-19d) | 2026-01-21 → 2026-01-03 (-18d) | 10d → 10.91d |  | 0.67d → 62.18d | A2440, A2550 → A2570 SS | resources SQM-ELÉCTRICO [210 h] → SQM-ELÉCTRICO [420 h] |
| 6 | **OBRAS DE INSTRUMENTACIÓN PATIO DE ESTANQUES** | 2026-01-21 → 2025-12-01 (-51d) | 2026-03-31 → 2026-01-05 (-85d) |  |  |  |  |  |
| 1 | **TENDIDO Y CONEXIONADO DE CABLES DE COMUNICACIÓN PATIO DE ESTANQUES** | 2026-02-23 → 2025-12-01 (-84d) | 2026-03-03 → 2025-12-22 (-71d) |  |  |  |  |  |
| A2660 | Cable Fibra Óptica Multimodo Exterior 12 fibras OM3 LSZH | 2026-02-23 → 2025-12-01 A (-84d) | 2026-03-03 → 2025-12-22 (-71d) | 8d → 8.73d | 0% → 76% | 0.67d → 60.59d | A2800 → A2800 SS |  |
| 2 | **TENDIDO Y CONEXIONADO DE CABLES DE INSTRUMENTACIÓN PATIO DE ESTANQUES** | 2026-03-03 → 2025-12-01 (-92d) | 2026-03-17 → 2026-01-05 (-71d) |  |  |  |  |  |
| A2680 | Cable de Instrumentación (Señales Análogas), 1x1 par #16 AWG Apantallado | 2026-03-03 → 2025-12-01 A (-92d) | 2026-03-13 → 2026-01-01 (-71d) | 10d → 13.09d | 0% → 10% | 0.67d → 60.88d | A2660 → A2670 SS | resources SQM-INSTRUMENTACIÓN [478.04 h] → SQM-INSTRUMENTACIÓN [636.4 h] |
| A2690 | Cable de Control Multiconductor de Cobre Blando, 1x3c #14 AWG, Clase 1,0 kV | 2026-03-09 → 2025-12-01 A (-98d) | 2026-03-13 → 2026-01-01 (-71d) | 4d → 4.36d | 0% → 10% | 0.67d → 60.88d |  | resources SQM-INSTRUMENTACIÓN [106.26 h] → SQM-INSTRUMENTACIÓN [162.8 h] |
| A2700 | Cable de Control Multiconductor de Cobre Blando, 1x3c #14 AWG, Clase 0,3 kV | 2026-03-13 → 2025-12-01 A (-102d) | 2026-03-17 → 2026-01-05 (-71d) | 4d → 8.73d | 0% → 10% | 0.67d → 60.88d | A2690 → A2690 SS | resources SQM-INSTRUMENTACIÓN [177.9 h] → SQM-INSTRUMENTACIÓN [251.6 h] |
| 3 | **TENDIDO Y CONEXIONADO DE CABLES DE ALIMENTACIÓN 120V PATIO DE ESTANQUES** | 2026-03-08 → 2025-12-01 (-97d) | 2026-03-17 → 2026-01-05 (-71d) |  |  |  |  |  |
| A2710 | Cable de Control Multiconductor de Cobre Blando, 1x3c #12 AWG, Clase 1,0 kV | 2026-03-08 → 2025-12-01 A (-97d) | 2026-03-17 → 2026-01-05 (-71d) | 9d → 10.91d | 0% → 10% | 0.67d → 60.88d | A2700 FF, A2650 FF → A2700 FF | resources SQM-INSTRUMENTACIÓN [263.44 h] → SQM-INSTRUMENTACIÓN [355.2 h] |
| A2770 | Conduit de acero galvanizado 1"Ø, tipo conduit ANSI C80.1 | 2026-02-10 → 2025-12-01 A (-71d) | 2026-02-15 → 2025-12-21 (-56d) | 5d → 4.36d | 0% → 15% | 0.67d → 60.59d | A2760 → A2760 FF | resources SQM-INSTRUMENTACIÓN [343.35 h] → SQM-INSTRUMENTACIÓN [346.5 h] |
| A2790 | Conduit flexible metálico con cubierta PVC 1/2" Ø | 2026-02-15 → 2025-12-01 A (-76d) | 2026-02-19 → 2025-12-23 (-58d) | 4d → 3.27d | 0% → 10% | 0.67d → 60.59d | A2770 → A2780 FF | was named Conduit flexible Metálico con cubierta PVC 1/2" Ø; resources SQM-INSTRUMENTACIÓN [52.92 h] → SQM-INSTRUMENTACIÓN [40.95 h] |
| A2800 | Caja metálica de distribución 100x100x65mm | 2026-02-19 → 2025-12-01 A (-80d) | 2026-02-23 → 2025-12-23 (-62d) | 4d → 3.27d | 0% → 15% | 0.67d → 60.59d | A2790 → A2790 SS | was named Caja metØlica de Distribución 100x100x65mm |
| A2810 | Riel unistrut 42x42x2,5 mm, acero galvanizado, tiras de 3 metros | 2026-02-05 → 2025-12-01 A (-66d) | 2026-02-09 → 2026-01-02 (-38d) | 4d → 3.27d | 0% → 28% | 49.67d → 58.32d | A2730 → A2730 FF |  |
| A2730 | EPC porta conductores de acero galvanizado 600x100x2,5mm. Incluye eclipsas, pernos y tapa dos aguas. | 2026-01-21 → 2025-12-16 (-36d) | 2026-02-05 → 2026-01-02 (-34d) | 15d → 16.36d |  | 0.67d → 58.32d | A2360, A2400, A2650 → A2360 SS | resources SQM-INSTRUMENTACIÓN → SQM-INSTRUMENTACIÓN [1344 h] |
| A2740 | EPC Curva Tipo "T", 600x100x2,5mm. Incluir tapa dos aguas, eclisas y pernos de unión. | 2026-02-05 → 2025-12-19 (-48d) | 2026-02-08 → 2025-12-21 (-49d) | 3d → 2.18d |  | 0.67d → 60.59d | A2730 → A2730 SS+2.18d | was named EPC Curva Tipo "T", 600x100x2,5mm. Incluir tapa dos aguas, eclisas y pernos de Unión.; resources SQM-INSTRUMENTACIÓN → SQM-INSTRUMENTACIÓN [33.6 h] |
| A2760 | Conduit de acero galvanizado 1"Ø, tipo conduit ANSI C80.1 | 2026-02-08 → 2025-12-20 (-50d) | 2026-02-10 → 2025-12-21 (-51d) | 2d → 1.09d |  | 0.67d → 60.59d | A2740 → A2750 | resources SQM-INSTRUMENTACIÓN → SQM-INSTRUMENTACIÓN [9.66 h] |
| 5 | **ARMADO Y MONTAJE DE EQUIPOS E INSTRUMENTOS PATIO DE ESTANQUES** | 2026-03-17 → 2025-12-22 (-85d) | 2026-03-19 → 2025-12-29 (-80d) |  |  |  |  |  |
| A2840 | Fuente Ininterrumpida de Poder Tag N°5817-UPS-1202. Conexión de UPS a TPM de planta. | 2026-03-17 → 2025-12-26 (-81d) | 2026-03-19 → 2025-12-29 (-80d) | 2d → 2.18d |  | 0.67d → 60.59d | A2660, A2530, A2710 → A2830 | resources SQM-INSTRUMENTACIÓN → SQM-INSTRUMENTACIÓN [170 h] |
| A2850 | Tubo sensor de Flujo Magnético y Transmisor Remoto Tag FE/FIT-1301 | 2026-03-19 → 2025-12-01 A (-108d) | 2026-03-20 → 2025-12-29 (-81d) | 1d → 1.09d | 0% → 52% | 0.67d → 60.59d | A2840 → A2840 FF |  |
| A2860 | Tubo sensor de Flujo Magnético y Transmisor Remoto Tag FE/FIT-1306 | 2026-03-19 → 2025-12-01 A (-108d) | 2026-03-20 → 2025-12-29 (-81d) | 1d → 1.09d | 0% → 52% | 0.67d → 60.59d |  |  |
| A2890 | Tubo sensor de Flujo Magnético y Transmisor Remoto Tag FE/FIT-1207 | 2026-03-20 → 2025-12-01 A (-109d) | 2026-03-21 → 2025-12-29 (-82d) | 1d → 1.09d | 0% → 52% | 0.67d → 60.59d | A2870 → A2880 SS |  |
| A2900 | Tubo sensor de Flujo Magnético y Transmisor Remoto Tag FE/FIT-4102 | 2026-03-21 → 2025-12-01 A (-110d) | 2026-03-22 → 2025-12-29 (-83d) | 1d → 1.09d | 0% → 10% | 0.67d → 60.59d | A2890, A2870 → A2890 SS |  |
| A2910 | Tubo sensor de Flujo Magnético y Transmisor Remoto Tag FE/FIT-4103 | 2026-03-21 → 2025-12-01 A (-110d) | 2026-03-22 → 2025-12-29 (-83d) | 1d → 1.09d | 0% → 10% | 0.67d → 60.59d |  |  |
| A2920 | Tubo sensor de Flujo Magnético y Transmisor Remoto Tag FE/FIT-4104 | 2026-03-21 → 2025-12-01 A (-110d) | 2026-03-22 → 2025-12-29 (-83d) | 1d → 1.09d | 0% → 10% | 0.67d → 60.59d |  |  |
| A2930 | Tubo sensor de Flujo Magnético y Transmisor Remoto Tag FE/FIT-5102 | 2026-03-21 → 2025-12-01 A (-110d) | 2026-03-22 → 2025-12-29 (-83d) | 1d → 1.09d | 0% → 10% | 0.67d → 60.59d |  |  |
| A2870 | Tubo sensor de Flujo Magnético y Transmisor Remoto Tag FE/FIT-1307 | 2026-03-19 → 2025-12-07 A (-102d) | 2026-03-20 → 2025-12-29 (-81d) | 1d → 1.09d | 0% → 10% | 0.67d → 60.59d |  |  |
| A2940 | Transmisor de Nivel Tag LT-1301 | 2026-03-22 → 2025-12-01 A (-111d) | 2026-03-23 → 2025-12-29 (-84d) | 1d → 1.09d | 0% → 52% | 0.67d → 60.59d | A2930 → A2930 SS |  |
| A2950 | Transmisor de Nivel Tag LT-1201 | 2026-03-22 → 2025-12-01 A (-111d) | 2026-03-23 → 2025-12-29 (-84d) | 1d → 1.09d | 0% → 52% | 0.67d → 60.59d |  |  |
| A2960 | Transmisor de Nivel Tag LT-4101 | 2026-03-22 → 2025-12-01 A (-111d) | 2026-03-23 → 2025-12-29 (-84d) | 1d → 1.09d | 0% → 10% | 0.67d → 60.59d |  |  |
| A2970 | Transmisor de Nivel Tag LT-4102 | 2026-03-22 → 2025-12-01 A (-111d) | 2026-03-23 → 2025-12-29 (-84d) | 1d → 1.09d | 0% → 10% | 0.67d → 60.59d |  |  |
| A2980 | Transmisor de Nivel Tag LT-5101 | 2026-03-23 → 2025-12-01 A (-112d) | 2026-03-24 → 2025-12-29 (-85d) | 1d → 1.09d | 0% → 10% | 0.67d → 60.59d | A2970 → A2970 SS |  |
| A2990 | Interruptor de Nivel Tag PSL-1301 | 2026-03-23 → 2025-12-01 A (-112d) | 2026-03-24 → 2025-12-29 (-85d) | 1d → 1.09d | 0% → 10% | 0.67d → 60.59d |  |  |
| A3000 | Interruptor de Nivel Tag PSL-1302 | 2026-03-23 → 2025-12-01 A (-112d) | 2026-03-24 → 2025-12-29 (-85d) | 1d → 1.09d | 0% → 10% | 0.67d → 60.59d |  |  |
| A3010 | Interruptor de Nivel Tag LCHL-1201 | 2026-03-23 → 2025-12-01 A (-112d) | 2026-03-24 → 2025-12-29 (-85d) | 1d → 1.09d | 0% → 10% | 0.67d → 60.59d |  |  |
| A3020 | Interruptor de Nivel Tag LCHL-4101 | 2026-03-24 → 2025-12-01 A (-113d) | 2026-03-25 → 2025-12-29 (-86d) | 1d → 1.09d | 0% → 10% | 0.67d → 60.59d | A3010 → A3010 SS |  |
| A3030 | Interruptor de Nivel Tag LCHL-5101 | 2026-03-24 → 2025-12-01 A (-113d) | 2026-03-25 → 2025-12-29 (-86d) | 1d → 1.09d | 0% → 10% | 0.67d → 60.59d |  |  |
| A3040 | Interruptor de Nivel Tag FS-4101 | 2026-03-24 → 2025-12-01 A (-113d) | 2026-03-25 → 2025-12-29 (-86d) | 1d → 1.09d | 0% → 10% | 0.67d → 60.59d |  |  |
| A3050 | Interruptor de Nivel Tag FS-4102 | 2026-03-24 → 2025-12-01 A (-113d) | 2026-03-25 → 2025-12-29 (-86d) | 1d → 1.09d | 0% → 10% | 0.67d → 60.59d |  |  |
| A3060 | Interruptor de Nivel Tag FS-5101 | 2026-03-25 → 2025-12-01 A (-114d) | 2026-03-26 → 2025-12-29 (-87d) | 1d → 1.09d | 0% → 10% | 0.67d → 60.59d | A3050 → A3050 SS |  |
| A3070 | Interruptor de Nivel Tag FS-8101 | 2026-03-25 → 2025-12-01 A (-114d) | 2026-03-26 → 2025-12-29 (-87d) | 1d → 1.09d | 0% → 10% | 0.67d → 60.59d |  |  |
| A3080 | Indicador de Presión (manómetro) Tag PI-1201 | 2026-03-25 → 2025-12-01 A (-114d) | 2026-03-26 → 2025-12-29 (-87d) | 1d → 1.09d | 0% → 10% | 0.67d → 60.59d |  | was named Indicador de Presión (Manómetro) Tag PI-1201 |
| A3090 | Indicador de Presión (manómetro) Tag PI-1202 | 2026-03-25 → 2025-12-01 A (-114d) | 2026-03-26 → 2025-12-29 (-87d) | 1d → 1.09d | 0% → 10% | 0.67d → 60.59d |  | was named Indicador de Presión (Manómetro) Tag PI-1202 |
| A3100 | Indicador de Presión (manómetro) Tag PI-1203 | 2026-03-26 → 2025-12-01 A (-115d) | 2026-03-27 → 2025-12-29 (-88d) | 1d → 1.09d | 0% → 10% | 0.67d → 60.59d | A3090 → A3090 SS | was named Indicador de Presión (Manómetro) Tag PI-1203 |
| A3130 | Indicador de Presión (manómetro) Tag PI-1301 | 2026-03-27 → 2025-12-01 A (-116d) | 2026-03-28 → 2025-12-29 (-89d) | 1d → 1.09d | 0% → 10% | 0.67d → 60.59d | A3100 → A3120 SS | was named Indicador de Presión (Manómetro) Tag PI-1301 |
| A3140 | Indicador de Presión (manómetro) Tag PI-1302 | 2026-03-28 → 2025-12-01 A (-117d) | 2026-03-29 → 2025-12-29 (-90d) | 1d → 1.09d | 0% → 10% | 0.67d → 60.59d | A3130, A3100 → A3130 SS | was named Indicador de Presión (Manómetro) Tag PI-1302 |
| A3150 | Indicador de Presión (manómetro) Tag PI-1303 | 2026-03-28 → 2025-12-01 A (-117d) | 2026-03-29 → 2025-12-29 (-90d) | 1d → 1.09d | 0% → 10% | 0.67d → 60.59d |  | was named Indicador de Presión (Manómetro) Tag PI-1303 |
| A3160 | Indicador de Presión (manómetro) Tag PI-1304 | 2026-03-28 → 2025-12-01 A (-117d) | 2026-03-29 → 2025-12-29 (-90d) | 1d → 1.09d | 0% → 10% | 0.67d → 60.59d |  | was named Indicador de Presión (Manómetro) Tag PI-1304 |
| A3170 | Indicador de Presión (manómetro) Tag PI-1305 | 2026-03-28 → 2025-12-01 A (-117d) | 2026-03-29 → 2025-12-29 (-90d) | 1d → 1.09d | 0% → 10% | 0.67d → 60.59d |  | was named Indicador de Presión (Manómetro) Tag PI-1305 |
| A3180 | Indicador de Presión (manómetro) Tag PI-4103 | 2026-03-29 → 2025-12-01 A (-118d) | 2026-03-30 → 2025-12-29 (-91d) | 1d → 1.09d | 0% → 10% | 0.67d → 60.59d | A3170 → A3170 SS | was named Indicador de Presión (Manómetro) Tag PI-4103 |
| A3190 | Indicador de Presión (manómetro) Tag PI-4104 | 2026-03-29 → 2025-12-01 A (-118d) | 2026-03-30 → 2025-12-29 (-91d) | 1d → 1.09d | 0% → 10% | 0.67d → 60.59d |  | was named Indicador de Presión (Manómetro) Tag PI-4104 |
| A3200 | Indicador de Presión (manómetro) Tag PI-4105 | 2026-03-29 → 2025-12-01 A (-118d) | 2026-03-30 → 2025-12-29 (-91d) | 1d → 1.09d | 0% → 10% | 0.67d → 60.59d |  | was named Indicador de Presión (Manómetro) Tag PI-4105 |
| A3210 | Indicador de Presión (manómetro) Tag PI-4106 | 2026-03-29 → 2025-12-01 A (-118d) | 2026-03-30 → 2025-12-29 (-91d) | 1d → 1.09d | 0% → 10% | 0.67d → 60.59d |  | was named Indicador de Presión (Manómetro) Tag PI-4106 |
| A3220 | Indicador de Presión (manómetro) Tag PI-4107 | 2026-03-30 → 2025-12-01 A (-119d) | 2026-03-31 → 2025-12-29 (-92d) | 1d → 1.09d | 0% → 10% | 0.67d → 60.59d | A3210 → A3210 SS | was named Indicador de Presión (Manómetro) Tag PI-4107 |
| A3240 | Indicador de Presión (manómetro) Tag PI-5103 | 2026-03-30 → 2025-12-01 A (-119d) | 2026-03-31 → 2025-12-29 (-92d) | 1d → 1.09d | 0% → 10% | 0.67d → 60.59d |  | was named Indicador de Presión (Manómetro) Tag PI-5103 |
| A3250 | Indicador de Presión (manómetro) Tag PI-5104 | 2026-03-30 → 2025-12-01 A (-119d) | 2026-03-31 → 2025-12-31 (-90d) | 1d → 1.09d | 0% → 10% | 0.67d → 58.32d | A3240 SS, A2810 → A3240 SS, A2810 SS | was named Indicador de Presión (Manómetro) Tag PI-5104 |
| A3230 | Indicador de Presión (manómetro) Tag PI-4108 | 2026-03-30 → 2025-12-12 A (-108d) | 2026-03-31 → 2025-12-29 (-92d) | 1d → 1.09d | 0% → 10% | 0.67d → 60.59d |  | was named Indicador de Presión (Manómetro) Tag PI-4108 |
| 2 | **CONTRATO ADDENDUM 01 - OOCC Y MEM MISCELÁNEOS** |  | 2026-03-31 → 2026-02-05 (-54d) |  |  |  |  |  |
| 1 | **HABILITACIÓN DATA CENTER ZONA NORTE - ÁREA 5801** | 2025-09-11 → 2025-09-21 (+10d) | 2025-12-07 → 2025-12-29 (+22d) |  |  |  |  |  |
| A3340 | Excavación para Fundaciones Cerco Perimetral Data Center | 2025-10-06 → 2025-10-16 A (+10d) | 2025-10-07 → 2025-12-15 (+69d) | 2d → 2.18d | 0% → 85% | 42d → 88.6d |  | resources SQM-OBRAS CIVILES [42.21 h] → SQM-OOCC [18.38 h] |
| A3350 | Emplantillado (G-05) para Fundaciones Cerco Perimetral Data Center | 2025-10-08 → 2025-10-18 A (+10d) | 2025-10-08 → 2025-12-15 (+68d) | 1d → 1.09d | 0% → 90% | 42d → 88.6d | A3340 → A3340 SS | resources SQM-OBRAS CIVILES [7.73 h] → SQM-OOCC [5.6 h] |
| A3370 | Armadura de Refuerzo para Fundaciones Cerco Perimetral Data Center | 2025-10-09 → 2025-10-19 A (+10d) | 2025-10-12 → 2025-12-16 (+65d) | 4d → 4.36d | 0% → 56% | 42d → 88.6d | A3350 → A3350 SS | resources SQM-OBRAS CIVILES [211.59 h] → SQM-OOCC [122.4 h] |
| A3360 | Hormigonado (G-25) para Fundaciones Cerco Perimetral Data Center | 2025-10-13 → 2025-10-23 A (+10d) | 2025-10-14 → 2025-10-25 A (+11d) | 2d → 2.18d | 0% → 100% | 42d → none | A3370 → A3370 SS | resources SQM-OBRAS CIVILES [186.48 h] → SQM-OOCC [96 h] |
| A3390 | Pilar prefabricado PP7530 Cerco Perimetral Data Center | 2025-10-15 → 2025-10-25 A (+10d) | 2025-10-21 → 2025-12-11 A (+51d) | 7d → 7.64d | 0% → 100% | 42d → none |  | resources SQM-OBRAS CIVILES [723.25 h] → SQM-OOCC [723.25 h] |
| A3380 | Cierro Fijo ACMAFOR Data Center | 2025-10-22 → 2025-11-01 A (+10d) | 2025-10-24 → 2025-12-11 A (+48d) | 3d → 3.27d | 0% → 100% | 42d → none |  | resources SQM-OBRAS CIVILES [305.11 h] → SQM-OOCC [291.25 h] |
| A3400 | Accesos a Cierro Perimetral Data Center | 2025-10-25 → 2025-11-04 A (+10d) | 2025-11-02 → 2025-12-15 (+43d) | 9d → 9.82d | 0% → 98% | 42d → 89.17d |  | resources SQM-OBRAS CIVILES [360 h] → SQM-OOCC [360 h] |
| A3410 | Estructuras Livianas, Plataforma Data Center | 2025-11-03 → 2025-11-13 A (+10d) | 2025-11-07 → 2025-12-15 (+38d) | 5d → 5.45d | 0% → 94% | 42d → 89.17d | A3400 → A3400 SS | resources SQM-ESTRUCTURA [276.69 h] → SQM-ESTRUCTURA [396.26 h] |
| A3430 | Barandas, Plataforma Data Center | 2025-11-08 → 2025-11-18 A (+10d) | 2025-11-10 → 2025-12-15 (+35d) | 3d → 3.27d | 0% → 95% | 42d → 89.17d | A3410 → A3410 SS | resources SQM-ESTRUCTURA [147.74 h] → SQM-ESTRUCTURA [150.48 h] |

| ID | Task | Start | Finish | Duration | Complete | Total float | Predecessors | Other |
| --- | --- | --- | --- | --- | --- | --- | --- | --- |
| A3420 | Parrillas de Piso, Plataforma Data Center | 2025-11-11 → 2025-11-21 A (+10d) | 2025-11-12 → 2025-12-15 (+33d) | 2d → 2.18d | 0% → 100% | 42d → 89.17d | A3430 → A3430 SS | resources SQM-ESTRUCTURA [293.75 h] → SQM-ESTRUCTURA [6.08 h] |
| A3440 | Escaleras, Plataforma Data Center | 2025-11-13 → 2025-11-23 A (+10d) | 2025-11-15 → 2025-12-15 (+30d) | 3d → 3.27d | 0% → 95% | 42d → 89.17d | A3420 → A3420 SS | resources SQM-ESTRUCTURA [15.07 h] → SQM-ESTRUCTURA [15.2 h] |
| A3450 | Grout Fundaciones Estructura Data Center | 2025-11-16 → 2025-11-26 A (+10d) | 2025-11-18 → 2025-12-16 (+28d) | 3d → 3.27d | 0% → 59% | 42d → 89.17d | A3440 → A3440 SS |  |
| A3460 | Data center TAG 5808-SDAT-1701 | 2025-09-11 → 2025-09-21 A (+10d) | 2025-10-05 → 2025-12-08 A (+64d) | 25d → 27.27d | 0% → 100% | 42d → none | A1070 SS → A1070 SS+10.91d |  |
| A3470 | Bomba dosificadora TAG 5801-BBA-3100 | 2025-09-15 → 2025-10-20 A (+35d) | 2025-09-18 → 2025-12-15 (+88d) | 4d → 4.36d | 0% → 80% | 114d → 54.18d |  |  |
| A3480 | Bomba dosificadora TAG 5801-BBA-3103 | 2025-09-15 → 2025-10-24 A (+39d) | 2025-09-18 → 2025-12-15 (+88d) | 4d → 4.36d | 0% → 80% | 114d → 54.18d |  |  |
| A3490 | Estanque IBC para almcenamiento de agua. TAG 5801-EST-3106 | 2025-09-11 → 2025-10-16 A (+35d) | 2025-09-11 → 2025-12-08 A (+88d) | 1d → 1.09d | 0% → 100% | 114d → none | A3460 SS → A3460 |  |
| A3500 | Estanque IBC para almcenamiento de agua. TAG 5801-EST-3107 | 2025-09-12 → 2025-10-17 A (+35d) | 2025-09-12 → 2025-12-08 A (+87d) | 1d → 1.09d | 0% → 100% | 114d → none |  |  |
| A3510 | Estanque IBC para almcenamiento de agua. | 2025-09-13 → 2025-10-18 A (+35d) | 2025-09-13 → 2025-12-08 A (+86d) | 1d → 1.09d | 0% → 100% | 114d → none |  |  |
| A3520 | Estanque IBC para almcenamiento de agua. | 2025-09-14 → 2025-10-19 A (+35d) | 2025-09-14 → 2025-12-08 A (+85d) | 1d → 1.09d | 0% → 100% | 114d → none |  |  |
| A3540 | Ø 1" - Cañería Acero Inoxidable - Fabricación | 2025-09-15 → 2025-10-28 A (+43d) | 2025-09-19 → 2025-12-15 (+87d) | 5d → 5.45d | 0% → 90% | 114d → 54.18d |  | resources SQM-PIPING [162 h] → SQM-PIPING [136 h] |
| A3530 | Ø 1 " - Cañería Acero Inoxidable - Montaje | 2025-09-20 → 2025-10-30 A (+40d) | 2025-09-22 → 2025-12-15 (+84d) | 3d → 3.27d | 0% → 90% | 114d → 54.18d | A3540 → A3540 FF | resources SQM-PIPING [27.26 h] → SQM-PIPING [27.92 h] |
| A3580 | Ø 1-1/4" - Cañería Acero Inoxidable - Fabricación | 2025-09-27 → 2025-11-05 A (+39d) | 2025-09-28 → 2025-12-18 (+81d) | 2d → 2.18d | 0% → 90% | 123d → 54.18d | A3550 → A3550 FF | resources SQM-PIPING [54 h] → SQM-PIPING [6 h] |
| A3570 | Ø 1-1/4 " - Cañería Acero Inoxidable - Montaje | 2025-09-29 → 2025-11-06 A (+38d) | 2025-09-30 → 2025-12-18 (+79d) | 2d → 2.18d | 0% → 90% | 123d → 54.18d | A3580 → A3580 SS+1.09d | resources SQM-PIPING [1.96 h] → SQM-PIPING [10.05 h] |
| A3600 | Ø 2" - Cañería Acero Inoxidable - Fabricación | 2025-10-01 → 2025-11-08 A (+38d) | 2025-10-03 → 2025-12-19 (+77d) | 3d → 3.27d | 0% → 82% | 123d → 54.18d | A3570 → A3570 SS | resources SQM-PIPING [122.73 h] → SQM-PIPING [111.11 h] |
| A3590 | Ø 2 " - Cañería Acero Inoxidable - Montaje | 2025-10-08 → 2025-11-09 A (+32d) | 2025-10-10 → 2025-12-29 (+80d) | 3d → 3.27d | 0% → 83% | 169d → 76.11d | A3610 FF, A3620, A3600, A3480 → A3610 FF, A3620 FF, A3600 SS+1.09d, A3480 SS | resources SQM-PIPING [36.66 h] → SQM-PIPING [33.5 h] |
| A3560 | Ø 3/4" - Cañería Acero Inoxidable - Fabricación | 2025-09-23 → 2025-12-15 (+83d) | 2025-09-24 → 2025-12-17 (+84d) | 2d → 2.18d |  | 123d → 54.18d |  |  |
| A3550 | Ø 3/4 " - Cañería Acero Inoxidable - Montaje | 2025-09-25 → 2025-12-16 (+82d) | 2025-09-26 → 2025-12-18 (+83d) | 2d → 2.18d |  | 123d → 54.18d | A3560 → A3560 SS+1.09d | resources SQM-PIPING [0.32 h] → SQM-PIPING [6.3 h] |
| A3610 | Montaje de Fitting Acero Inoxidable GL Data Center | 2025-09-23 → 2025-12-15 (+83d) | 2025-10-07 → 2025-12-29 (+83d) | 15d → 14.18d |  | 114d → 76.11d | A3530 → A3530 SS | resources SQM-PIPING [388.56 h] → SQM-PIPING [387.61 h] |
| A3620 | Válvulas Data Center (Global) | 2025-09-23 → 2025-12-15 (+83d) | 2025-10-07 → 2025-12-29 (+83d) | 15d → 14.18d |  | 114d → 76.11d | A3530, A3610 SS → A3530 SS |  |
| A3630 | Cable Fuerza 3x1c # 350 MCM | 2025-09-23 → 2025-10-18 A (+25d) | 2025-09-27 → 2025-12-15 (+79d) | 5d → 5.45d | 0% → 99% | 114d → 79.55d | A3480, A3620 SS → A3730 SS | resources SQM-ELÉCTRICO [149.48 h] → SQM-ELÉCTRICO [136.85 h] |
| A3640 | Cable Fuerza 3x1c # 500 MCM | 2025-09-28 → 2025-10-23 A (+25d) | 2025-10-01 → 2025-12-15 (+75d) | 4d → 4.36d | 0% → 99% | 114d → 79.55d | A3630 → A3630 SS | resources SQM-ELÉCTRICO [60.99 h] → SQM-ELÉCTRICO [61.76 h] |
| A3650 | Cable tierra 1x1c # 2/0 AWG (VERDE) | 2025-10-02 → 2025-10-27 A (+25d) | 2025-10-03 → 2025-12-15 (+73d) | 2d → 2.18d | 0% → 94% | 114d → 79.55d | A3640 → A3640 SS | resources SQM-ELÉCTRICO [20.8 h] → SQM-ELÉCTRICO [26.35 h] |
| A3660 | Cable Fuerza 1x4c # 12 AWG | 2025-10-04 → 2025-10-29 A (+25d) | 2025-10-05 → 2025-12-15 (+71d) | 2d → 2.18d | 0% → 91% | 114d → 79.55d | A3650 → A3650 SS | resources SQM-ELÉCTRICO [25.57 h] → SQM-ELÉCTRICO [23.38 h] |
| A3670 | Cable Fuerza 1x4c # 8 AWG | 2025-10-06 → 2025-10-31 A (+25d) | 2025-10-07 → 2025-12-16 (+70d) | 2d → 2.18d | 0% → 43% | 114d → 79.55d | A3660 → A3660 SS | resources SQM-ELÉCTRICO [16.23 h] → SQM-ELÉCTRICO [8.12 h] |
| A3680 | Cable Fuerza 1x5c # 8 AWG | 2025-10-08 → 2025-11-02 A (+25d) | 2025-10-09 → 2025-12-16 (+68d) | 2d → 2.18d | 0% → 12% | 114d → 79.55d | A3670 → A3670 SS |  |
| A3690 | Cables Control 1x5c # 14 AWG | 2025-10-10 → 2025-11-04 A (+25d) | 2025-10-11 → 2025-12-15 (+65d) | 2d → 2.18d | 0% → 91% | 114d → 79.55d | A3680 → A3680 SS | resources SQM-ELÉCTRICO [24.59 h] → SQM-ELÉCTRICO [22.49 h] |
| A3700 | Cables Control 1x3c # 12 AWG | 2025-10-12 → 2025-11-06 A (+25d) | 2025-10-13 → 2025-12-16 (+64d) | 2d → 2.18d | 0% → 53% | 114d → 79.55d | A3690 → A3690 SS |  |
| A3710 | C.A.G. 1", con Hilo y Copla de Unión, Según Norma ANSI C80-1. | 2025-10-14 → 2025-10-16 A (+2d) | 2025-10-15 → 2025-12-15 (+61d) | 2d → 2.18d | 0% → 95% | 114d → 77.29d | A3460, A3700 → A3460 | resources SQM-ELÉCTRICO [17.01 h] → SQM-ELÉCTRICO [25.2 h] |
| A3720 | Conduit Flexible de Acero de 1" de Diámetro, con Chaqueta de PVC. | 2025-10-16 → 2025-10-18 A (+2d) | 2025-10-17 → 2025-12-08 A (+52d) | 2d → 2.18d | 0% → 100% | 114d → none | A3710 → A3710 SS |  |
| A3730 | Cable Fuerza 1x3c #12 AWG | 2025-10-18 A | 2025-10-19 → 2025-12-16 (+58d) | 2d → 2.18d | 0% → 45% | 114d → 77.29d | A3710, A3720 → A3710 SS | resources SQM-ELÉCTRICO [54.8 h] → SQM-ELÉCTRICO [47.49 h] |
| A3740 | Montaje y Soportación C.A.G. 1", con Hilo y Copla de Unión, Según Norma ANSI C80-1 | 2025-10-20 A | 2025-10-21 → 2025-12-09 A (+49d) | 2d → 2.18d | 0% → 100% | 114d → none | A3730 → A3730 SS | resources SQM-ELÉCTRICO [151.2 h] → SQM-ELÉCTRICO [138.6 h] |
| A3760 | Poste Recto/Curvo de Acero Galvanizado, 6 m útiles. | 2025-10-22 A | 2025-10-27 → 2025-12-19 (+53d) | 6d → 6.55d | 0% → 33% | 114d → 77.29d |  |  |
| A3750 | Equipo de Alumbrado Público LED de 120 W, para Poste Tubular 6m.(LUZ CALIDA) | 2025-10-28 A | 2025-11-02 → 2025-12-18 (+46d) | 6d → 6.55d | 0% → 50% | 114d → 77.29d | A3740 SS, A3760, A3720 → A3740 SS, A3760 SS, A3720 SS |  |
| A3770 | Estación Local y Elementos Asociados. | 2025-11-03 A | 2025-11-04 → 2025-12-15 (+41d) | 2d → 2.18d | 0% → 93% | 114d → 80.14d | A3750 → A3750 SS |  |
| A3780 | Cable de Cobre electrolítico Desnudo, 2/0 AWG | 2025-11-05 A | 2025-11-07 → 2025-12-15 (+38d) | 3d → 3.27d | 0% → 86% | 114d → 80.14d | A3770 → A3770 SS | resources SQM-ELÉCTRICO [95.04 h] → SQM-ELÉCTRICO [144 h] |
| A3800 | Tablero de Distribución de Fuerza y Alumbrado TAG: 5870-PNL-3101 | 2025-11-17 A | 2025-11-19 → 2025-12-28 (+39d) | 3d → 3.27d | 0% → 93% | 114d → 77.29d | A3790 → A3790 FF |  |
| A3810 | Tablero de Alumbrado TAG: 5870-TDA-3103 | 2025-11-20 A | 2025-11-22 → 2025-12-28 (+36d) | 3d → 3.27d | 0% → 93% | 114d → 77.29d | A3800 → A3800 SS |  |
| A3820 | Tablero Eléctrico Orion TAG: 5870-PNL-3105 | 2025-11-23 A | 2025-11-25 → 2025-12-28 (+33d) | 3d → 3.27d | 0% → 93% | 114d → 77.29d | A3810 → A3810 SS |  |
| A3830 | Sistema de Almacenamiento de Energía BESS TAG: 5870-BCB-3102 | 2025-11-26 A | 2025-11-28 → 2025-12-28 (+30d) | 3d → 3.27d | 0% → 90% | 114d → 77.29d | A3820 → A3820 SS |  |
| A3790 | Subestación Unitaria TAG: 5870-SEU-3100 | 2025-11-08 → 2025-12-18 (+40d) | 2025-11-16 → 2025-12-28 (+42d) | 9d → 9.82d |  | 114d → 77.29d |  | was named SubEstación Unitaria TAG: 5870-SEU-3100 |
| A3840 | Switch cisco catalyst, 9500, 24x1 y colocación de TAGs | 2025-11-29 A | 2025-11-29 → 2025-12-27 (+28d) | 1d → 1.09d | 0% → 90% | 114d → 77.29d | A3830 → A3830 SS | was named Switch cisco catalyst, 9500, 24x1 y colocaciØn de TAGs |
| A3850 | Switch networking interr. Connectrix DS-6610B-L | 2025-11-30 A | 2025-11-30 → 2025-12-27 (+27d) | 1d → 1.09d | 0% → 97% | 114d → 77.29d | A3840 → A3840 SS |  |
| A3860 | Servidores, poweredge, R660, DELL | 2025-12-01 A | 2025-12-01 → 2025-12-27 (+26d) | 1d → 1.09d | 0% → 90% | 114d → 77.29d | A3850 → A3850 SS |  |
| A3870 | Servidores, poweredge, 500T, DELL | 2025-12-02 A | 2025-12-02 → 2025-12-27 (+25d) | 1d → 1.09d | 0% → 90% | 114d → 77.29d | A3860 → A3860 SS |  |
| A3880 | TRANSCEIVER,QSFP,100GBASE,LR4 | 2025-12-03 A | 2025-12-03 → 2025-12-27 (+24d) | 1d → 1.09d | 0% → 90% | 114d → 77.29d | A3870 → A3870 SS |  |
| A3890 | Conversor,SFP,TRANSCEIVER,10GBASE-T | 2025-12-04 A | 2025-12-04 → 2025-12-27 (+23d) | 1d → 1.09d | 0% → 90% | 114d → 77.29d | A3880 → A3880 SS |  |
| A3900 | Cable Alimentación Eléctrica de Switches. Considera Suministro y Preparación | 2025-12-05 A | 2025-12-07 → 2025-12-13 A (+6d) | 3d → 3.27d | 0% → 100% | 114d → none | A3890 → A3890 SS | resources SQM-INSTRUMENTACIÓN [126 h] → SQM-INSTRUMENTACIÓN [168 h] |
| A3910 | Protecciones Eléctricas (CB-01;CB-02;CB-03;CB-04;CB-01R;CB-02R;CB-03R;CB-04R), y Borneras | 2025-12-05 A | 2025-12-07 → 2025-12-29 (+22d) | 3d → 3.27d | 0% → 90% | 114d → 76.32d | A3900 FF, A3590 → A3900 SS, A3590 SS |  |
| A3920 | Excavación para Curce de Camino Norte Línes de Gas | 2025-09-15 → 2025-11-02 A (+48d) | 2025-09-17 → 2025-12-15 (+89d) | 3d → 1.09d | 0% → 68% | 0d → 75.23d |  | was named Excavación para Curce de Camino Norte Líneas de Gas; resources SQM-OBRAS CIVILES [149.49 h] → SQM-OOCC [378 h] |
| A3940 | Transporte de Material a Botadero | 2025-09-18 → 2025-11-03 A (+46d) | 2025-09-19 → 2025-12-14 A (+86d) | 2d → 1.09d | 0% → 100% | 0d → none | A3920, A3960 → A3920 SS, A3960 FF | resources SQM-OBRAS CIVILES → SQM-OOCC [14.4 h] |
| A3950 | Arena para Relleno de Curce de Camino Norte Línes de Gas | 2025-09-29 → 2025-11-13 A (+45d) | 2025-09-30 → 2025-12-15 (+76d) | 2d → 2.18d | 0% → 100% | 0d → 84.01d |  | was named Arena para Relleno de Curce de Camino Norte Líneas de Gas; resources SQM-OBRAS CIVILES [24.77 h] → SQM-OOCC [67.07 h] |
| A3930 | Relleno para Curce de Camino Norte Línes de Gas | 2025-09-29 → 2025-11-19 A (+51d) | 2025-10-04 → 2025-12-12 A (+69d) | 6d → 3.27d | 0% → 100% | 7d → none | A4000 FF → A4000 SS | was named Relleno para Curce de Camino Norte Líneas de Gas; resources SQM-OBRAS CIVILES [32.17 h] → SQM-OOCC [170.4 h] |
| A3960 | Excavación para Curce de Camino Sur Línes de Gas | 2025-09-11 → 2025-10-29 A (+48d) | 2025-09-17 → 2025-12-12 A (+86d) | 7d → 5.45d | 0% → 100% | 0d → none | A1070 SS → A4020 SS | was named Excavación para Curce de Camino Sur Líneas de Gas; resources SQM-OBRAS CIVILES [372.75 h] → SQM-OOCC [2094.75 h] |
| A3980 | Transporte de Material a Botadero | 2025-09-20 → 2025-11-04 A (+45d) | 2025-09-22 → 2025-12-13 A (+82d) | 3d → 3.27d | 0% → 100% | 0d → none |  | resources SQM-OBRAS CIVILES → SQM-OOCC [79.8 h] |
| A3990 | Arena para Relleno de Curce de Camino Sur Línes de Gas | 2025-09-23 → 2025-11-07 A (+45d) | 2025-09-28 → 2025-12-13 A (+76d) | 6d → 6.55d | 0% → 100% | 0d → none |  | was named Arena para Relleno de Curce de Camino Sur Líneas de Gas; resources SQM-OBRAS CIVILES [58.83 h] → SQM-OOCC [123.89 h] |
| A3970 | Relleno para Curce de Camino Sur Línes de Gas | 2025-10-05 → 2025-11-22 A (+48d) | 2025-10-10 → 2025-12-10 A (+61d) | 6d → 3.27d | 0% → 100% | 7d → none |  | was named Relleno para Curce de Camino Sur Líneas de Gas; resources SQM-OBRAS CIVILES [81.02 h] → SQM-OOCC [950.4 h] |
| A4000 | Camisa de 8" para Cruce de Camino Norte y Sur, Línea de Gas | 2025-10-01 → 2025-11-15 A (+45d) | 2025-10-04 → 2025-12-18 (+75d) | 4d → 4.36d | 0% → 26% | 0d → 84.01d | A3950 → A3950 SS | resources SQM-OBRAS CIVILES [1359.75 h] → SQM-OOCC [441 h] |
| A4020 | Ø 4" - Cañería Acero Carbono ASTM A106 Gr. B (100mm) | 2025-10-05 → 2025-10-09 A (+4d) | 2025-10-24 → 2025-12-26 (+63d) | 20d → 21.82d | 0% → 49% | 99d → 66.08d | A4000 → A6040 SS | resources SQM-PIPING [2644.41 h] → SQM-PIPING [3233.15 h] |
| A4010 | Ø 110 mm - Cañería HDPE, PE 100, PN10 (4") | 2025-10-01 → 2025-11-19 A (+49d) | 2025-10-05 → 2025-12-19 (+75d) | 5d → 5.45d | 0% → 24% | 0d → 86.36d |  | resources SQM-PIPING [281.12 h] → SQM-PIPING [681.78 h] |
| A4030 | Montaje de Fitting para Líneas GNL | 2025-10-06 → 2025-10-09 A (+3d) | 2025-10-29 → 2025-12-29 (+61d) | 24d → 54.55d | 0% → 74% | 153d → 76.11d | A4010 → A4020 SS, A4010 SS | resources SQM-PIPING [1052.25 h] → SQM-PIPING [738.95 h] |
| A4040 | Válvulas Línea de Gas (Global) | 2025-10-18 → 2025-10-09 A (-9d) | 2025-10-29 → 2025-12-29 (+61d) | 12d → 54.55d | 0% → 74% | 153d → 76.11d | A4030 FF → A4030 SS |  |
| A4050 | TIE-IN 5801-001 Acero Carbono Ø4" | 2025-10-29 → 2025-12-26 (+58d) | 2025-10-29 → 2025-12-29 (+61d) | 1d → 3.27d |  | 153d → 76.11d |  |  |
| A4060 | TIE-IN 5801-002 Acero Carbono Ø4" | 2025-10-29 → 2025-12-26 (+58d) | 2025-10-29 → 2025-12-29 (+61d) | 1d → 3.27d |  | 153d → 76.11d |  |  |
| A4070 | Soportes tipo SOP 01-A | 2025-10-06 → 2025-10-30 A (+24d) | 2025-10-11 → 2025-12-17 (+67d) | 6d → 6.55d | 0% → 60% | 0d → 66.08d | A4010 → A4020 SS+22.91d |  |
| A4080 | Soportes tipo SOP 01-B | 2025-10-12 → 2025-12-17 (+66d) | 2025-10-17 → 2025-12-24 (+68d) | 6d → 6.55d |  | 0d → 66.08d |  |  |
| A4090 | Soportes tipo SOP 02 | 2025-10-19 → 2025-12-24 (+66d) | 2025-10-24 → 2025-12-30 (+67d) | 6d → 6.55d |  | 99d → 66.08d | A4080, A4020 FF → A4080 | resources SQM-PIPING [105.38 h] → SQM-PIPING [97.88 h] |
| 3 | **ESTANQUE PIVOTE** | 2025-09-18 → 2025-09-11 (-7d) | 2026-03-31 → 2026-02-05 (-54d) |  |  |  |  |  |
| 1 | **ÁREA 5817 - SECTOR TK-6060** | 2025-10-18 → 2025-09-11 (-37d) | 2026-03-31 → 2026-02-05 (-54d) |  |  |  |  |  |
| A4170 | Grating FRP T3232 Bomba Sumidero | 2025-11-19 → 2025-10-03 A (-47d) | 2025-11-20 → 2025-12-10 A (+20d) | 2d → 2.18d | 0% → 100% | 42d → none | A3450 → A4150 SS | resources SQM-OBRAS CIVILES [4.55 h] → SQM-OOCC [4.55 h] |

| ID | Task | Start | Finish | Duration | Complete | Total float | Predecessors | Other |
| --- | --- | --- | --- | --- | --- | --- | --- | --- |
| A4180 | Estructura Liviana de Bomba Sumidero | 2025-11-21 → 2025-10-05 A (-47d) | 2025-11-22 → 2025-12-13 A (+21d) | 2d → 2.18d | 0% → 100% | 42d → none |  | resources SQM-OBRAS CIVILES [5.47 h] → SQM-OOCC [5.47 h] |
| A4190 | Excavación Cruce de Camino 1 | 2025-10-18 → 2025-09-24 A (-24d) | 2025-10-24 → 2025-12-15 (+52d) | 7d → 7.64d | 0% → 92% | 0d → 49.98d | A3970, A4070, A4080 → A4130 SS | resources SQM-OBRAS CIVILES [144.79 h] → SQM-OOCC [513.98 h] |
| A4210 | Relleno Estructural Cruce de Camino 1 | 2025-10-25 → 2025-10-01 A (-24d) | 2025-10-27 → 2025-12-15 (+49d) | 3d → 3.27d | 0% → 100% | 47d → 49.98d | A4190 → A4190 SS | resources SQM-OBRAS CIVILES [41.77 h] → SQM-OOCC [130.34 h] |
| A4230 | Excavación Cruce de Camino 2 | 2025-10-25 → 2025-10-01 A (-24d) | 2025-10-29 → 2025-12-15 (+47d) | 5d → 5.45d | 0% → 91% | 143d → 87.23d | A4190 → A4190 SS | resources SQM-OBRAS CIVILES [133.88 h] → SQM-OOCC [367.13 h] |
| A4220 | Cama de Arena Cruce de Camino 1 | 2025-10-28 → 2025-10-04 A (-24d) | 2025-10-28 → 2025-12-15 (+48d) | 1d → 1.09d | 0% → 100% | 47d → 49.98d | A4210 → A4210 SS | resources SQM-OBRAS CIVILES [2.61 h] → SQM-OOCC [8.44 h] |
| A4250 | Relleno Estructural Cruce de Camino 2 | 2025-10-30 → 2025-10-06 A (-24d) | 2025-11-02 → 2025-12-15 (+43d) | 4d → 4.36d | 0% → 100% | 143d → 87.23d | A4230 → A4230 SS | resources SQM-OBRAS CIVILES [32.4 h] → SQM-OOCC [93.11 h] |
| A4260 | Cama de Arena Cruce de Camino 2 | 2025-11-03 → 2025-10-10 A (-24d) | 2025-11-03 → 2025-12-15 (+42d) | 1d → 1.09d | 0% → 100% | 143d → 87.23d | A4250 → A4250 SS | resources SQM-OBRAS CIVILES [2.24 h] → SQM-OOCC [6.03 h] |
| A4200 | Relleno compactado Cruce de Camino 1 | 2025-11-03 → 2025-10-17 A (-17d) | 2025-11-08 → 2025-12-15 (+37d) | 6d → 6.55d | 0% → 100% | 138d → 87.23d | A4280 → A4280 SS | resources SQM-OBRAS CIVILES [13.67 h] → SQM-OOCC [93.73 h] |
| A4240 | Relleno compactado Cruce de Camino 2 | 2025-11-11 → 2025-10-28 A (-14d) | 2025-11-12 → 2025-12-15 (+33d) | 2d → 2.18d | 0% → 100% | 136d → 87.23d | A4300, A4200, A4260 → A4300 SS, A4200 SS, A4260 SS | resources SQM-OBRAS CIVILES [17.94 h] → SQM-OOCC [66.95 h] |
| A4280 | Cañería 12" Cruce de Camino 1 | 2025-10-25 → 2025-10-08 A (-17d) | 2025-11-02 → 2025-12-15 (+43d) | 9d → 9.82d | 0% → 100% | 42d → 77.6d | A4190 → A4270 SS+3.27d | resources SQM-OBRAS CIVILES [510.09 h] → SQM-OOCC [651.74 h] |
| A4300 | Cañería 12" Cruce de Camino 2 | 2025-11-03 → 2025-10-20 A (-14d) | 2025-11-10 → 2025-12-15 (+35d) | 8d → 8.73d | 0% → 100% | 42d → 87.23d | A4280, A4220 → A4290 SS+3.27d | resources SQM-OBRAS CIVILES [396.74 h] → SQM-OOCC [481.72 h] |
| A4320 | Estanque Pivote y Plataforma Sumerior TAG: 5817-EST-6060 | 2025-10-18 → 2025-10-01 A (-17d) | 2025-12-06 → 2025-12-14 A (+8d) | 50d → 54.55d | 0% → 100% | 0d → none | A4190 SS → A4140 SS |  |
| A4340 | Bomba Centrífuga y Motor TAG: 5817-BBA-6069; 5817-MTR-6070 | 2025-11-11 → 2025-10-03 A (-39d) | 2025-11-14 → 2025-12-16 (+32d) | 4d → 4.36d | 0% → 65% | 42d → 48.64d | A4300 → A4150 SS |  |
| A4350 | Bomba Centrífuga y Motor TAG: 5817-BBA-6072; 5817-MTR-6073 | 2025-11-15 → 2025-10-03 A (-43d) | 2025-11-18 → 2025-12-10 A (+22d) | 4d → 4.36d | 0% → 100% | 42d → none | A4340 → A4340 SS |  |
| A4360 | Bomba Centrífuga y Motor TAG: 5817-BBA-6077; 5817-MTR-6078 | 2025-11-19 → 2025-10-07 A (-43d) | 2025-11-22 → 2025-12-16 (+24d) | 4d → 4.36d | 0% → 65% | 42d → 48.64d |  |  |
| A4330 | Agitador Vertical Estanque Pivote TAG: 5817-AGT-6061 / 5817-MTR-6062 | 2025-12-07 → 2025-11-10 A (-27d) | 2025-12-16 → 2025-12-17 (+1d) | 10d → 10.91d | 0% → 80% | 18d → 48.64d | A4320 → A4320 FF |  |
| A4370 | Bomba Sumidero y Motor TAG: 5817-BBS-6075; 5817-MTR-6076 |  | 2025-12-20 → 2025-12-21 (+1d) | 4d → 4.36d |  | 18d → 62.14d |  |  |
| A4380 | Ø 6" - Cañería Acero Inoxidable - Fabricación | 2025-10-18 → 2025-10-05 A (-13d) | 2025-12-18 → 2026-01-11 (+24d) | 62d → 49.09d | 0% → 44% | 0d → 38.14d | A4320 SS → A4320 SS+4.36d | resources SQM-PIPING [5915 h] → SQM-PIPING [8216.02 h] |
| A4440 | Ø 4" - Cañería CPVC, SCH 80 - Fabricación | 2025-12-22 → 2025-12-01 A (-21d) | 2026-01-02 → 2026-02-04 (+33d) | 12d → 13.09d | 0% → 8% | 17d → 38.87d | A4430 → A4430 FF |  |
| A4390 | Ø 4" - Cañería Acero Inoxidable - Fabricación | 2025-12-05 → 2025-12-29 (+24d) | 2025-12-18 → 2026-01-13 (+26d) | 14d → 15.27d |  | 20d → 38.87d | A4380 FF → A4380 FF+2.18d | resources SQM-PIPING [532 h] → SQM-PIPING [813.2 h] |
| A4400 | Ø 2" - Cañería Acero Inoxidable - Fabricación | 2025-12-21 → 2026-01-13 (+23d) | 2026-01-01 → 2026-01-26 (+25d) | 12d → 13.09d |  | 18d → 38.87d | A4330, A4370 → A4390, A4330, A4370 | resources SQM-PIPING [903.21 h] → SQM-PIPING [1416.4 h] |
| A4450 | Ø 2" - Cañería CPVC, SCH 80 - Fabricación | 2026-01-03 → 2026-01-23 (+20d) | 2026-01-05 → 2026-01-26 (+21d) | 3d → 3.27d |  | 17d → 47.7d | A4440 → A4440 SS |  |
| A4420 | Ø 1-1/2" - Cañería Acero Inoxidable - Fabricación | 2025-10-25 → 2026-01-26 (+93d) | 2025-10-26 → 2026-01-29 (+95d) | 2d → 2.18d |  | 99d → 38.87d | A4090 → A4400, A4090 | resources SQM-PIPING [18 h] → SQM-PIPING [6 h] |
| A4410 | Ø 1" - Cañería Acero Inoxidable - Fabricación | 2025-10-27 → 2026-01-29 (+94d) | 2025-10-29 → 2026-02-01 (+95d) | 3d → 3.27d |  | 99d → 38.87d |  |  |
| A4430 | Ø 8" - Cañería CPVC, SCH 80 - Fabricación | 2025-12-19 → 2026-02-01 (+44d) | 2025-12-21 → 2026-02-04 (+45d) | 3d → 3.27d |  | 17d → 38.87d | A4380 → A4410 | resources SQM-PIPING [19.25 h] → SQM-PIPING [30.25 h] |
| A4490 | Ø 6" - Cañería Acero Inoxidable - Montaje | 2025-12-19 → 2025-10-12 A (-68d) | 2026-01-07 → 2026-01-22 (+15d) | 20d → 65.45d | 0% → 41% | 0d → 38.14d | A4380 → A4380 SS+7.64d | resources SQM-PIPING [3785.39 h] → SQM-PIPING [4222.01 h] |
| A4470 | Ø 4" - Cañería CPVC, SCH 80 - Montaje | 2025-12-25 → 2025-12-01 A (-24d) | 2026-01-07 → 2026-01-26 (+19d) | 14d → 15.27d | 0% → 45% | 80d → 47.7d | A4460, A4430 → A4460 FF | resources SQM-PIPING [302.4 h] → SQM-PIPING [380.58 h] |
| A4500 | Ø 4" - Cañería Acero Inoxidable - Montaje | 2026-01-08 → 2026-01-22 (+14d) | 2026-01-19 → 2026-02-04 (+16d) | 12d → 13.09d |  | 0d → 38.52d | A4490, A4390 → A4490 | resources SQM-PIPING [229.81 h] → SQM-PIPING [130.62 h] |
| A4510 | Ø 2" - Cañería Acero Inoxidable - Montaje | 2026-01-20 → 2026-01-22 (+2d) | 2026-01-29 → 2026-02-02 (+4d) | 10d → 10.91d |  | 0d → 38.52d | A4500, A4450 SS, A4400 → A4500 SS | resources SQM-PIPING [568.1 h] → SQM-PIPING [348.44 h] |
| A4460 | Ø 8" - Cañería CPVC, SCH 80 - Montaje | 2025-12-22 → 2026-01-23 (+32d) | 2025-12-24 → 2026-01-26 (+33d) | 3d → 3.27d |  | 80d → 47.7d | A4320 SS, A4430 → A4450 SS, A4320 | resources SQM-PIPING [39.9 h] → SQM-PIPING [35.13 h] |
| A4530 | Ø 1" - Cañería Acero Inoxidable - Montaje | 2026-02-01 → 2026-01-30 (-2d) | 2026-02-05 → 2026-02-04 (-1d) | 5d → 5.45d |  | 0d → 38.52d | A4520 → A4550 FF, A4520 FF, A4540 FF |  |
| A4480 | Ø 2" - Cañería CPVC, SCH 80 - Montaje | 2026-01-08 → 2026-02-02 (+25d) | 2026-01-10 → 2026-02-05 (+26d) | 3d → 3.27d |  | 80d → 38.14d | A4240, A4470 → A4470 FF, A4660 SS, A4240 | resources SQM-PIPING [17.32 h] → SQM-PIPING [22.5 h] |
| A4520 | Ø 1-1/2" - Cañería Acero Inoxidable - Montaje | 2026-01-30 → 2026-02-02 (+3d) | 2026-01-31 → 2026-02-04 (+4d) | 2d → 2.18d |  | 0d → 38.52d |  |  |
| A4540 | Montaje de Fitting para Líneas TK-6060 | 2025-10-18 → 2025-10-05 A (-13d) | 2026-01-18 → 2026-02-04 (+17d) | 93d → 104.73d | 0% → 50% | 22d → 38.52d |  | resources SQM-PIPING [6575.76 h] → SQM-PIPING [6657.54 h] |
| A4550 | Válvulas Sector TK-6060 (Global) | 2025-10-18 → 2025-10-05 A (-13d) | 2026-01-18 → 2026-02-04 (+17d) | 93d → 104.73d | 0% → 50% | 57d → 38.52d |  |  |
| A4580 | Soporte N°002 - Pedestal, Acero Estructural para Tuberías Diámetros Pequeños | 2026-01-14 → 2025-10-24 A (-82d) | 2026-01-16 → 2025-12-28 (-19d) | 3d → 4.36d | 0% → 86% | 1d → 38.14d | A4570 → A4570 FF | resources SQM-PIPING [12.75 h] → SQM-PIPING [8.5 h] |
| A4560 | Soporte N°001A - Pedestal con Repisa de Acero Estructural para Tuberías Diámetros Pequeños | 2026-01-08 → 2025-12-15 (-24d) | 2026-01-08 → 2025-12-17 (-22d) | 1d → 2.18d |  | 1d → 38.14d | A4380, A4490 → A4380 SS, A4490 SS |  |
| A4570 | Soporte N°001B - Pedestal con Repisa de Acero Estructural para Tuberías Diámetros Pequeños | 2026-01-09 → 2025-12-17 (-23d) | 2026-01-13 → 2025-12-28 (-16d) | 5d → 10.91d |  | 1d → 38.14d |  |  |
| A4590 | Soporte N°003A - Pedestal Tipo TEE, Acero Estructural para Tuberías Diámetros Pequeños | 2026-01-17 → 2025-12-28 (-20d) | 2026-01-19 → 2026-01-01 (-18d) | 3d → 4.36d |  | 1d → 38.14d |  |  |
| A4600 | Soporte N°003B - Pedestal Tipo TEE, Acero Estructural para Tuberías Diámetros Pequeños | 2026-01-20 → 2026-01-01 (-19d) | 2026-01-25 → 2026-01-07 (-18d) | 6d → 6.55d |  | 1d → 38.14d |  |  |
| A4610 | Soporte N°004 - Arco Tipo Vertical, Acero Estructural | 2026-01-26 → 2026-01-08 (-18d) | 2026-01-27 → 2026-01-10 (-17d) | 2d → 2.18d |  | 1d → 38.14d |  |  |
| A4620 | Soporte N°005 - Pedestal y Voladizo Tipo Simple, Acero Estructural para Tuberías Diámetros Pequeños | 2026-01-28 → 2026-01-10 (-18d) | 2026-01-31 → 2026-01-14 (-17d) | 4d → 4.36d |  | 1d → 38.14d |  |  |
| A4630 | Soporte N°006 - Pedestal y Voladizo Tipo Simple, Acero Estructural para Tuberías Diámetros Pequeños | 2026-01-28 → 2026-01-14 (-14d) | 2026-01-31 → 2026-01-18 (-13d) | 4d → 4.36d |  | 1d → 38.14d | A4620 SS → A4620 |  |
| A4640 | Soporte Primario Tipo "U" (Para Uso General) | 2026-02-01 → 2026-01-18 (-14d) | 2026-02-13 → 2026-02-02 (-11d) | 13d → 14.18d |  | 44d → 38.14d | A4630, A4550 → A4630 | resources SQM-PIPING [86.62 h] → SQM-PIPING [5 h] |
| A4650 | TIE-IN N° 1433 - 5836-EST-3015 a Línea Proyectada 100-DR-5817-P2-6630 | 2026-02-04 → 2026-01-30 (-5d) | 2026-02-05 → 2026-02-01 (-4d) | 2d → 2.18d |  | 54d → 40.7d | A4530 FF → A4530 SS |  |
| A4660 | TIE-IN N° 1434 - 5836-EST-3015 a Línea Proyectada 100-DR-5817-P2-6610 | 2026-02-14 → 2026-02-02 (-12d) | 2026-02-15 → 2026-02-04 (-11d) | 2d → 2.18d |  | 44d → 38.14d | A4650 FF, A4640 → A4650 SS, A4640 |  |
| A4670 | Ø 6" - Aislación de Lana Mineral de 1,5" de espesor | 2026-01-08 → 2025-11-05 A (-64d) |  | 15d → 39.27d | 0% → 20% | 47d → 51.61d | A4490 → A4490 FF | resources SQM-PIPING [6005.38 h] → SQM-PIPING [6664.65 h] |
| A4680 | Ø 4" - Aislación de Lana Mineral de 1,5" de espesor | 2026-01-23 → 2025-12-01 A (-53d) | 2026-01-29 → 2026-02-04 (+6d) | 7d → 7.64d | 0% → 10% | 47d → 38.52d | A4500, A4670 → A4500 FF, A4670 SS | resources SQM-PIPING [412.8 h] → SQM-PIPING [258.72 h] |
| A4690 | Ø 2" - Aislación de Lana Mineral de 1,5" de espesor | 2026-01-30 → 2026-01-20 (-10d) | 2026-02-12 → 2026-02-04 (-8d) | 14d → 15.27d |  | 47d → 38.52d | A4510 FF, A4680 → A4510 FF, A4680 FF | resources SQM-PIPING [32 h] → SQM-PIPING [52.3 h] |
| A4710 | Ø 3/4" - Cañería Acero Inoxidable - Fabricación | 2026-02-14 → 2026-01-10 (-35d) | 2026-02-20 → 2026-01-25 (-26d) | 7d → 15.27d |  | 30d → 42.14d | A4720 → A4720 FF |  |
| A4700 | Ø 1" - Cañería Acero Inoxidable - Fabricación | 2026-02-06 → 2026-01-17 (-20d) | 2026-02-12 → 2026-02-01 (-11d) | 7d → 15.27d |  | 0d → 42.14d | A4410, A4530 → A4410 FF |  |
| A4720 | Ø 1" - Cañería Acero Inoxidable - Montaje | 2026-02-09 → 2026-01-20 (-20d) | 2026-02-13 → 2026-01-25 (-19d) | 5d → 5.45d |  | 30d → 42.14d | A4700 SS+3d, A4410 → A4700 SS+3.27d | resources SQM-PIPING [174.09 h] → SQM-PIPING [173.99 h] |
| A4730 | Ø 3/4" - Cañería Acero Inoxidable - Montaje | 2026-02-21 → 2026-01-22 (-30d) | 2026-02-23 → 2026-01-25 (-29d) | 3d → 3.27d |  | 30d → 42.14d | A4740 FF, A4750 FF, A4710 → A4740 FF, A4750 FF, A4710 FF | resources SQM-PIPING [12.35 h] → SQM-PIPING [8.64 h] |
| A4740 | Fitting Líneas de Aire (Global) | 2026-02-06 → 2026-01-17 (-20d) | 2026-02-23 → 2026-01-25 (-29d) | 18d → 8.73d |  | 30d → 42.14d |  |  |
| A4750 | Válvulas Líneas de Aire (Global) | 2026-02-06 → 2026-01-17 (-20d) | 2026-02-23 → 2026-01-25 (-29d) | 18d → 8.73d |  | 0d → 42.14d |  |  |
| A4760 | TIE-IN N° 1425 - 150-IA-5771-I1-2486 a Línea Proyectada 25-IA-5771-I1-1630 | 2026-02-20 → 2026-01-21 (-30d) | 2026-02-23 → 2026-01-25 (-29d) | 4d → 4.36d |  | 30d → 42.14d |  |  |
| A4770 | TIE-IN N° 1426 - 25-IA-5871-I1-1644 a Línea Proyectada 25-IA-5871-I1-1634 | 2026-02-24 → 2026-01-25 (-30d) | 2026-02-24 → 2026-01-26 (-29d) | 1d → 1.09d |  | 30d → 42.14d |  |  |
| A4780 | TIE-IN N° 1427 - 25-IA-5871-I1-1644 a Línea Proyectada 25-IA-5871-I1-1638 | 2026-02-25 → 2026-01-26 (-30d) | 2026-02-25 → 2026-01-28 (-28d) | 1d → 1.09d |  | 30d → 42.14d |  |  |
| A4790 | TIE-IN N° 1428 - Líne Existente (TAG por Confirmar) a Línea Proyectada 25-IA-5871-I1-1642 | 2026-02-26 → 2026-01-28 (-29d) | 2026-02-26 → 2026-01-29 (-28d) | 1d → 1.09d |  | 30d → 42.14d |  | was named TIE-IN N° 1428 - LØne Existente (TAG por Confirmar) a Línea Proyectada 25-IA-5871-I1-1642 |
| A4800 | TIE-IN N° 1429 - Línea Existente (TAG por Confirmar) a Línea Proyectada 25-IA-5871-I1-1646 | 2026-02-27 → 2026-01-29 (-29d) | 2026-02-27 → 2026-01-30 (-28d) | 1d → 1.09d |  | 30d → 42.14d |  |  |
| A4810 | TIE-IN N° 1430 - Línea Existente (TAG por Confirmar) a Línea Proyectada 25-IA-5871-I1-1649 | 2026-02-28 → 2026-01-30 (-29d) | 2026-02-28 → 2026-01-31 (-28d) | 1d → 1.09d |  | 30d → 42.14d |  |  |
| A4820 | EPC y Copla Porta Conductores 600x100mm e:2,5 mm, tiras 3m. Incluir tapa dos aguas, eclisas y pernos de unión. | 2025-12-05 → 2025-11-08 A (-27d) | 2025-12-16 → 2025-12-19 (+3d) | 12d → 13.09d | 0% → 64% | 86d → 48.64d | A4360, A4330 FF → A4360 SS, A4330 SS | was named EPC y Copla Porta Conductores 600x100mm e:2,5 mm, tiras 3m. Incluir tapa dos aguas, eclisas y pernos de Unión.; resources SQM-ELÉCTRICO [616 h] → SQM-ELÉCTRICO [1120 h] |
| A4830 | EPC Curva de 90°, 600x100mm e:2,5mm. Incluir tapa dos aguas, eclisas y pernos de unión. | 2025-12-14 → 2025-11-17 A (-27d) | 2025-12-16 → 2025-12-19 (+3d) | 3d → 3.27d | 0% → 47% | 86d → 61.89d |  | was named EPC Curva de 90°, 600x100mm e:2,5mm. Incluir tapa dos aguas, eclisas y pernos de Unión.; resources SQM-ELÉCTRICO [72.8 h] → SQM-ELÉCTRICO [56 h] |
| A4840 | Canalización y Copla de Conduit de Acero Galvanizado 6"Ø, Conduit ANSI C80.1 | 2025-12-17 → 2025-11-20 A (-27d) | 2025-12-23 → 2025-12-24 (+1d) | 7d → 7.64d | 0% → 17% | 86d → 74.86d | A4830 → A4830 SS | resources SQM-ELÉCTRICO [136.37 h] → SQM-ELÉCTRICO [441.21 h] |
| A4900 | Canalización y Copla de Conduit de Acero Galvanizado 1 ½"Ø, Conduit ANSI C80.1 | 2026-02-24 → 2025-11-23 A (-93d) | 2026-03-02 → 2025-12-23 (-69d) | 7d → 7.64d | 0% → 36% | 0d → 48.64d | A4750 → A4880 FF | was named Canalización y Copla de Conduit de Acero Galvanizado 1 1/2"Ø, Conduit ANSI C80.1; resources SQM-ELÉCTRICO [205.38 h] → SQM-ELÉCTRICO [441 h] |
| A4850 | Canalización y Copla de Conduit Flexible Metálico con Cubierta PVC 6" Ø Trabajo Pesado | 2025-12-24 → 2025-11-27 A (-27d) | 2025-12-26 → 2025-12-20 (-6d) | 3d → 3.27d | 0% → 15% | 86d → 74.86d | A4840 → A4840 SS | resources SQM-ELÉCTRICO [10.08 h] → SQM-ELÉCTRICO [50.4 h] |
| A4910 | Canalización y Copla de Conduit Flexible Metálico con Cubierta PVC 1 ½" Ø Trabajo Pesado | 2026-03-04 → 2025-12-02 A (-92d) | 2026-03-07 → 2025-12-25 (-72d) | 4d → 4.36d | 0% → 28% | 0d → 48.64d | A4900, A4870 → A4890 FF | was named Canalización y Copla de Conduit Flexible Metálico con Cubierta PVC 1 1/2" Ø Trabajo Pesado; resources SQM-ELÉCTRICO [30.74 h] → SQM-ELÉCTRICO [75.6 h] |
| A4860 | Canalización y Copla de Conduit de Acero Galvanizado 2 ½"Ø, Conduit ANSI C80.1 | 2025-12-27 → 2025-12-20 (-7d) | 2025-12-29 → 2025-12-24 (-5d) | 3d → 3.27d |  | 86d → 74.86d |  | was named Canalización y Copla de Conduit de Acero Galvanizado 2 1/2"Ø, Conduit ANSI C80.1; resources SQM-ELÉCTRICO [11.34 h] → SQM-ELÉCTRICO [85.05 h] |
| A4870 | Canalización y Copla de Conduit Flexible Metálico con Cubierta PVC 2 ½" Ø Trabajo Pesado | 2026-03-03 → 2025-12-23 (-70d) | 2026-03-03 → 2025-12-24 (-69d) | 1d → 1.09d |  | 0d → 48.64d |  | was named Canalización y Copla de Conduit Flexible Metálico con Cubierta PVC 2 1/2" Ø Trabajo Pesado; resources SQM-ELÉCTRICO [3.78 h] → SQM-ELÉCTRICO [9.45 h] |
| A4920 | Perno de Ensamble de Malla a Tierra en E.P.C. | 2026-03-03 → 2025-12-23 (-70d) | 2026-03-04 → 2025-12-25 (-69d) | 2d → 2.18d |  | 12d → 63.83d |  |  |

| ID | Task | Start | Finish | Duration | Complete | Total float | Predecessors | Other |
| --- | --- | --- | --- | --- | --- | --- | --- | --- |
| A4940 | Cable Monoconductor de Cobre con Aislación XLPE, 1C #250 MCM, Clase 1 kV | 2026-03-23 → 2025-12-01 A (-112d) | 2026-03-25 → 2026-01-11 (-73d) | 3d → 3.27d | 0% → 4% | 0d → 48.64d | A4930 → A4930 FF | resources SQM-ELÉCTRICO [85.95 h] → SQM-ELÉCTRICO [107.44 h] |
| A4990 | Cable Multiconductor de Cobre con Aislación XLPE, 1X4C #2 AWG, Clase 1 kV | 2026-03-09 → 2025-12-06 A (-93d) | 2026-03-10 → 2025-12-24 (-76d) | 2d → 2.18d | 0% → 25% | 12d → 63.83d |  | resources SQM-ELÉCTRICO [23.38 h] → SQM-ELÉCTRICO [31.6 h] |
| A5000 | Cable Multiconductor de Cobre con Aislación de XLPE, 1x5C #12 AWG, Clase 1 kV | 2026-03-09 → 2025-12-06 A (-93d) | 2026-03-10 → 2025-12-24 (-76d) | 2d → 2.18d | 0% → 28% | 12d → 63.83d | A5010, A4910 → A5010 SS, A4910 SS | resources SQM-ELÉCTRICO [38.36 h] → SQM-ELÉCTRICO [47.49 h] |
| A4970 | Cable Multiconductor de Cobre con Aislación XLPE, 1X3C #4 AWG, Clase 1 kV | 2026-03-11 → 2025-12-24 (-77d) | 2026-03-13 → 2025-12-27 (-76d) | 3d → 3.27d |  | 12d → 63.83d |  | resources SQM-ELÉCTRICO [121.95 h] → SQM-ELÉCTRICO [157.36 h] |
| A4980 | Cable Multiconductor de Cobre con Aislación XLPE, 1X4C #10 AWG, Clase 1 kV | 2026-03-11 → 2025-12-24 (-77d) | 2026-03-12 → 2025-12-26 (-76d) | 2d → 2.18d |  | 12d → 63.83d |  | resources SQM-ELÉCTRICO [9.2 h] → SQM-ELÉCTRICO [10.82 h] |
| A4930 | Cable Monoconductor de Cobre con Aislación XLPE, 1C #500 MCM, Clase 1 kV | 2026-03-08 → 2025-12-25 (-73d) | 2026-03-22 → 2026-01-11 (-70d) | 15d → 17.45d |  | 0d → 48.64d |  | resources SQM-ELÉCTRICO [1945.44 h] → SQM-ELÉCTRICO [1737 h] |
| A4960 | Cable Multiconductor de Cobre con Aislación XLPE, 1X3C #8 AWG, Clase 1 kV | 2026-03-14 → 2025-12-27 (-77d) | 2026-03-21 → 2026-01-05 (-75d) | 8d → 8.73d |  | 12d → 63.83d |  | resources SQM-ELÉCTRICO [305.67 h] → SQM-ELÉCTRICO [384.11 h] |
| A4950 | Cable Multiconductor de Cobre con Aislación XLPE, 1X4C #8 AWG, Clase 1 kV | 2026-03-26 → 2026-01-11 (-74d) | 2026-03-26 → 2026-01-12 (-73d) | 1d → 1.09d |  | 0d → 48.64d |  | resources SQM-ELÉCTRICO [9.2 h] → SQM-ELÉCTRICO [10.82 h] |
| A5010 | Poste de Acero Galvanizado para Iluminación. | 2026-03-05 → 2025-12-11 A (-84d) | 2026-03-08 → 2025-12-25 (-73d) | 4d → 4.36d | 0% → 39% | 12d → 63.83d | A4920 → A4920 FF |  |
| 4 | **MONTAJE Y CONEXIONADO DE EQUIPOS ELÉCTRICOS TK-6060** | 2026-02-24 → 2025-12-25 (-61d) | 2026-03-30 → 2026-01-18 (-71d) |  |  |  |  |  |
| A5020 | Tablero Partidor de Motores TAG: 5817-TPM-1501 | 2026-02-24 → 2025-12-25 (-61d) | 2026-02-26 → 2025-12-30 (-58d) | 3d → 5.45d |  | 25d → 61.73d | A4900 SS → A4910 |  |
| A5030 | Conexión de Motor TAG: 5817-MTR-6078 a TPM TAG: 5817-TPM-1501. | 2026-03-27 → 2026-01-12 (-74d) | 2026-03-27 → 2026-01-13 (-73d) | 1d → 1.09d |  | 0d → 48.64d |  |  |
| A5040 | Conexión de Motor TAG: 5817-MTR-6070 a TPM TAG: 5817-TPM-1501. | 2026-03-27 → 2026-01-12 (-74d) | 2026-03-27 → 2026-01-13 (-73d) | 1d → 1.09d |  | 0d → 48.64d |  |  |
| A5050 | Conexión de Motor TAG: 5817-MTR-6073 a TPM TAG: 5817-TPM-1501. | 2026-03-28 → 2026-01-13 (-74d) | 2026-03-28 → 2026-01-14 (-73d) | 1d → 1.09d |  | 0d → 48.64d |  |  |
| A5060 | Conexión de Motor TAG: 5817-MTR-6062 a TPM TAG: 5817-TPM-1501. | 2026-03-28 → 2026-01-13 (-74d) | 2026-03-28 → 2026-01-14 (-73d) | 1d → 1.09d |  | 0d → 48.64d |  |  |
| A5070 | Conexión de Motor TAG: 5817-MTR-6076 a TPM TAG: 5817-TPM-1501. | 2026-03-29 → 2026-01-14 (-74d) | 2026-03-29 → 2026-01-16 (-72d) | 1d → 1.09d |  | 0d → 48.64d |  |  |
| A5080 | Conexión de Tablero Partidor de Motores TAG: 5817-TPM-1501 a Sala Eléctrica TAG: SEL-4016. | 2026-03-29 → 2026-01-14 (-74d) | 2026-03-29 → 2026-01-16 (-72d) | 1d → 1.09d |  | 0d → 48.64d |  |  |
| A5090 | Conexión de Luminarias Tipo Pedestal. | 2026-03-29 → 2026-01-16 (-72d) | 2026-03-30 → 2026-01-18 (-71d) | 2d → 2.18d |  | 0d → 48.64d | A5080 SS → A5080 |  |
| A5100 | Conexión de Luminarias Tipo Proyector. | 2026-03-29 → 2026-01-16 (-72d) | 2026-03-30 → 2026-01-18 (-71d) | 2d → 2.18d |  | 0d → 48.64d |  |  |
| 5 | **PRUEBAS DE FUNCIONAMIENTO Y PEM TK-6060** | 2026-03-31 → 2026-01-18 (-72d) | 2026-03-31 → 2026-01-25 (-65d) |  |  |  |  |  |
| A5110 | Pruebas de Funcionamiento y Puesta en Marcha de Motor TAG: 5817-MTR-6078. | 2026-03-31 → 2026-01-18 (-72d) | 2026-03-31 → 2026-01-19 (-71d) | 1d → 1.09d |  | 0d → 48.64d |  |  |
| A5120 | Pruebas de Funcionamiento y Puesta en Marcha de Motor TAG: 5817-MTR-6070. | 2026-03-31 → 2026-01-19 (-71d) | 2026-03-31 → 2026-01-20 (-70d) | 1d → 1.09d |  | 0d → 48.64d | A5110 SS → A5110 |  |
| A5130 | Pruebas de Funcionamiento y Puesta en Marcha de Motor TAG: 5817-MTR-6073. | 2026-03-31 → 2026-01-20 (-70d) | 2026-03-31 → 2026-01-21 (-69d) | 1d → 1.09d |  | 0d → 48.64d | A5120 SS → A5120 |  |
| A5140 | Pruebas de Funcionamiento y Puesta en Marcha de Motor TAG: 5817-MTR-6062. | 2026-03-31 → 2026-01-21 (-69d) | 2026-03-31 → 2026-01-22 (-68d) | 1d → 1.09d |  | 0d → 48.64d | A5130 SS → A5130 |  |
| A5150 | Pruebas de Funcionamiento y Puesta en Marcha de Motor TAG: 5817-MTR-6076. | 2026-03-31 → 2026-01-22 (-68d) | 2026-03-31 → 2026-01-23 (-67d) | 1d → 1.09d |  | 0d → 48.64d | A5140 SS → A5140 |  |
| A5160 | Pruebas de Funcionamiento y Puesta de Luminarias Tipo Pedestal. | 2026-03-31 → 2026-01-23 (-67d) | 2026-03-31 → 2026-01-24 (-66d) | 1d → 1.09d |  | 0d → 48.64d | A5150 SS → A5150 |  |
| A5170 | Pruebas de Funcionamiento y Puesta de Luminarias Tipo Proyector. | 2026-03-31 → 2026-01-24 (-66d) | 2026-03-31 → 2026-01-25 (-65d) | 1d → 1.09d |  | 0d → 48.64d | A5160 SS → A5160 |  |
| 6 | **OBRAS DE INSTRUMENTACIÓN TK-6060** | 2026-02-24 → 2025-11-20 (-96d) | 2026-03-31 → 2026-02-01 (-58d) |  |  |  |  |  |
| 1 | **MONTAJE DE CANALIZACIÓN Y FERRETERÍA INST. TK-6060** | 2026-02-24 → 2025-11-20 (-96d) | 2026-03-21 → 2026-01-11 (-69d) |  |  |  |  |  |
| A5200 | Canalización y Copla de Conduit de Acero Galvanizado 1"Ø, Conduit ANSI C80.1 | 2026-02-24 → 2025-11-22 A (-94d) | 2026-03-16 → 2026-01-06 (-69d) | 21d → 22.91d | 0% → 17% | 0d → 61.89d | A4900 SS → A5180 SS+2.18d | resources SQM-INSTRUMENTACIÓN [1179.36 h] → SQM-INSTRUMENTACIÓN [1890 h] |
| A5210 | Canalización y Copla de Conduit Flexible Metálico con Cubierta PVC 1" Ø Trabajo Pesado | 2026-03-17 → 2026-01-06 (-70d) | 2026-03-21 → 2026-01-11 (-69d) | 5d → 5.45d |  | 9d → 61.89d |  | resources SQM-INSTRUMENTACIÓN [89.59 h] → SQM-INSTRUMENTACIÓN [189 h] |
| 2 | **TENDIDO Y CONEXIONADO DE CABLES DE INSTRUMENTACIÓN TK-6060** | 2026-02-24 → 2025-12-01 (-85d) | 2026-03-23 → 2025-12-31 (-82d) |  |  |  |  |  |
| A5220 | Cable Multiconductor de Cobre con Aislación de XLPE, 1x3C #12 AWG, Clase 1 kV | 2026-02-24 → 2025-12-01 A (-85d) | 2026-03-09 → 2025-12-31 (-68d) | 14d → 15.27d | 0% → 10% | 0d → 71.53d | A5200 SS → A5190 SS | resources SQM-INSTRUMENTACIÓN [365.33 h] → SQM-INSTRUMENTACIÓN [511.47 h] |
| A5230 | Cable de Instrumentación (Señales Análogas), 1x1 par #16 AWG Apantallado | 2026-03-10 → 2025-12-01 A (-99d) | 2026-03-14 → 2025-12-22 (-82d) | 5d → 5.45d | 0% → 10% | 0d → 71.53d | A5220 → A5220 SS | resources SQM-INSTRUMENTACIÓN [74 h] → SQM-INSTRUMENTACIÓN [68.08 h] |
| A5240 | Cable Multiconductor de Cobre Blando 1x3C #12 AWG, Clase 0,3 | 2026-03-10 → 2025-12-01 A (-99d) | 2026-03-13 → 2025-12-21 (-82d) | 4d → 4.36d | 0% → 10% | 0d → 71.53d |  | resources SQM-INSTRUMENTACIÓN [299.21 h] → SQM-INSTRUMENTACIÓN [219.2 h] |
| A5250 | Cable Multiconductor de Cobre Blando 1x5C #12 AWG, Clase 0,3 | 2026-03-14 → 2025-12-21 (-83d) | 2026-03-17 → 2025-12-26 (-81d) | 4d → 4.36d |  | 0d → 71.53d |  | resources SQM-INSTRUMENTACIÓN [300.3 h] → SQM-INSTRUMENTACIÓN [219.2 h] |
| A5260 | Conductor Fibra Óptica Multimodo 12 Hilos | 2026-03-14 → 2025-12-26 (-78d) | 2026-03-23 → 2025-12-29 (-84d) | 10d → 3.27d |  | 0d → 71.53d | A5250 SS → A5250 | resources SQM-INSTRUMENTACIÓN [315.48 h] → SQM-INSTRUMENTACIÓN [406.3 h] |
| 3 | **MONTAJE Y CONEXIONADO DE EQUIPOS E INSTRUMENTOS TK-6060** | 2026-02-27 → 2025-12-01 (-88d) | 2026-03-26 → 2026-01-02 (-83d) |  |  |  |  |  |
| A5290 | Instrumento TAG: FIT-6207 a Panel de señales Remotas TAG: 5817-RIO-1501. | 2026-03-24 → 2025-12-01 A (-113d) | 2026-03-24 → 2025-12-24 (-90d) | 1d → 1.09d | 0% → 10% | 0d → 74.7d | A5280 SS → A5280 FF | was named Instrumento TAG: FIT-6207 a Panel de Señales Remotas TAG: 5817-RIO-1501. |
| A5300 | Instrumento TAG: FIT-6209 a Panel de señales Remotas TAG: 5817-RIO-1501. | 2026-03-24 → 2025-12-01 A (-113d) | 2026-03-24 → 2025-12-24 (-90d) | 1d → 1.09d | 0% → 10% | 0d → 74.7d |  | was named Instrumento TAG: FIT-6209 a Panel de Señales Remotas TAG: 5817-RIO-1501. |
| A5310 | Instrumento TAG: FIT-6260 a Panel de señales Remotas TAG: 5817-RIO-1501. | 2026-03-24 → 2025-12-01 A (-113d) | 2026-03-24 → 2025-12-24 (-90d) | 1d → 1.09d | 0% → 10% | 0d → 74.7d |  | was named Instrumento TAG: FIT-6260 a Panel de Señales Remotas TAG: 5817-RIO-1501. |
| A5320 | Instrumento TAG: FIT-6261 a Panel de señales Remotas TAG: 5817-RIO-1501. | 2026-03-24 → 2025-12-01 A (-113d) | 2026-03-24 → 2025-12-24 (-90d) | 1d → 1.09d | 0% → 10% | 0d → 74.7d |  | was named Instrumento TAG: FIT-6261 a Panel de Señales Remotas TAG: 5817-RIO-1501. |
| A5340 | Instrumento TAG: PIT-6226 a Panel de señales Remotas TAG: 5817-RIO-1501. | 2026-03-24 → 2025-12-01 A (-113d) | 2026-03-24 → 2025-12-24 (-90d) | 1d → 1.09d | 0% → 10% | 0d → 74.7d | A5330 SS → A5330 FF | was named Instrumento TAG: PIT-6226 a Panel de Señales Remotas TAG: 5817-RIO-1501. |
| A5350 | Instrumento TAG: PIT-6236 a Panel de señales Remotas TAG: 5817-RIO-1501. | 2026-03-24 → 2025-12-01 A (-113d) | 2026-03-24 → 2025-12-24 (-90d) | 1d → 1.09d | 0% → 10% | 0d → 74.7d |  | was named Instrumento TAG: PIT-6236 a Panel de Señales Remotas TAG: 5817-RIO-1501. |
| A5360 | Instrumento TAG: PIT-6222 a Panel de señales Remotas TAG: 5817-RIO-1501. | 2026-03-24 → 2025-12-01 A (-113d) | 2026-03-24 → 2025-12-24 (-90d) | 1d → 1.09d | 0% → 10% | 0d → 74.7d |  | was named Instrumento TAG: PIT-6222 a Panel de Señales Remotas TAG: 5817-RIO-1501. |
| A5270 | Pruebas de Funcionamiento y Puesta en Marcha de TAG: 5817-RIO-1501. | 2026-02-27 → 2025-12-22 (-67d) | 2026-02-27 → 2025-12-24 (-65d) | 1d → 1.09d |  | 25d → 74.7d | A5020 → A5230 |  |
| A5280 | Conexión de Fibra Óptica en RIO y Sala Eléctrica TAG: SEL-4016. | 2026-03-24 → 2025-12-22 (-92d) | 2026-03-24 → 2025-12-24 (-90d) | 1d → 1.09d |  | 0d → 74.7d | A5270 SS, A5260 → A5270 SS |  |
| A5330 | Instrumento TAG: DIT-6279 a Panel de señales Remotas TAG: 5817-RIO-1501. | 2026-03-24 → 2025-12-23 (-91d) | 2026-03-24 → 2025-12-24 (-90d) | 1d → 1.09d |  | 0d → 74.7d |  | was named Instrumento TAG: DIT-6279 a Panel de Señales Remotas TAG: 5817-RIO-1501. |
| A5370 | Instrumento TAG: FV-6208 a Panel de señales Remotas TAG: 5817-RIO-1501. | 2026-03-24 → 2025-12-23 (-91d) | 2026-03-24 → 2025-12-24 (-90d) | 1d → 1.09d |  | 0d → 74.7d |  | was named Instrumento TAG: FV-6208 a Panel de Señales Remotas TAG: 5817-RIO-1501. |
| A5380 | Instrumento TAG: FV-6217 a Panel de señales Remotas TAG: 5817-RIO-1501. | 2026-03-25 → 2025-12-24 (-91d) | 2026-03-25 → 2025-12-25 (-90d) | 1d → 1.09d |  | 0d → 74.7d |  | was named Instrumento TAG: FV-6217 a Panel de Señales Remotas TAG: 5817-RIO-1501. |
| A5390 | Instrumento TAG: XV-1178 a Panel de señales Remotas TAG: 5817-RIO-1501. | 2026-03-25 → 2025-12-24 (-91d) | 2026-03-25 → 2025-12-25 (-90d) | 1d → 1.09d |  | 0d → 74.7d |  | was named Instrumento TAG: XV-1178 a Panel de Señales Remotas TAG: 5817-RIO-1501. |
| A5400 | Instrumento TAG: XV-1179 a Panel de señales Remotas TAG: 5817-RIO-1501. | 2026-03-25 → 2025-12-24 (-91d) | 2026-03-25 → 2025-12-25 (-90d) | 1d → 1.09d |  | 0d → 74.7d |  | was named Instrumento TAG: XV-1179 a Panel de Señales Remotas TAG: 5817-RIO-1501. |
| A5410 | Instrumento TAG: XV-1180 a Panel de señales Remotas TAG: 5817-RIO-1501. | 2026-03-25 → 2025-12-24 (-91d) | 2026-03-25 → 2025-12-25 (-90d) | 1d → 1.09d |  | 0d → 74.7d |  | was named Instrumento TAG: XV-1180 a Panel de Señales Remotas TAG: 5817-RIO-1501. |
| A5420 | Instrumento TAG: XV-1181 a Panel de señales Remotas TAG: 5817-RIO-1501. | 2026-03-25 → 2025-12-25 (-90d) | 2026-03-25 → 2025-12-26 (-89d) | 1d → 1.09d |  | 0d → 74.7d | A5410 SS → A5410 | was named Instrumento TAG: XV-1181 a Panel de Señales Remotas TAG: 5817-RIO-1501. |
| A5430 | Instrumento TAG: XV-1182 a Panel de señales Remotas TAG: 5817-RIO-1501. | 2026-03-25 → 2025-12-25 (-90d) | 2026-03-25 → 2025-12-26 (-89d) | 1d → 1.09d |  | 0d → 74.7d |  | was named Instrumento TAG: XV-1182 a Panel de Señales Remotas TAG: 5817-RIO-1501. |
| A5440 | Instrumento TAG: XV-6206 a Panel de señales Remotas TAG: 5817-RIO-1501. | 2026-03-25 → 2025-12-25 (-90d) | 2026-03-25 → 2025-12-26 (-89d) | 1d → 1.09d |  | 0d → 74.7d |  | was named Instrumento TAG: XV-6206 a Panel de Señales Remotas TAG: 5817-RIO-1501. |
| A5450 | Instrumento TAG: XV-6209 a Panel de señales Remotas TAG: 5817-RIO-1501. | 2026-03-25 → 2025-12-25 (-90d) | 2026-03-25 → 2025-12-26 (-89d) | 1d → 1.09d |  | 0d → 74.7d |  | was named Instrumento TAG: XV-6209 a Panel de Señales Remotas TAG: 5817-RIO-1501. |
| A5460 | Instrumento TAG: XV-6216 a Panel de señales Remotas TAG: 5817-RIO-1501. | 2026-03-25 → 2025-12-29 (-86d) | 2026-03-25 → 2025-12-30 (-85d) | 1d → 1.09d |  | 0d → 71.53d | A5450 SS → A5450, A5260 | was named Instrumento TAG: XV-6216 a Panel de Señales Remotas TAG: 5817-RIO-1501. |
| A5470 | Instrumento TAG: XV-6219 a Panel de señales Remotas TAG: 5817-RIO-1501. | 2026-03-25 → 2025-12-29 (-86d) | 2026-03-25 → 2025-12-30 (-85d) | 1d → 1.09d |  | 0d → 71.53d |  | was named Instrumento TAG: XV-6219 a Panel de Señales Remotas TAG: 5817-RIO-1501. |
| A5480 | Instrumento TAG: XV-6223 a Panel de señales Remotas TAG: 5817-RIO-1501. | 2026-03-25 → 2025-12-29 (-86d) | 2026-03-25 → 2025-12-30 (-85d) | 1d → 1.09d |  | 0d → 71.53d |  | was named Instrumento TAG: XV-6223 a Panel de Señales Remotas TAG: 5817-RIO-1501. |
| A5490 | Instrumento TAG: XV-6223 a Panel de señales Remotas TAG: 5817-RIO-1501. | 2026-03-25 → 2025-12-29 (-86d) | 2026-03-25 → 2025-12-30 (-85d) | 1d → 1.09d |  | 0d → 71.53d |  | was named Instrumento TAG: XV-6223 a Panel de Señales Remotas TAG: 5817-RIO-1501. |
| A5500 | Instrumento TAG: XV-6224 a Panel de señales Remotas TAG: 5817-RIO-1501. | 2026-03-26 → 2025-12-30 (-86d) | 2026-03-26 → 2025-12-31 (-85d) | 1d → 1.09d |  | 0d → 71.53d |  | was named Instrumento TAG: XV-6224 a Panel de Señales Remotas TAG: 5817-RIO-1501. |
| A5510 | Instrumento TAG: XV-6225 a Panel de señales Remotas TAG: 5817-RIO-1501. | 2026-03-26 → 2025-12-30 (-86d) | 2026-03-26 → 2025-12-31 (-85d) | 1d → 1.09d |  | 0d → 71.53d |  | was named Instrumento TAG: XV-6225 a Panel de Señales Remotas TAG: 5817-RIO-1501. |
| A5520 | Instrumento TAG: XV-6226 a Panel de señales Remotas TAG: 5817-RIO-1501. | 2026-03-26 → 2025-12-30 (-86d) | 2026-03-26 → 2025-12-31 (-85d) | 1d → 1.09d |  | 0d → 71.53d |  | was named Instrumento TAG: XV-6226 a Panel de Señales Remotas TAG: 5817-RIO-1501. |
| A5530 | Instrumento TAG: XV-6227 a Panel de señales Remotas TAG: 5817-RIO-1501. | 2026-03-26 → 2025-12-30 (-86d) | 2026-03-26 → 2025-12-31 (-85d) | 1d → 1.09d |  | 0d → 71.53d |  | was named Instrumento TAG: XV-6227 a Panel de Señales Remotas TAG: 5817-RIO-1501. |
| A5540 | Instrumento TAG: XV-6228 a Panel de señales Remotas TAG: 5817-RIO-1501. | 2026-03-26 → 2025-12-31 (-85d) | 2026-03-26 → 2026-01-01 (-84d) | 1d → 1.09d |  | 0d → 71.53d | A5530 SS → A5530 | was named Instrumento TAG: XV-6228 a Panel de Señales Remotas TAG: 5817-RIO-1501. |
| A5550 | Instrumento TAG: XV-6233 a Panel de señales Remotas TAG: 5817-RIO-1501. | 2026-03-26 → 2025-12-31 (-85d) | 2026-03-26 → 2026-01-01 (-84d) | 1d → 1.09d |  | 0d → 71.53d |  | was named Instrumento TAG: XV-6233 a Panel de Señales Remotas TAG: 5817-RIO-1501. |
| A5560 | Instrumento TAG: XV-6234 a Panel de señales Remotas TAG: 5817-RIO-1501. | 2026-03-26 → 2025-12-31 (-85d) | 2026-03-26 → 2026-01-01 (-84d) | 1d → 1.09d |  | 0d → 71.53d |  | was named Instrumento TAG: XV-6234 a Panel de Señales Remotas TAG: 5817-RIO-1501. |
| A5570 | Instrumento TAG: XV-6237 a Panel de señales Remotas TAG: 5817-RIO-1501. | 2026-03-26 → 2025-12-31 (-85d) | 2026-03-26 → 2026-01-01 (-84d) | 1d → 1.09d |  | 0d → 71.53d |  | was named Instrumento TAG: XV-6237 a Panel de Señales Remotas TAG: 5817-RIO-1501. |
| A5580 | Instrumento TAG: XV-6238 a Panel de señales Remotas TAG: 5817-RIO-1501. | 2026-03-26 → 2026-01-01 (-84d) | 2026-03-26 → 2026-01-02 (-83d) | 1d → 1.09d |  | 0d → 71.53d | A5570 SS → A5570 | was named Instrumento TAG: XV-6238 a Panel de Señales Remotas TAG: 5817-RIO-1501. |

| ID | Task | Start | Finish | Duration | Complete | Total float | Predecessors | Other |
| --- | --- | --- | --- | --- | --- | --- | --- | --- |
| A5590 | Instrumento TAG: XV-6243 a Panel de señales Remotas TAG: 5817-RIO-1501. | 2026-03-26 → 2026-01-01 (-84d) | 2026-03-26 → 2026-01-02 (-83d) | 1d → 1.09d |  | 0d → 71.53d |  | was named Instrumento TAG: XV-6243 a Panel de Señales Remotas TAG: 5817-RIO-1501. |
| A5600 | Instrumento TAG: XV-6259 a Panel de señales Remotas TAG: 5817-RIO-1501. | 2026-03-26 → 2026-01-01 (-84d) | 2026-03-26 → 2026-01-02 (-83d) | 1d → 1.09d |  | 0d → 71.53d |  | was named Instrumento TAG: XV-6259 a Panel de Señales Remotas TAG: 5817-RIO-1501. |
| A5610 | Instrumento TAG: XV-6263 a Panel de señales Remotas TAG: 5817-RIO-1501. | 2026-03-26 → 2026-01-01 (-84d) | 2026-03-26 → 2026-01-02 (-83d) | 1d → 1.09d |  | 0d → 71.53d |  | was named Instrumento TAG: XV-6263 a Panel de Señales Remotas TAG: 5817-RIO-1501. |
| 4 | **PRUEBAS DE FUNCIONAMIENTO Y PEM INST. TK-6060** | 2026-03-27 → 2025-12-30 (-87d) | 2026-03-31 → 2026-02-01 (-58d) |  |  |  |  |  |
| A5620 | Pruebas de Funcionamiento y Puesta en Marcha de TAG: 5817-RIO-1501. | 2026-03-27 → 2025-12-30 (-87d) | 2026-03-28 → 2026-01-02 (-85d) | 2d → 3.27d |  | 0d → 71.53d | A5610 → A5610 FF |  |
| A5630 | Pruebas de Operación y Puesta en Marcha de Instrumento TAG: FIT-6207 | 2026-03-29 → 2026-01-01 (-87d) | 2026-03-29 → 2026-01-02 (-86d) | 1d → 1.09d |  | 0d → 71.53d | A5620 → A5620 FF |  |
| A5640 | Pruebas de Operación y Puesta en Marcha de Instrumento TAG: FIT-6209 | 2026-03-29 → 2026-01-01 (-87d) | 2026-03-29 → 2026-01-02 (-86d) | 1d → 1.09d |  | 0d → 71.53d |  |  |
| A5650 | Pruebas de Operación y Puesta en Marcha de Instrumento TAG: FIT-6260 | 2026-03-29 → 2026-01-01 (-87d) | 2026-03-29 → 2026-01-02 (-86d) | 1d → 1.09d |  | 0d → 71.53d |  |  |
| A5660 | Pruebas de Operación y Puesta en Marcha de Instrumento TAG: FIT-6261 | 2026-03-29 → 2026-01-01 (-87d) | 2026-03-29 → 2026-01-02 (-86d) | 1d → 1.09d |  | 0d → 71.53d |  |  |
| A5670 | Pruebas de Operación y Puesta en Marcha de Instrumento TAG: DIT-6279 | 2026-03-29 → 2026-01-01 (-87d) | 2026-03-29 → 2026-01-02 (-86d) | 1d → 1.09d |  | 0d → 71.53d |  |  |
| A5680 | Pruebas de Operación y Puesta en Marcha de Instrumento TAG: PIT-6226 | 2026-03-29 → 2026-01-01 (-87d) | 2026-03-29 → 2026-01-02 (-86d) | 1d → 1.09d |  | 0d → 71.53d | A5670 SS → A5670 FF |  |
| A5690 | Pruebas de Operación y Puesta en Marcha de Instrumento TAG: PIT-6236 | 2026-03-29 → 2026-01-01 (-87d) | 2026-03-29 → 2026-01-02 (-86d) | 1d → 1.09d |  | 0d → 71.53d |  |  |
| A5700 | Pruebas de Operación y Puesta en Marcha de Instrumento TAG: PIT-6222 | 2026-03-29 → 2026-01-01 (-87d) | 2026-03-29 → 2026-01-02 (-86d) | 1d → 1.09d |  | 0d → 71.53d |  |  |
| A5710 | Pruebas de Operación y Puesta en Marcha de Instrumento TAG: FV-6208 | 2026-03-29 → 2026-01-01 (-87d) | 2026-03-29 → 2026-01-02 (-86d) | 1d → 1.09d |  | 0d → 71.53d |  |  |
| A5720 | Pruebas de Operación y Puesta en Marcha de Instrumento TAG: FV-6217 | 2026-03-29 → 2026-01-01 (-87d) | 2026-03-29 → 2026-01-02 (-86d) | 1d → 1.09d |  | 0d → 71.53d |  |  |
| A5730 | Pruebas de Operación y Puesta en Marcha de Instrumento TAG: XV-1178 | 2026-03-29 → 2026-01-01 (-87d) | 2026-03-29 → 2026-01-02 (-86d) | 1d → 1.09d |  | 0d → 71.53d | A5720 SS → A5720 FF |  |
| A5740 | Pruebas de Operación y Puesta en Marcha de Instrumento TAG: XV-1179 | 2026-03-29 → 2026-01-01 (-87d) | 2026-03-29 → 2026-01-02 (-86d) | 1d → 1.09d |  | 0d → 71.53d |  |  |
| A5750 | Pruebas de Operación y Puesta en Marcha de Instrumento TAG: XV-1180 | 2026-03-29 → 2026-01-01 (-87d) | 2026-03-29 → 2026-01-02 (-86d) | 1d → 1.09d |  | 0d → 71.53d |  |  |
| A5760 | Pruebas de Operación y Puesta en Marcha de Instrumento TAG: XV-1181 | 2026-03-30 → 2026-01-01 (-88d) | 2026-03-30 → 2026-01-02 (-87d) | 1d → 1.09d |  | 0d → 71.53d | A5750 → A5750 SS |  |
| A5770 | Pruebas de Operación y Puesta en Marcha de Instrumento TAG: XV-1182 | 2026-03-30 → 2026-01-01 (-88d) | 2026-03-30 → 2026-01-02 (-87d) | 1d → 1.09d |  | 0d → 71.53d |  |  |
| A5780 | Pruebas de Operación y Puesta en Marcha de Instrumento TAG: XV-6206 | 2026-03-30 → 2026-01-01 (-88d) | 2026-03-30 → 2026-01-02 (-87d) | 1d → 1.09d |  | 0d → 71.53d | A5770 SS → A5770 FF |  |
| A5790 | Pruebas de Operación y Puesta en Marcha de Instrumento TAG: XV-6209 | 2026-03-30 → 2026-01-01 (-88d) | 2026-03-30 → 2026-01-02 (-87d) | 1d → 1.09d |  | 0d → 71.53d |  |  |
| A5800 | Pruebas de Operación y Puesta en Marcha de Instrumento TAG: XV-6216 | 2026-03-30 → 2026-01-01 (-88d) | 2026-03-30 → 2026-01-02 (-87d) | 1d → 1.09d |  | 0d → 71.53d |  |  |
| A5810 | Pruebas de Operación y Puesta en Marcha de Instrumento TAG: XV-6219 | 2026-03-30 → 2026-01-01 (-88d) | 2026-03-30 → 2026-01-02 (-87d) | 1d → 1.09d |  | 0d → 71.53d |  |  |
| A5820 | Pruebas de Operación y Puesta en Marcha de Instrumento TAG: XV-6223 | 2026-03-30 → 2026-01-01 (-88d) | 2026-03-30 → 2026-01-02 (-87d) | 1d → 1.09d |  | 0d → 71.53d |  |  |
| A5830 | Pruebas de Operación y Puesta en Marcha de Instrumento TAG: XV-6223 | 2026-03-30 → 2026-01-01 (-88d) | 2026-03-30 → 2026-01-02 (-87d) | 1d → 1.09d |  | 0d → 71.53d | A5820 SS → A5820 FF |  |
| A5840 | Pruebas de Operación y Puesta en Marcha de Instrumento TAG: XV-6224 | 2026-03-30 → 2026-01-01 (-88d) | 2026-03-30 → 2026-01-02 (-87d) | 1d → 1.09d |  | 0d → 71.53d |  |  |
| A5850 | Pruebas de Operación y Puesta en Marcha de Instrumento TAG: XV-6225 | 2026-03-30 → 2026-01-01 (-88d) | 2026-03-30 → 2026-01-02 (-87d) | 1d → 1.09d |  | 0d → 71.53d |  |  |
| A5860 | Pruebas de Operación y Puesta en Marcha de Instrumento TAG: XV-6226 | 2026-03-30 → 2026-01-01 (-88d) | 2026-03-30 → 2026-01-02 (-87d) | 1d → 1.09d |  | 0d → 71.53d |  |  |
| A5870 | Pruebas de Operación y Puesta en Marcha de Instrumento TAG: XV-6227 | 2026-03-30 → 2026-01-01 (-88d) | 2026-03-30 → 2026-01-02 (-87d) | 1d → 1.09d |  | 0d → 71.53d |  | resources SQM-INSTRUMENTACIÓN → SQM-INSTRUMENTACIÓN [12 h] |
| A5880 | Pruebas de Operación y Puesta en Marcha de Instrumento TAG: XV-6228 | 2026-03-31 → 2026-01-01 (-89d) | 2026-03-31 → 2026-01-02 (-88d) | 1d → 1.09d |  | 0d → 71.53d | A5870 → A5870 FF | resources SQM-INSTRUMENTACIÓN [24 h] → SQM-INSTRUMENTACIÓN [12 h] |
| A5890 | Pruebas de Operación y Puesta en Marcha de Instrumento TAG: XV-6233 | 2026-03-31 → 2026-01-01 (-89d) | 2026-03-31 → 2026-01-02 (-88d) | 1d → 1.09d |  | 0d → 71.53d |  |  |
| A5900 | Pruebas de Operación y Puesta en Marcha de Instrumento TAG: XV-6234 | 2026-03-31 → 2026-01-01 (-89d) | 2026-03-31 → 2026-01-02 (-88d) | 1d → 1.09d |  | 0d → 71.53d |  |  |
| A5910 | Pruebas de Operación y Puesta en Marcha de Instrumento TAG: XV-6237 | 2026-03-31 → 2026-01-01 (-89d) | 2026-03-31 → 2026-01-02 (-88d) | 1d → 1.09d |  | 0d → 71.53d |  |  |
| A5920 | Pruebas de Operación y Puesta en Marcha de Instrumento TAG: XV-6238 | 2026-03-31 → 2026-01-01 (-89d) | 2026-03-31 → 2026-01-02 (-88d) | 1d → 1.09d |  | 0d → 71.53d |  |  |
| A5930 | Pruebas de Operación y Puesta en Marcha de Instrumento TAG: XV-6243 | 2026-03-31 → 2026-01-01 (-89d) | 2026-03-31 → 2026-01-02 (-88d) | 1d → 1.09d |  | 0d → 71.53d | A5920 SS → A5920 FF |  |
| A5940 | Pruebas de Operación y Puesta en Marcha de Instrumento TAG: XV-6259 | 2026-03-31 → 2026-01-01 (-89d) | 2026-03-31 → 2026-01-02 (-88d) | 1d → 1.09d |  | 0d → 71.53d |  |  |
| A5950 | Pruebas de Operación y Puesta en Marcha de Instrumento TAG: XV-6263 | 2026-03-31 → 2026-01-31 (-59d) | 2026-03-31 → 2026-02-01 (-58d) | 1d → 1.09d |  | 0d → 42.14d |  |  |
| 2 | **ÁREA 5772 - SECTOR TK-800** | 2025-09-18 → 2025-09-11 (-7d) | 2026-01-06 → 2026-01-24 (+18d) |  |  |  |  |  |
| 1 | **OBRAS CIVILES TK-800** | 2025-09-18 → 2025-10-05 (+17d) | 2025-10-02 → 2025-12-15 (+74d) |  |  |  |  |  |
| 1 | **OOCC SECTOR ESTANQUE DE AGUA BLANDA TAG:5772-EST-800** | 2025-09-18 → 2025-10-05 (+17d) | 2025-10-02 → 2025-12-15 (+74d) |  |  |  |  |  |
| A5970 | Nivelación Pedestal | 2025-09-18 → 2025-10-05 A (+17d) | 2025-09-20 → 2025-12-10 A (+81d) | 3d → 3.27d | 0% → 100% | 84d → none | A3920 → A4220 SS | resources SQM-OBRAS CIVILES [2.7 h] → SQM-OOCC [2.7 h] |
| A5980 | Armadura de Refuerzo A630-420H para Estructura Monorriel | 2025-09-21 → 2025-10-08 A (+17d) | 2025-09-23 → 2025-12-15 (+83d) | 3d → 3.27d | 0% → 95% | 85d → 49.98d |  | resources SQM-OBRAS CIVILES [8.95 h] → SQM-OOCC [8.95 h] |
| A5960 | Ampliación Pedestal (TAG: 5772-BBA-1601 y TAG: 5772-BBA-1604) | 2025-09-24 → 2025-10-11 A (+17d) | 2025-09-26 → 2025-12-15 (+80d) | 3d → 3.27d | 0% → 100% | 85d → 49.98d | A5980 → A5980 SS | resources SQM-OBRAS CIVILES [13.44 h] → SQM-OOCC [8.06 h] |
| A6000 | Emplantillado Estructura Monorriel | 2025-09-27 → 2025-10-14 A (+17d) | 2025-09-29 → 2025-12-10 A (+72d) | 3d → 3.27d | 0% → 100% | 111d → none | A5960 → A5960 SS | resources SQM-OBRAS CIVILES [0.22 h] → SQM-OOCC [0.22 h] |
| A5990 | Estructura Monorriel | 2025-09-30 → 2025-10-17 A (+17d) | 2025-10-02 → 2025-12-15 (+74d) | 3d → 3.27d | 0% → 95% | 111d → 49.98d |  | resources SQM-OBRAS CIVILES [168.22 h] → SQM-OOCC [168.22 h] |
| 2 | **OBRAS MECÁNICAS TK-800** | 2025-10-03 → 2025-10-14 (+11d) | 2025-10-13 → 2025-12-17 (+65d) |  |  |  |  |  |
| 1 | **MONTAJE Y PRUEBAS DE EQUIPOS MECÁNICOS ÁREA 5772 SECTOR TK-800** | 2025-10-03 → 2025-10-14 (+11d) | 2025-10-13 → 2025-12-17 (+65d) |  |  |  |  |  |
| A6010 | Bomba Centrífuga y Motor TAG: 5772-BBA-1601; 5772-MTR-1602 | 2025-10-03 → 2025-10-14 A (+11d) | 2025-10-06 → 2025-12-16 (+71d) | 4d → 4.36d | 0% → 59% | 111d → 57.65d | A5960, A5990 → A5960 SS |  |
| A6020 | Bomba Centrífuga y Motor TAG: 5772-BBA-1604; 5772-MTR-1605 | 2025-10-07 → 2025-10-18 A (+11d) | 2025-10-10 → 2025-12-16 (+67d) | 4d → 4.36d | 0% → 65% | 111d → 57.65d | A6010 → A6010 SS |  |
| A6030 | Tecle Mantenimiento de Bombas TAG: 5772-TEC-1607 | 2025-10-11 → 2025-10-22 A (+11d) | 2025-10-13 → 2025-12-17 (+65d) | 3d → 3.27d | 0% → 32% | 111d → 57.65d | A5990, A6020 → A5990 SS, A6020 SS |  |
| 3 | **OBRAS PIPING TK-800** | 2025-09-21 → 2025-09-11 (-10d) | 2025-12-19 → 2026-01-24 (+36d) |  |  |  |  |  |
| 1 | **FABRICACIÓN Y MONTAJE DE CAÑERÍAS ÁREA TK-800** | 2025-09-21 → 2025-09-11 (-10d) | 2025-12-15 → 2026-01-23 (+39d) |  |  |  |  |  |
| A6040 | Ø 200 mm - Cañería HDPE, PE 100, PN20 (8") - Fabricación | 2025-09-21 → 2025-09-11 A (-10d) | 2025-10-08 → 2025-12-25 (+78d) | 18d → 30.55d | 0% → 64% | 84d → 40.33d | A1070, A5970 → A1070 SS | resources SQM-PIPING [199.5 h] → SQM-PIPING [227.5 h] |
| A6060 | Ø 6" - Cañería Acero Inoxidable - Fabricación | 2025-10-14 → 2025-10-09 A (-5d) | 2025-10-20 → 2025-12-13 A (+54d) | 7d → 7.64d | 0% → 100% | 103d → none | A6050 → A6040 SS | resources SQM-PIPING [546 h] → SQM-PIPING [481 h] |
| A6110 | Ø 200 mm - Cañería HDPE, PE 100, PN20 (8") - Montaje | 2025-09-24 → 2025-10-09 A (+15d) | 2025-10-21 → 2025-12-15 (+55d) | 28d → 45.82d | 0% → 100% | 84d → 59.96d | A6040 SS+3d → A6040 SS | resources SQM-PIPING [478.8 h] → SQM-PIPING [439.84 h] |
| A6130 | Ø 6" - Cañería Acero Inoxidable - Montaje | 2025-11-17 → 2025-10-28 A (-20d) | 2025-11-23 → 2025-12-12 A (+19d) | 7d → 7.64d | 0% → 100% | 103d → none | A6120 → A6110 SS | resources SQM-PIPING [28.73 h] → SQM-PIPING [13.74 h] |
| A6050 | Ø 8" - Cañería Acero Inoxidable - Fabricación | 2025-10-09 → 2025-12-15 (+67d) | 2025-10-13 → 2025-12-20 (+68d) | 5d → 5.45d |  | 103d → 50.14d | A6040 → A6040 SS | resources SQM-PIPING [29.6 h] → SQM-PIPING [59.2 h] |
| A6070 | Ø 4" - Cañería Acero Inoxidable - Fabricación | 2025-10-21 → 2025-12-15 (+55d) | 2025-11-03 → 2025-12-30 (+57d) | 14d → 15.27d |  | 103d → 40.33d | A6060 → A6060 SS | resources SQM-PIPING [494 h] → SQM-PIPING [600.4 h] |
| A6080 | Ø 3" - Cañería Acero Inoxidable - Fabricación | 2025-11-04 → 2025-12-30 (+56d) | 2025-11-05 → 2026-01-01 (+57d) | 2d → 2.18d |  | 103d → 40.33d | A6070 → A6070, A6050 | resources SQM-PIPING [28 h] → SQM-PIPING [22.4 h] |
| A6120 | Ø 8" - Cañería Acero Inoxidable - Montaje | 2025-11-12 → 2025-12-30 (+48d) | 2025-11-16 → 2026-01-04 (+49d) | 5d → 5.45d |  | 103d → 54.51d | A6070, A6100, A6110 → A6070 |  |
| A6090 | Ø 2" - Cañería Acero Inoxidable - Fabricación | 2025-11-06 → 2026-01-01 (+56d) | 2025-11-09 → 2026-01-05 (+57d) | 4d → 4.36d |  | 103d → 40.33d |  | resources SQM-PIPING [73.9 h] → SQM-PIPING [49.27 h] |
| A6100 | Ø 1" - Cañería Acero Inoxidable - Fabricación | 2025-11-10 → 2026-01-01 (+52d) | 2025-11-11 → 2026-01-03 (+53d) | 2d → 2.18d |  | 103d → 40.33d | A6090 → A6090 SS |  |
| A6140 | Ø 4" - Cañería Acero Inoxidable - Montaje | 2025-11-24 → 2026-01-03 (+40d) | 2025-12-07 → 2026-01-18 (+42d) | 14d → 15.27d |  | 103d → 40.33d |  | resources SQM-PIPING [77.85 h] → SQM-PIPING [48.55 h] |
| A6150 | Ø 3" - Cañería Acero Inoxidable - Montaje | 2025-12-08 → 2026-01-18 (+41d) | 2025-12-11 → 2026-01-23 (+43d) | 4d → 4.36d |  | 103d → 40.33d | A6140 → A6140, A6120 |  |
| A6160 | Ø 2" - Cañería Acero Inoxidable - Montaje | 2025-12-13 → 2026-01-18 (+36d) | 2025-12-15 → 2026-01-22 (+38d) | 3d → 3.27d |  | 102d → 40.33d | A6150, A6180 FF, A6170 FF, Retiro Perfil Exsitente y Soporte de Tuberias Existentes → A6150 SS, A6180 SS, A6170 SS | resources SQM-PIPING [11.17 h] → SQM-PIPING [8.69 h] |
| 2 | **MONTAJE DE VÁLVULAS Y FITTING SECTOR TK-800** | 2025-09-27 → 2025-09-11 (-16d) | 2025-12-15 → 2026-01-07 (+23d) |  |  |  |  |  |
| A6170 | Fitting Sector TK-800 (Global) | 2025-09-27 → 2025-09-11 A (-16d) | 2025-12-15 → 2026-01-07 (+23d) | 80d → 32.73d | 0% → 29% | 102d → 67.38d | A6040 SS+3d, A6110 SS+3d → A6040 SS | resources SQM-PIPING [1443.59 h] → SQM-PIPING [1666.71 h] |
| A6180 | Válvulas Sector TK-800 (Global) | 2025-09-27 → 2025-09-11 A (-16d) | 2025-12-15 → 2026-01-07 (+23d) | 80d → 32.73d | 0% → 29% | 102d → 67.38d | A6040 SS, A6170 SS → A6040 SS | resources SQM-PIPING [266.25 h] → SQM-PIPING [251.25 h] |
| 3 | **TIE IN LÍNEAS ASOCIADAS A TK-800** | 2025-12-16 → 2026-01-22 (+37d) | 2025-12-19 → 2026-01-24 (+36d) |  |  |  |  |  |

| ID | Task | Start | Finish | Duration | Complete | Total float | Predecessors | Other |
| --- | --- | --- | --- | --- | --- | --- | --- | --- |
| A6190 | TIE-IN N° 1431 - 5772-EST-800 FRP a Línea Proyectada 150-TW-5772-I1-1661 | 2025-12-16 → 2026-01-22 (+37d) | 2025-12-17 → 2026-01-24 (+38d) | 2d → 2.18d |  | 102d → 40.33d |  |  |
| A6200 | TIE-IN N° 1432 - 5772-EST-800 FRP a Línea Proyectada 150-TW-5772-I1-1663 | 2025-12-18 → 2026-01-22 (+35d) | 2025-12-19 → 2026-01-24 (+36d) | 2d → 2.18d |  | 102d → 40.33d | A6190 → A6190 SS |  |
| 4 | **FABRICACIÓN Y MONTAJE DE SOPORTES TK-800** | 2025-10-22 → 2025-12-15 (+54d) | 2025-11-09 → 2025-12-19 (+40d) |  |  |  |  |  |
| A6220 | Soporte N°001 - Pedestal Tipo TEE, Acero Estructural para Tuberías Diámetros Pequeños | 2025-10-22 → 2025-12-15 (+54d) | 2025-10-25 → 2025-12-19 (+55d) | 4d → 4.36d |  | 84d → 75.23d | A6110 → A6110 FF |  |
| A6230 | Soporte N°002B - Pedestal con Repisa de Acero Estructural para Tuberías Diámetros Pequeños | 2025-10-26 → 2025-12-15 (+50d) | 2025-10-29 → 2025-12-19 (+51d) | 4d → 4.36d |  | 84d → 75.23d | A6220 → A6220 SS |  |
| A6240 | Soporte N°003 - Tirángulo Tipo Repisa (Existente), Acero Estructural (NOTA 4) | 2025-10-30 → 2025-12-15 (+46d) | 2025-10-30 → 2025-12-15 (+46d) | 1d → 0.91d |  | 84d → 75.23d | A6230 → A6230 SS |  |
| A6250 | Soporte Primario Tipo "U" (Para Uso General) | 2025-10-31 → 2025-12-15 (+45d) | 2025-11-02 → 2025-12-18 (+46d) | 3d → 3.27d |  | 84d → 75.23d | A6240 → A6240 SS | resources SQM-PIPING [12.5 h] → SQM-PIPING [1 h] |
| 4 | **OBRAS ELÉCTRICAS TK-800** | 2025-11-10 → 2025-10-25 (-16d) | 2025-12-22 → 2025-12-24 (+2d) |  |  |  |  |  |
| 1 | **MONTAJE DE CANALIZACIÓN Y FERRETERÍA TK-800** | 2025-11-10 → 2025-10-25 (-16d) | 2025-11-27 → 2025-12-24 (+27d) |  |  |  |  |  |
| A6260 | Canalización y Copla de Conduit de Acero Galvanizado 6"Ø, Conduit ANSI C80.1 | 2025-11-10 → 2025-10-25 A (-16d) | 2025-11-19 → 2025-12-24 (+35d) | 10d → 10.91d | 0% → 12% | 84d → 57.65d | A6030, Retiro Perfil Exsitente y Soporte de Tuberias Existentes → A6030 SS | resources SQM-ELÉCTRICO [64.18 h] → SQM-ELÉCTRICO [521.43 h] |
| A6270 | Canalización y Copla de Conduit Flexible Metálico con Cubierta PVC 6" Ø Trabajo Pesado | 2025-11-20 → 2025-11-04 A (-16d) | 2025-11-21 → 2025-12-16 (+25d) | 2d → 2.18d | 0% → 30% | 84d → 57.65d | A6260 → A6260 SS | resources SQM-ELÉCTRICO [6.72 h] → SQM-ELÉCTRICO [33.6 h] |
| A6280 | Canalización y Copla de Conduit de Acero Galvanizado 1 ½"Ø, Conduit ANSI C80.1 | 2025-11-22 → 2025-11-06 A (-16d) | 2025-11-25 → 2025-12-18 (+23d) | 4d → 4.36d | 0% → 22% | 84d → 57.65d | A6270 → A6270 SS | was named Canalización y Copla de Conduit de Acero Galvanizado 1 Ø"Ø, Conduit ANSI C80.1; resources SQM-ELÉCTRICO [7.56 h] → SQM-ELÉCTRICO [126 h] |
| A6290 | Canalización y Copla de Conduit Flexible Metálico con Cubierta PVC 1 ½" Ø Trabajo Pesado | 2025-11-26 → 2025-12-10 A (+14d) | 2025-11-27 → 2025-12-16 (+19d) | 2d → 2.18d | 0% → 40% | 84d → 57.65d | A6280 → A6280 SS | was named Canalización y Copla de Conduit Flexible Metálico con Cubierta PVC 1 Ø" Ø Trabajo Pesado; resources SQM-ELÉCTRICO [2.52 h] → SQM-ELÉCTRICO [6.3 h] |
| 2 | **TENDIDO Y CONEXIONADO DE CABLES DE ALIMENTACIÓN TK-800** | 2025-11-28 → 2025-11-12 (-16d) | 2025-12-11 → 2025-12-16 (+5d) |  |  |  |  |  |
| A6300 | Cable Monoconductor de Cobre con Aislación XLPE, 1C #350 MCM, Clase 1 kV | 2025-11-28 → 2025-11-12 A (-16d) | 2025-12-11 → 2025-12-16 (+5d) | 14d → 15.27d | 0% → 89% | 84d → 68.88d | A6290, A6280 → A6290 SS, A6280 SS | resources SQM-ELÉCTRICO [710.24 h] → SQM-ELÉCTRICO [1930 h] |
| A6310 | Cable Multiconductor de Cobre con Aislación de XLPE, 1x5C #12 AWG, Clase 1 kV | 2025-12-07 → 2025-11-21 A (-16d) | 2025-12-11 → 2025-12-16 (+5d) | 5d → 5.45d | 0% → 99% | 98d → 68.88d |  | resources SQM-ELÉCTRICO [63.57 h] → SQM-ELÉCTRICO [182.67 h] |
| 3 | **MONTAJE Y CONEXIONADO DE EQUIPOS ELÉCTRICOS TK-800** | 2025-12-12 → 2025-11-26 (-16d) | 2025-12-20 → 2025-12-16 (-4d) |  |  |  |  |  |
| A6320 | Variador de Frecuencia TAG: 5772-VSD-1603 en SEL-403. | 2025-12-12 → 2025-11-26 A (-16d) | 2025-12-13 → 2025-12-12 A (-1d) | 2d → 2.18d | 0% → 100% | 98d → none | A6310 → A6310 SS |  |
| A6330 | Variador de Frecuencia TAG: 5772-VSD-1605 en SEL-403. | 2025-12-14 → 2025-11-28 A (-16d) | 2025-12-15 → 2025-12-13 A (-2d) | 2d → 2.18d | 0% → 100% | 98d → none |  |  |
| A6340 | Modificación de Cubiculo Existente en TAG: 5770-CCM-488, para Suministro de Energía de TAG: 5772-VSD-1603. | 2025-12-16 → 2025-11-30 A (-16d) | 2025-12-17 → 2025-12-13 A (-4d) | 2d → 2.18d | 0% → 100% | 98d → none |  |  |
| A6350 | Modificación de Cubiculo Existente en TAG: 5770-CCM-488, para Suministro de Energía de TAG: 5772-VSD-1605. | 2025-12-18 → 2025-12-02 A (-16d) | 2025-12-19 → 2025-12-12 A (-7d) | 2d → 2.18d | 0% → 100% | 98d → none |  |  |
| A6360 | Conexión de entre CCM TAG: 5770-CCM-488 y VDF TAG: 5772-VSD-1603. | 2025-12-20 → 2025-12-04 A (-16d) | 2025-12-20 → 2025-12-16 (-4d) | 1d → 1.09d | 0% → 100% | 98d → 87.77d |  |  |
| A6370 | Conexión de entre CCM TAG: 5770-CCM-488 y VDF TAG: 5772-VSD-1605. | 2025-12-20 → 2025-12-04 A (-16d) | 2025-12-20 → 2025-12-16 (-4d) | 1d → 1.09d | 0% → 100% | 98d → 87.77d |  |  |
| A6380 | Conexión de entre VDF TAG: 5772-VSD-1603 y Motor TAG: 5772-MTR-1602. | 2025-12-20 → 2025-12-04 A (-16d) | 2025-12-20 → 2025-12-16 (-4d) | 1d → 1.09d | 0% → 100% | 98d → 87.77d |  |  |
| A6390 | Conexión de entre VDF TAG: 5772-VSD-1605 y Motor TAG: 5772-MTR-1604. | 2025-12-20 → 2025-12-04 A (-16d) | 2025-12-20 → 2025-12-16 (-4d) | 1d → 1.09d | 0% → 100% | 98d → 87.77d |  |  |
| 4 | **PRUEBAS DE FUNCIONAMIENTO Y PEM TK-800** | 2025-12-21 → 2025-12-06 (-15d) | 2025-12-22 → 2025-12-06 (-16d) |  |  |  |  |  |
| A6400 | Pruebas de Funcionamiento y Puesta en Marcha de Motor TAG: 5772-MTR-1602. | 2025-12-21 → 2025-12-06 A (-15d) | 2025-12-21 → 2025-12-06 A (-15d) | 1d → 1.09d | 0% → 100% | 98d → none | A6390 → A6390 SS |  |
| A6410 | Pruebas de Funcionamiento y Puesta en Marcha de Motor TAG: 5772-MTR-1604. | 2025-12-22 → 2025-12-06 A (-16d) | 2025-12-22 → 2025-12-06 A (-16d) | 1d → 1.09d | 0% → 100% | 98d → none | A6400, A6250 → A6400 FF |  |
| 5 | **OBRAS DE INSTRUMENTACIÓN TK-800** | 2025-12-12 → 2025-12-04 (-8d) | 2026-01-06 → 2026-01-08 (+2d) |  |  |  |  |  |
| 1 | **MONTAJE DE CANALIZACIÓN Y FERRETERÍA INST. TK-800** | 2025-12-12 → 2025-12-16 (+4d) | 2025-12-20 → 2025-12-26 (+6d) |  |  |  |  |  |
| A6420 | Canalización y Copla de Conduit de Acero Galvanizado 1"Ø, Conduit ANSI C80.1 | 2025-12-12 → 2025-12-16 (+4d) | 2025-12-18 → 2025-12-23 (+5d) | 7d → 7.64d |  | 84d → 57.65d | A6290, A6300 → A6290 | resources SQM-INSTRUMENTACIÓN [16.38 h] → SQM-INSTRUMENTACIÓN [151.2 h] |
| A6430 | Canalización y Copla de Conduit Flexible Metálico con Cubierta PVC 1" Ø Trabajo Pesado | 2025-12-19 → 2025-12-23 (+4d) | 2025-12-20 → 2025-12-26 (+6d) | 2d → 2.18d |  | 84d → 57.65d |  | resources SQM-INSTRUMENTACIÓN [5.04 h] → SQM-INSTRUMENTACIÓN [12.6 h] |
| 2 | **TENDIDO Y CONEXIONADO DE CABLES INSTRUMENTACIÓN TK-800** | 2025-12-21 → 2025-12-26 (+5d) | 2026-01-02 → 2026-01-08 (+6d) |  |  |  |  |  |
| A6440 | Cable Multiconductor de Cobre con Aislación de XLPE, 1x3C #12 AWG, Clase 1 kV | 2025-12-21 → 2025-12-26 (+5d) | 2025-12-23 → 2025-12-29 (+6d) |  |  | 84d → 57.65d |  | resources SQM-INSTRUMENTACIÓN [54.8 h] → SQM-INSTRUMENTACIÓN |
| A6450 | Cable de Instrumentación (Señales Análogas), 1x1 par #16 AWG Apantallado | 2025-12-24 → 2025-12-29 (+5d) | 2026-01-02 → 2026-01-08 (+6d) |  |  | 84d → 57.65d |  | resources SQM-INSTRUMENTACIÓN [88.8 h] → SQM-INSTRUMENTACIÓN |
| 3 | **MONTAJE Y CONEXIONADO DE EQUIPOS E INSTRUMENTOSTK-800** | 2026-01-03 → 2025-12-04 (-30d) | 2026-01-04 → 2025-12-15 (-20d) |  |  |  |  |  |
| A6460 | Instrumento TAG: PIT-1151 | 2026-01-03 → 2025-12-04 A (-30d) | 2026-01-03 → 2025-12-15 (-19d) | 1d → 1.09d | 0% → 90% | 84d → 87.81d | A6450 → A6260 SS |  |
| A6470 | Instrumento TAG: FIT-1152 | 2026-01-04 → 2025-12-05 A (-30d) | 2026-01-04 → 2025-12-15 (-20d) | 1d → 1.09d | 0% → 52% | 84d → 87.81d | A6460 → A6460 SS |  |
| 4 | **PRUEBAS DE FUNCIONAMIENTO Y PEM INST. TK-800** | 2026-01-05 → 2025-12-15 (-21d) | 2026-01-06 → 2025-12-17 (-20d) |  |  |  |  |  |
| A6480 | Pruebas de Operación y Puesta en Marcha de Instrumento TAG: PIT-1151 | 2026-01-05 → 2025-12-15 (-21d) | 2026-01-05 → 2025-12-16 (-20d) | 1d → 1.09d |  | 84d → 87.81d |  |  |
| A6490 | Pruebas de Operación y Puesta en Marcha de Instrumento TAG: FIT-1152 | 2026-01-06 → 2025-12-16 (-21d) | 2026-01-06 → 2025-12-17 (-20d) | 1d → 1.09d |  | 84d → 87.77d |  |  |
| 3 | **ÁREA 5728 - SECTOR TK-3000** | 2025-09-27 → 2025-10-27 (+30d) | 2026-03-16 → 2026-02-03 (-41d) |  |  |  |  |  |
| 1 | **OBRAS CIVILES TK-3000** | 2025-09-27 → 2025-10-27 (+30d) | 2025-10-01 → 2025-12-22 (+82d) |  |  |  |  |  |
| 2 | **FABRICACIÓN Y MONTAJE DE ESTRUCTURA MONORRIEL TK-3000** | 2025-09-27 → 2025-10-27 (+30d) | 2025-10-01 → 2025-12-22 (+82d) |  |  |  |  |  |
| A6550 | Armadura de refuerzo A630-420H Fundaciones TK-3000 | 2025-09-27 → 2025-12-17 (+81d) | 2025-09-29 → 2025-12-20 (+82d) | 3d → 3.27d |  | 85d → 49.98d | A5960 → A6530 | resources SQM-OBRAS CIVILES [10.19 h] → SQM-OOCC [10.19 h] |
| A6540 | Hormigón G30 Pedestal PD-1 (TAG: 5728-BBA-6066 y TAG: 5728-BBA-6063) | 2025-09-30 → 2025-12-20 (+81d) | 2025-10-01 → 2025-12-22 (+82d) | 2d → 2.18d |  | 123d → 49.98d |  | resources SQM-OBRAS CIVILES [9.63 h] → SQM-OOCC [9.63 h] |
| 2 | **OBRAS MECÁNICAS TK-3000** | 2026-02-07 → 2025-11-15 (-84d) | 2026-02-10 → 2025-12-26 (-46d) |  |  |  |  |  |
| 1 | **MONTAJE Y PRUEBAS DE EQUIPOS MECÁNICOS TK-3000** | 2026-02-07 → 2025-11-15 (-84d) | 2026-02-10 → 2025-12-26 (-46d) |  |  |  |  |  |
| A6580 | Bomba Centrífuga y Motor TAG: 5728-BBA-6063; 5728-MTR-6064 | 2026-02-07 → 2025-11-15 A (-84d) | 2026-02-10 → 2025-12-26 (-46d) | 4d → 4.36d | 0% → 12% | 8d → 56.7d | A8370 → A8370 SS |  |
| A6590 | Bomba Centrífuga y Motor TAG: 5728-BBA-6066; 5728-MTR-6067 | 2026-02-07 → 2025-11-19 A (-80d) | 2026-02-10 → 2025-12-26 (-46d) | 4d → 4.36d | 0% → 12% | 8d → 56.7d |  |  |
| 4 | **OBRAS PIPING TK-3000** | 2025-12-19 → 2025-11-19 (-30d) | 2026-02-28 → 2026-02-03 (-25d) |  |  |  |  |  |
| 1 | **FABRICACIÓN Y MONTAJE DE CAÑERÍAS ÁREA TK-3000** | 2025-12-19 → 2025-11-19 (-30d) | 2026-02-17 → 2026-02-03 (-14d) |  |  |  |  |  |
| A6610 | Ø 6" - Cañería Acero Inoxidable - Fabricación | 2025-12-19 → 2025-11-19 A (-30d) | 2026-01-17 → 2025-12-22 (-26d) | 30d → 32.73d | 0% → 76% | 6d → 66.22d | A6550 SS+4d, A4380 → A4380 SS | resources SQM-PIPING [5616 h] → SQM-PIPING [7189 h] |
| A6660 | Ø 6" - Cañería Acero Inoxidable - Montaje | 2025-12-23 → 2025-11-21 A (-32d) | 2026-01-21 → 2025-12-24 (-28d) | 30d → 32.73d | 0% → 72% | 33d → 66.23d | A6610 SS+4d, A6700 SS, A6710 SS, A4490 SS → A6610 SS+2.18d, A6700 FF, A6710 FF, A4490 SS | resources SQM-PIPING [3765.89 h] → SQM-PIPING [3873.6 h] |
| A6640 | Ø 2" - Cañería Acero Inoxidable - Fabricación | 2026-01-22 → 2025-12-15 (-38d) | 2026-02-04 → 2025-12-30 (-36d) | 14d → 15.27d |  | 22d → 75.23d | A6630 → A6630 FF |  |
| A6620 | Ø 4" - Cañería Acero Inoxidable - Fabricación | 2026-01-18 → 2025-12-22 (-27d) | 2026-01-21 → 2025-12-27 (-25d) | 4d → 4.36d |  | 22d → 66.22d |  | resources SQM-PIPING [45.6 h] → SQM-PIPING [60.8 h] |
| A6630 | Ø 3" - Cañería Acero Inoxidable - Fabricación | 2026-01-19 → 2025-12-24 (-26d) | 2026-01-21 → 2025-12-27 (-25d) | 3d → 3.27d |  | 22d → 78.22d |  |  |
| A6650 | Ø 1" - Cañería Acero Inoxidable - Fabricación | 2026-02-02 → 2025-12-27 (-37d) | 2026-02-04 → 2025-12-30 (-36d) | 3d → 3.27d |  | 34d → 75.23d |  |  |
| A6670 | Ø 4" - Cañería Acero Inoxidable - Montaje |  | 2026-01-23 → 2026-01-24 (+1d) | 2d → 2.18d |  | 34d → 40.33d | A6620 → A6620, A6210 SS |  |
| A6680 | Ø 3" - Cañería Acero Inoxidable - Montaje | 2026-01-21 → 2026-01-23 (+2d) | 2026-01-23 → 2026-01-26 (+3d) | 3d → 3.27d |  | 34d → 40.33d | A6670 FF → A6670 SS+1.09d |  |
| A6690 | Ø 2" - Cañería Acero Inoxidable - Montaje | 2026-02-05 → 2026-01-23 (-13d) | 2026-02-17 → 2026-02-03 (-14d) | 13d → 10.91d |  | 22d → 40.33d | A6680, A6640 FF, A6640 → A6680 SS, A6640 SS | resources SQM-PIPING [362.92 h] → SQM-PIPING [273.65 h] |
| 2 | **MONTAJE DE VÁLVULAS Y FITTING SECTOR TK-3000** | 2025-12-19 → 2025-12-15 (-4d) | 2026-02-28 → 2025-12-17 (-73d) |  |  |  |  |  |
| A6700 | Fitting Sector TK-3000 (Global) | 2025-12-19 → 2025-12-15 (-4d) | 2026-02-28 → 2025-12-17 (-73d) | 72d → 2.18d |  | 37d → 73.05d |  | resources SQM-PIPING [5983.57 h] → SQM-PIPING [4812.47 h] |
| A6710 | Válvulas Sector TK-3000 (Global) | 2025-12-19 → 2025-12-15 (-4d) | 2026-02-28 → 2025-12-17 (-73d) | 72d → 2.18d |  | 37d → 73.05d |  | resources SQM-PIPING [607.5 h] → SQM-PIPING [591 h] |
| 3 | **TIE IN LÍNEAS ASOCIADAS A TK-3000** | 2026-02-13 → 2026-01-28 (-16d) | 2026-02-17 → 2026-02-03 (-14d) |  |  |  |  |  |
| A6720 | Perforación de Estanque Existente TK-001 para TIE-IN N°6451, 6452 y 6453. | 2026-02-13 → 2026-01-28 (-16d) | 2026-02-17 → 2026-02-03 (-14d) | 5d → 5.45d |  | 22d → 40.33d | A6690 FF → A6690 FF, A6570 | resources SQM-PIPING [50.67 h] → SQM-PIPING [152 h] |
| A6730 | TIE-IN N° 6451 - 5728-EST-001 FRP a Línea Proyectada 150-LC-5728-I1-6633-A | 2026-02-17 → 2026-01-28 (-20d) | 2026-02-17 → 2026-01-29 (-19d) | 1d → 1.09d |  | 22d → 44.69d | A6720 FF → A6720 SS |  |
| A6740 | TIE-IN N° 6452 - 5728-EST-001 FRP a Línea Proyectada 150-LC-5728-I1-6605-A | 2026-02-17 → 2026-01-28 (-20d) | 2026-02-17 → 2026-01-29 (-19d) | 1d → 1.09d |  | 22d → 44.69d | A6730 FF → A6730 SS |  |
| A6750 | TIE-IN N° 6453 - 5728-EST-001 FRP a Línea Proyectada 150-LC-5817-I1-6604-A | 2026-02-17 → 2026-01-28 (-20d) | 2026-02-17 → 2026-01-29 (-19d) | 1d → 1.09d |  | 22d → 44.69d | A6740 FF, A6650 → A6740 SS, A6650 FF |  |
| 4 | **AISLACIÓN LÍNEAS TK-3000** | 2026-01-22 → 2025-12-15 (-38d) | 2026-02-26 → 2026-01-26 (-31d) |  |  |  |  |  |

| ID | Task | Start | Finish | Duration | Complete | Total float | Predecessors | Other |
| --- | --- | --- | --- | --- | --- | --- | --- | --- |
| A6760 | Ø 6" - Aislación de Lana Mineral de 1,5" de espesor | 2026-01-22 → 2025-12-15 (-38d) | 2026-02-20 → 2026-01-16 (-35d) | 30d → 32.73d |  | 33d → 51.23d | A6660 FF+8d, A6660 → A6660 FF+8.73d | resources SQM-PIPING [5940.48 h] → SQM-PIPING [6114.66 h] |
| A6770 | Ø 4" - Aislación de Lana Mineral de 1,5" de espesor | 2026-02-21 → 2026-01-22 (-30d) | 2026-02-23 → 2026-01-25 (-29d) | 3d → 3.27d |  | 33d → 46.87d | A6670, A6760 → A6670 SS |  |
| A6780 | Ø 3" - Aislación de Lana Mineral de 1,5" de espesor | 2026-02-24 → 2026-01-23 (-32d) | 2026-02-26 → 2026-01-26 (-31d) | 3d → 3.27d |  | 33d → 45.78d | A6680, A6770 → A6680 SS, A6770 SS |  |
| 6 | **FABRICACIÓN Y MONTAJE DE SOPORTES TK-3000** | 2026-01-28 → 2026-01-18 (-10d) | 2026-02-02 → 2026-02-03 (+1d) |  |  |  |  |  |
| A6820 | Soporte N°001 - Pedestal Tipo TEE, Acero Estructural para Tuberías Diámetros Pequeños | 2026-01-28 → 2026-01-18 (-10d) | 2026-02-02 → 2026-01-25 (-8d) | 6d → 6.55d |  | 1d → 40.33d | A6660 SS, A4630 SS → A6660 SS, A4630 |  |
| A6830 | Soporte N°002 - Pedestal con Repisa de Acero Estructural para Tuberías Diámetros Pequeños | 2026-01-28 → 2026-01-25 (-3d) | 2026-01-31 → 2026-01-29 (-2d) | 4d → 4.36d |  | 1d → 40.33d | A6820 SS → A6820 |  |
| A6870 | Soporte Primario Tipo "U" (Para Uso General) | 2026-01-28 → 2026-01-27 (-1d) | 2026-02-02 → 2026-02-03 (+1d) | 6d → 6.55d |  | 1d → 40.33d | A6860 SS → A6860 FF | resources SQM-PIPING [69.3 h] → SQM-PIPING [3.66 h] |
| A6840 | Soporte N°003 - Pedestal, Acero Estructural para Tuberías Diámetros Pequeños | 2026-01-28 → 2026-01-29 (+1d) | 2026-01-31 → 2026-02-03 (+3d) | 4d → 4.36d |  | 1d → 40.33d | A6830 SS → A6830 |  |
| A6850 | Soporte N°004 - Pedestal y Voladizo Tipo Simple, Acero Estructural para Tuberías Diámetros Pequeños | 2026-01-28 → 2026-01-29 (+1d) | 2026-01-31 → 2026-02-03 (+3d) | 4d → 4.36d |  | 1d → 40.33d | A6840 SS → A6840 FF |  |
| A6860 | Soporte N°005 - Arco Tipo Colgante, Acero Estructural para Tuberías Diámetros Pequeños | 2026-01-28 → 2026-01-29 (+1d) | 2026-01-31 → 2026-02-03 (+3d) | 4d → 4.36d |  | 1d → 40.33d | A6850 SS → A6850 FF | resources SQM-PIPING → SQM-PIPING [4.25 h] |
| 5 | **OBRAS ELÉCTRICAS TK-3000** | 2026-02-11 → 2025-11-23 (-80d) | 2026-03-14 → 2026-01-14 (-59d) |  |  |  |  |  |
| 1 | **MONTAJE DE CANALIZACIÓN Y FERRETERÍA TK-3000** | 2026-02-11 → 2025-11-23 (-80d) | 2026-02-17 → 2025-12-27 (-52d) |  |  |  |  |  |
| A6880 | Canalización y Copla de Conduit de Acero Galvanizado 6"Ø, Conduit ANSI C80.1 | 2026-02-11 → 2025-11-23 A (-80d) | 2026-02-14 → 2025-12-26 (-50d) | 4d → 4.36d | 0% → 19% | 8d → 56.7d | A6590, A6260 SS → A6590 SS, A6260 SS | resources SQM-ELÉCTRICO [40.11 h] → SQM-ELÉCTRICO [802.2 h] |
| A6890 | Canalización y Copla de Conduit Flexible Metálico con Cubierta PVC 6" Ø Trabajo Pesado. | 2026-02-11 → 2025-11-27 A (-76d) | 2026-02-12 → 2025-12-23 (-51d) | 2d → 2.18d | 0% → 48% | 8d → 56.7d |  | resources SQM-ELÉCTRICO [6.72 h] → SQM-ELÉCTRICO [33.6 h] |
| A6900 | Canalización y Copla de Conduit de Acero Galvanizado 1 ½"Ø, Conduit ANSI C80.1 | 2026-02-13 → 2025-11-29 A (-76d) | 2026-02-17 → 2025-12-27 (-52d) | 5d → 5.45d | 0% → 20% | 8d → 56.7d | A6890 → A6890 SS | was named Canalización y Copla de Conduit de Acero Galvanizado 1 Ø"Ø, Conduit ANSI C80.1; resources SQM-ELÉCTRICO [10.08 h] → SQM-ELÉCTRICO [214.2 h] |
| A6910 | Canalización y Copla de Conduit Flexible Metálico con Cubierta PVC 1 ½" Ø Trabajo Pesado. | 2026-02-13 → 2025-12-04 A (-71d) | 2026-02-14 → 2025-12-23 (-53d) | 2d → 2.18d | 0% → 80% | 8d → 56.7d |  | was named Canalización y Copla de Conduit Flexible Metálico con Cubierta PVC 1 Ø" Ø Trabajo Pesado.; resources SQM-ELÉCTRICO [2.52 h] → SQM-ELÉCTRICO [6.3 h] |
| 2 | **TENDIDO Y CONEXIONADO DE CABLES DE ALIMENTACIÓN TK-3000** | 2026-02-13 → 2025-12-01 (-74d) | 2026-02-27 → 2025-12-25 (-64d) |  |  |  |  |  |
| A6930 | Cable Multiconductor de Cobre con Aislación de XLPE, 1x5C #12 AWG, Clase 1 kV | 2026-02-23 → 2025-12-01 A (-84d) | 2026-02-27 → 2025-12-25 (-64d) | 5d → 5.45d | 0% → 99% | 15d → 70.99d |  | resources SQM-ELÉCTRICO [226.32 h] → SQM-ELÉCTRICO [184.5 h] |
| A6920 | Cable Monoconductor de Cobre con Aislación XLPE, 1C #350 MCM, Clase 1 kV | 2026-02-13 → 2025-12-04 A (-71d) | 2026-02-27 → 2025-12-25 (-64d) | 15d → 16.36d | 0% → 81% | 15d → 70.99d |  | resources SQM-ELÉCTRICO [1791.04 h] → SQM-ELÉCTRICO [1544 h] |
| 3 | **MONTAJE Y CONEXIONADO DE EQUIPOS ELÉCTRICOS TK-3000** | 2026-02-28 → 2025-12-01 (-89d) | 2026-03-10 → 2026-01-10 (-59d) |  |  |  |  |  |
| A6940 | Variador de Frecuencia TAG: 5728-VSD-6065 en SEL-401. | 2026-02-28 → 2025-12-01 A (-89d) | 2026-03-01 → 2025-12-26 (-65d) | 2d → 2.18d | 0% → 90% | 15d → 70.99d | A6920, A6930 → A6920 SS, A6930 SS |  |
| A6950 | Variador de Frecuencia TAG: 5728-VSD-6068 en SEL-401. | 2026-03-02 → 2025-12-01 A (-91d) | 2026-03-03 → 2025-12-26 (-67d) | 2d → 2.18d | 0% → 90% | 15d → 70.99d | A6940 → A6940 SS |  |
| A6960 | Modificación de Cubiculo Existente en TAG: 5770-CCM-431, para Suministro de Energía de TAG: 5728-VSD-6065. | 2026-03-04 → 2025-12-01 A (-93d) | 2026-03-05 → 2025-12-02 A (-93d) | 2d → 2.18d | 0% → 100% | 15d → none | A6950 → A6950 SS |  |
| A6970 | Modificación de Cubiculo Existente en TAG: 5770-CCM-431, para Suministro de Energía de TAG: 5728-VSD-6068. | 2026-03-06 → 2025-12-01 A (-95d) | 2026-03-07 → 2025-12-02 A (-95d) | 2d → 2.18d | 0% → 100% | 15d → none |  |  |
| A6980 | Conexión de entre CCM TAG: 5770-CCM-431 y VDF TAG: 5728-VSD-6065. | 2026-03-07 → 2025-12-01 A (-96d) | 2026-03-07 → 2025-12-25 (-72d) | 1d → 1.09d | 0% → 50% | 15d → 70.99d |  |  |
| A6990 | Conexión de entre CCM TAG: 5770-CCM-431 y VDF TAG: 5728-VSD-6068. | 2026-03-08 → 2025-12-01 A (-97d) | 2026-03-08 → 2025-12-25 (-73d) | 1d → 1.09d | 0% → 50% | 15d → 70.99d | A6980 → A6980 SS |  |
| A7000 | Conexión de entre VDF TAG: 5728-VSD-6065 y Motor TAG: 5728-MTR-6064. | 2026-03-09 → 2026-01-08 (-60d) | 2026-03-09 → 2026-01-09 (-59d) | 1d → 1.09d |  | 15d → 57.65d | A6990 → A6990, A6450 |  |
| A7010 | Conexión de entre VDF TAG: 5728-VSD-6068 y Motor TAG: 5728-MTR-6067. | 2026-03-10 → 2026-01-09 (-60d) | 2026-03-10 → 2026-01-10 (-59d) | 1d → 1.09d |  | 15d → 57.65d |  |  |
| 4 | **PRUEBAS DE FUNCIONAMIENTO Y PEM TK-3000** | 2026-03-11 → 2026-01-10 (-60d) | 2026-03-14 → 2026-01-14 (-59d) |  |  |  |  |  |
| A7020 | Pruebas de Funcionamiento y Puesta en Marcha de Motor TAG: 5728-MTR-6065. | 2026-03-11 → 2026-01-10 (-60d) | 2026-03-12 → 2026-01-12 (-59d) | 2d → 2.18d |  | 15d → 57.65d | A7010, A6690 → A7010 |  |
| A7030 | Pruebas de Funcionamiento y Puesta en Marcha de Motor TAG: 5728-MTR-6067. | 2026-03-13 → 2026-01-12 (-60d) | 2026-03-14 → 2026-01-14 (-59d) | 2d → 2.18d |  | 15d → 57.65d |  |  |
| 6 | **OBRAS DE INSTRUMENTACIÓN TK-3000** | 2026-02-13 → 2025-12-01 (-74d) | 2026-03-16 → 2026-02-03 (-41d) |  |  |  |  |  |
| 1 | **MONTAJE DE CANALIZACIÓN Y FERRETERÍA INST. TK-3000** | 2026-02-13 → 2025-12-04 (-71d) | 2026-02-28 → 2026-01-09 (-50d) |  |  |  |  |  |
| A7040 | EPC y Copla Porta Conductores 600x100mm e:2,5 mm, tiras 3m. Incluir tapa dos aguas, eclisas y pernos de unión. | 2026-02-13 → 2025-12-04 A (-71d) | 2026-02-15 → 2025-12-25 (-52d) | 3d → 3.27d | 0% → 10% | 8d → 56.7d |  | was named EPC y Copla Porta Conductores 600x100mm e:2,5 mm, tiras 3m. Incluir tapa dos aguas, eclisas y pernos de Unión.; resources SQM-INSTRUMENTACIÓN [140 h] → SQM-INSTRUMENTACIÓN [168 h] |
| A7050 | EPC Curva Tipo "T", 600x100x2,5mm. Incluir tapa dos aguas, eclisas y pernos de unión. | 2026-02-13 → 2025-12-04 A (-71d) | 2026-02-15 → 2025-12-25 (-52d) | 3d → 3.27d | 0% → 10% | 8d → 56.7d |  | was named EPC Curva Tipo "T", 600x100x2,5mm. Incluir tapa dos aguas, eclisas y pernos de Unión. |
| A7060 | Canalización y Copla de Conduit de Acero Galvanizado 1"Ø, Conduit ANSI C80.1 | 2026-02-13 → 2025-12-22 (-53d) | 2026-02-24 → 2026-01-04 (-51d) | 12d → 13.09d |  | 8d → 56.7d |  | resources SQM-INSTRUMENTACIÓN [368.55 h] → SQM-INSTRUMENTACIÓN [907.2 h] |
| A7070 | Canalización y Copla de Conduit Flexible Metálico con Cubierta PVC 1" Ø Trabajo Pesado | 2026-02-25 → 2026-01-04 (-52d) | 2026-02-28 → 2026-01-09 (-50d) | 4d → 4.36d |  | 31d → 65.25d |  | resources SQM-INSTRUMENTACIÓN [44.35 h] → SQM-INSTRUMENTACIÓN [100.8 h] |
| 2 | **TENDIDO Y CONEXIONADO DE CABLES INSTRUMENTACIÓN TK-3000** | 2026-02-13 → 2025-12-01 (-74d) | 2026-03-06 → 2026-01-08 (-57d) |  |  |  |  |  |
| A7100 | Cable Multiconductor de Cobre Blando 1x3C #12 AWG, Clase 0,3 | 2026-02-21 → 2025-12-01 A (-82d) | 2026-03-06 → 2026-01-07 (-58d) | 14d → 15.27d | 0% → 10% | 8d → 56.7d | A7090 → A7090 SS | resources SQM-INSTRUMENTACIÓN [617.41 h] → SQM-INSTRUMENTACIÓN [774.51 h] |
| A7090 | Cable de Instrumentación (Señales Análogas), 1x1 par #16 AWG Apantallado | 2026-02-13 → 2025-12-04 A (-71d) | 2026-02-20 → 2025-12-28 (-54d) | 8d → 8.73d | 0% → 58% | 8d → 56.7d | A7080 SS → A7080 FF | resources SQM-INSTRUMENTACIÓN [153.92 h] → SQM-INSTRUMENTACIÓN [192.4 h] |
| A7080 | Cable Multiconductor de Cobre con Aislación de XLPE, 1x3C #12 AWG, Clase 1 kV | 2026-02-13 → 2025-12-22 (-53d) | 2026-02-17 → 2025-12-28 (-51d) | 5d → 5.45d |  | 8d → 56.7d |  | resources SQM-INSTRUMENTACIÓN [94.99 h] → SQM-INSTRUMENTACIÓN [120.56 h] |
| A7110 | Cable Multiconductor de Cobre Blando 1x5C #12 AWG, Clase 0,3 | 2026-02-21 → 2025-12-24 (-59d) | 2026-03-06 → 2026-01-08 (-57d) | 14d → 15.27d |  | 8d → 56.7d |  | resources SQM-INSTRUMENTACIÓN [617.41 h] → SQM-INSTRUMENTACIÓN [774.51 h] |
| 3 | **MONTAJE Y CONEXIONADO DE EQUIPOS E INSTRUMENTOSTK-3000** | 2026-03-07 → 2025-12-01 (-96d) | 2026-03-14 → 2026-01-15 (-58d) |  |  |  |  |  |
| A7120 | Instrumento TAG: PIT-6204 | 2026-03-07 → 2025-12-01 A (-96d) | 2026-03-08 → 2026-01-08 (-59d) | 2d → 2.18d | 0% → 10% | 8d → 56.7d | A6660, A7110 → A7110 FF |  |
| A7130 | Instrumento TAG: PIT-6214 | 2026-03-07 → 2025-12-01 A (-96d) | 2026-03-08 → 2026-01-08 (-59d) | 2d → 2.18d | 0% → 10% | 8d → 56.7d |  |  |
| A7140 | Instrumento TAG: UIT-6218 | 2026-03-07 → 2026-01-06 (-60d) | 2026-03-08 → 2026-01-09 (-58d) | 2d → 2.18d |  | 8d → 56.7d |  |  |
| A7150 | Instrumento TAG: UIT-6220 | 2026-03-07 → 2026-01-06 (-60d) | 2026-03-08 → 2026-01-09 (-58d) | 2d → 2.18d |  | 8d → 56.7d |  |  |
| A7160 | Instrumento TAG: XV-1153 | 2026-03-07 → 2026-01-06 (-60d) | 2026-03-08 → 2026-01-09 (-58d) | 2d → 2.18d |  | 8d → 56.7d |  |  |
| A7170 | Instrumento TAG: XV-1154 | 2026-03-09 → 2026-01-09 (-59d) | 2026-03-10 → 2026-01-11 (-58d) | 2d → 2.18d |  | 8d → 56.7d |  |  |
| A7180 | Instrumento TAG: XV-1155 | 2026-03-09 → 2026-01-09 (-59d) | 2026-03-10 → 2026-01-11 (-58d) | 2d → 2.18d |  | 8d → 56.7d |  |  |
| A7190 | Instrumento TAG: XV-1156 | 2026-03-09 → 2026-01-09 (-59d) | 2026-03-10 → 2026-01-11 (-58d) | 2d → 2.18d |  | 8d → 56.7d |  |  |
| A7200 | Instrumento TAG: XV-1157 | 2026-03-09 → 2026-01-09 (-59d) | 2026-03-10 → 2026-01-11 (-58d) | 2d → 2.18d |  | 8d → 56.7d |  |  |
| A7210 | Instrumento TAG: XV-6201 | 2026-03-09 → 2026-01-09 (-59d) | 2026-03-10 → 2026-01-11 (-58d) | 2d → 2.18d |  | 8d → 56.7d |  |  |
| A7220 | Instrumento TAG: XV-6204 | 2026-03-11 → 2026-01-11 (-59d) | 2026-03-12 → 2026-01-13 (-58d) | 2d → 2.18d |  | 8d → 56.7d |  |  |
| A7230 | Instrumento TAG: XV-6205 | 2026-03-11 → 2026-01-11 (-59d) | 2026-03-12 → 2026-01-13 (-58d) | 2d → 2.18d |  | 8d → 56.7d |  |  |
| A7240 | Instrumento TAG: XV-6210 | 2026-03-11 → 2026-01-11 (-59d) | 2026-03-12 → 2026-01-13 (-58d) | 2d → 2.18d |  | 8d → 56.7d |  |  |
| A7250 | Instrumento TAG: XV-6211 | 2026-03-11 → 2026-01-11 (-59d) | 2026-03-12 → 2026-01-13 (-58d) | 2d → 2.18d |  | 8d → 56.7d |  |  |
| A7260 | Instrumento TAG: XV-6214 | 2026-03-11 → 2026-01-11 (-59d) | 2026-03-12 → 2026-01-13 (-58d) | 2d → 2.18d |  | 8d → 56.7d |  |  |
| A7270 | Instrumento TAG: XV-6215 | 2026-03-13 → 2026-01-13 (-59d) | 2026-03-14 → 2026-01-15 (-58d) | 2d → 2.18d |  | 8d → 56.7d |  |  |
| A7280 | Instrumento TAG: XV-6221 | 2026-03-13 → 2026-01-13 (-59d) | 2026-03-14 → 2026-01-15 (-58d) | 2d → 2.18d |  | 8d → 56.7d |  |  |
| 4 | **PRUEBAS DE FUNCIONAMIENTO Y PEM INST. TK-3000** | 2026-03-11 → 2026-01-11 (-59d) | 2026-03-16 → 2026-02-03 (-41d) |  |  |  |  |  |
| A7290 | Pruebas de Operación y Puesta en Marcha de Instrumento TAG: PIT-6204 | 2026-03-11 → 2026-01-11 (-59d) | 2026-03-12 → 2026-01-13 (-58d) | 2d → 2.18d |  | 15d → 56.7d |  |  |
| A7300 | Pruebas de Operación y Puesta en Marcha de Instrumento TAG: PIT-6214 | 2026-03-11 → 2026-01-11 (-59d) | 2026-03-12 → 2026-01-13 (-58d) | 2d → 2.18d |  | 15d → 56.7d |  |  |
| A7310 | Pruebas de Operación y Puesta en Marcha de Instrumento TAG: UIT-6218 | 2026-03-11 → 2026-01-11 (-59d) | 2026-03-12 → 2026-01-13 (-58d) | 2d → 2.18d |  | 15d → 56.7d |  |  |
| A7320 | Pruebas de Operación y Puesta en Marcha de Instrumento TAG: UIT-6220 | 2026-03-11 → 2026-01-11 (-59d) | 2026-03-12 → 2026-01-13 (-58d) | 2d → 2.18d |  | 15d → 56.7d |  |  |
| A7330 | Pruebas de Operación y Puesta en Marcha de Instrumento TAG: XV-1153 | 2026-03-11 → 2026-01-11 (-59d) | 2026-03-12 → 2026-01-13 (-58d) | 2d → 2.18d |  | 15d → 56.7d |  |  |
| A7340 | Pruebas de Operación y Puesta en Marcha de Instrumento TAG: XV-1154 | 2026-03-13 → 2026-01-13 (-59d) | 2026-03-14 → 2026-01-15 (-58d) | 2d → 2.18d |  | 15d → 56.7d |  |  |
| A7350 | Pruebas de Operación y Puesta en Marcha de Instrumento TAG: XV-1155 | 2026-03-13 → 2026-01-13 (-59d) | 2026-03-14 → 2026-01-15 (-58d) | 2d → 2.18d |  | 15d → 56.7d |  |  |
| A7360 | Pruebas de Operación y Puesta en Marcha de Instrumento TAG: XV-1156 | 2026-03-13 → 2026-01-13 (-59d) | 2026-03-14 → 2026-01-15 (-58d) | 2d → 2.18d |  | 15d → 56.7d |  |  |
| A7370 | Pruebas de Operación y Puesta en Marcha de Instrumento TAG: XV-1157 | 2026-03-13 → 2026-01-13 (-59d) | 2026-03-14 → 2026-01-15 (-58d) | 2d → 2.18d |  | 15d → 56.7d |  |  |

| ID | Task | Start | Finish | Duration | Complete | Total float | Predecessors | Other |
| --- | --- | --- | --- | --- | --- | --- | --- | --- |
| A7380 | Pruebas de Operación y Puesta en Marcha de Instrumento TAG: XV-6201 | 2026-03-13 → 2026-01-13 (-59d) | 2026-03-14 → 2026-01-15 (-58d) | 2d → 2.18d |  | 15d → 56.7d |  |  |
| A7390 | Pruebas de Operación y Puesta en Marcha de Instrumento TAG: XV-6204 | 2026-03-15 → 2026-01-15 (-59d) | 2026-03-16 → 2026-01-17 (-58d) | 2d → 2.18d |  | 15d → 56.7d |  |  |
| A7400 | Pruebas de Operación y Puesta en Marcha de Instrumento TAG: XV-6205 | 2026-03-15 → 2026-01-15 (-59d) | 2026-03-16 → 2026-01-17 (-58d) | 2d → 2.18d |  | 15d → 56.7d |  |  |
| A7410 | Pruebas de Operación y Puesta en Marcha de Instrumento TAG: XV-6210 | 2026-03-15 → 2026-01-15 (-59d) | 2026-03-16 → 2026-01-17 (-58d) | 2d → 2.18d |  | 15d → 56.7d |  |  |
| A7420 | Pruebas de Operación y Puesta en Marcha de Instrumento TAG: XV-6211 | 2026-03-15 → 2026-01-15 (-59d) | 2026-03-16 → 2026-01-17 (-58d) | 2d → 2.18d |  | 15d → 56.7d |  |  |
| A7430 | Pruebas de Operación y Puesta en Marcha de Instrumento TAG: XV-6214 | 2026-03-15 → 2026-01-15 (-59d) | 2026-03-16 → 2026-01-17 (-58d) | 2d → 2.18d |  | 15d → 56.7d |  |  |
| A7440 | Pruebas de Operación y Puesta en Marcha de Instrumento TAG: XV-6215 | 2026-03-15 → 2026-02-01 (-42d) | 2026-03-16 → 2026-02-03 (-41d) | 2d → 2.18d |  | 15d → 40.33d | A7430 SS → A7430 SS, A6810 FF |  |
| 4 | **ÁREA 5827 - SECTOR ESTANQUES L5 LiOH (TK-6100)** | 2026-01-18 → 2025-12-01 (-48d) | 2026-03-25 → 2026-02-03 (-50d) |  |  |  |  |  |
| 1 | **OBRAS PIPING SECTOR ESTANQUES L5 LiOH (TK-6100)** | 2026-01-18 → 2025-12-15 (-34d) | 2026-03-25 → 2026-02-03 (-50d) |  |  |  |  |  |
| 1 | **FABRICACIÓN Y MONTAJE DE CAÑERÍAS ÁREA ESTANQUES L5 LiOH (TK-6100)** | 2026-01-18 → 2025-12-15 (-34d) | 2026-03-22 → 2026-01-31 (-50d) |  |  |  |  |  |
| A7450 | Ø 6" - Cañería Acero Inoxidable - Fabricación | 2026-01-18 → 2025-12-15 (-34d) | 2026-02-20 → 2026-01-29 (-22d) | 34d → 45.82d |  | 6d → 40.33d | A6610 → A6610 FF, A1620 SS | resources SQM-PIPING [1755 h] → SQM-PIPING [2457 h] |
| A7500 | Ø 6" - Cañería Acero Inoxidable - Montaje | 2026-02-21 → 2025-12-17 (-66d) | 2026-03-22 → 2026-01-31 (-50d) | 30d → 45.82d |  | 6d → 42.51d | A7450 SS+2d, A7450 → A7450 SS+2.18d | resources SQM-PIPING [903.92 h] → SQM-PIPING [1169.67 h] |
| A7470 | Ø 3" - Cañería Acero Inoxidable - Fabricación | 2026-01-23 → 2025-12-27 (-27d) | 2026-02-19 → 2026-01-26 (-24d) | 28d → 30.55d |  | 38d → 45.78d | A7450 SS+5d → A7450 SS+5.45d, A1630, A6780 FF |  |
| A7520 | Ø 3" - Cañería Acero Inoxidable - Montaje | 2026-01-25 → 2025-12-29 (-27d) | 2026-02-21 → 2026-01-28 (-24d) | 28d → 30.55d |  | 38d → 45.78d | A7470 FF+2d → A7470 SS+2.18d | resources SQM-PIPING [345.72 h] → SQM-PIPING [579.43 h] |
| A7530 | Ø 2" - Cañería Acero Inoxidable - Montaje | 2026-02-21 → 2026-01-14 (-38d) | 2026-03-06 → 2026-01-29 (-36d) | 14d → 15.27d |  | 25d → 44.69d | A7480 FF, A7480 → A7480 FF |  |
| A7540 | Ø 3" - Cañería CPVC, SCH 80 - Montaje | 2026-02-18 → 2026-01-14 (-35d) | 2026-03-03 → 2026-01-29 (-33d) | 14d → 15.27d |  | 22d → 44.69d | A7490 FF, A6750 → A7490 FF, A6750 FF | resources SQM-PIPING [92.4 h] → SQM-PIPING [138.6 h] |
| A7480 | Ø 2" - Cañería Acero Inoxidable - Fabricación | 2026-02-07 → 2026-01-15 (-23d) | 2026-02-20 → 2026-01-29 (-22d) | 14d → 13.91d |  | 25d → 44.69d |  | resources SQM-PIPING [258.65 h] → SQM-PIPING |
| A7460 | Ø 4" - Cañería Acero Inoxidable - Fabricación | 2026-02-11 → 2026-01-18 (-24d) | 2026-02-20 → 2026-01-29 (-22d) | 10d → 10.91d |  | 25d → 40.33d |  | resources SQM-PIPING [197.6 h] → SQM-PIPING [425.6 h] |
| A7510 | Ø 4" - Cañería Acero Inoxidable - Montaje | 2026-03-13 → 2026-01-18 (-54d) | 2026-03-22 → 2026-01-29 (-52d) | 10d → 10.91d |  | 9d → 40.33d | A7500 FF, A7460 FF, A7460 → A7500 SS, A7460 SS | resources SQM-PIPING [35.17 h] → SQM-PIPING [32.83 h] |
| A7490 | Ø 3" - Cañería CPVC, SCH 80 - Fabricación | 2026-02-07 → 2026-01-21 (-17d) | 2026-02-14 → 2026-01-29 (-16d) | 8d → 8.73d |  | 39d → 44.69d | A7480 SS → A7480 FF |  |
| 2 | **MONTAJE DE VÁLVULAS Y FITTING SECTOR ESTANQUES L5 LiOH (TK-6100)** | 2026-01-18 → 2025-12-15 (-34d) | 2026-03-22 → 2026-01-29 (-52d) |  |  |  |  |  |
| A7550 | Fitting Sector L5 LiOH - TK-6100 (Global) | 2026-01-18 → 2025-12-15 (-34d) | 2026-03-22 → 2026-01-29 (-52d) | 64d → 45.82d |  | 9d → 44.69d |  | resources SQM-PIPING [3375.27 h] → SQM-PIPING [3535.19 h] |
| A7560 | Válvulas Sector L5 LiOH - TK-6100 (Global) | 2026-01-18 → 2025-12-28 (-21d) | 2026-03-22 → 2026-01-29 (-52d) | 64d → 32.73d |  | 9d → 44.69d | A7450 SS, A7530 FF, A7550 SS → A7450 SS, A7530 FF, A7550 SS+10.91d |  |
| 3 | **TIE IN LÍNEAS ASOCIADAS A ESTANQUES L5 LiOH (TK-6100)** | 2026-03-04 → 2026-01-27 (-36d) | 2026-03-24 → 2026-01-29 (-54d) |  |  |  |  |  |
| A7570 | TIE-IN N° 6454 - 5827-EST-6100 Ac. Inox. a Línea Proyectada 100-LC-5827-I1-6615-A | 2026-03-23 → 2026-01-27 (-55d) | 2026-03-24 → 2026-01-29 (-54d) | 2d → 2.18d |  | 7d → 44.69d | A7530 FF, A7560 FF, A7500 → A7530 FF, A7560 FF |  |
| A7580 | TIE-IN N° 6455 - 5827-EST-6100 Ac. Inox. a Línea Proyectada 100-LC-5827-I1-6619-A | 2026-03-23 → 2026-01-27 (-55d) | 2026-03-24 → 2026-01-29 (-54d) | 2d → 2.18d |  | 7d → 44.69d | A7570 SS → A7570 FF |  |
| A7590 | TIE-IN N° 6458 - 5827-EST-7100 Ac Inox. a Línea Proyectada 80-LC-5827-I1-6623-A | 2026-03-23 → 2026-01-27 (-55d) | 2026-03-24 → 2026-01-29 (-54d) | 2d → 2.18d |  | 7d → 44.69d |  |  |
| A7600 | TIE-IN N° 6459 - 5827-EST-7100 Ac. Inox. a Línea Proyectada 80-LC-5827-I1-6626-A | 2026-03-23 → 2026-01-27 (-55d) | 2026-03-24 → 2026-01-29 (-54d) | 2d → 2.18d |  | 7d → 44.69d | A7590 FF, A7640, A7520 FF → A7590 FF, A7640 FF, A7520 FF |  |
| A7610 | TIE-IN N° 6456 - 5827-EST-6050 Ac. Inoc. a Línea Proyectada 80-DR-5827-P2-6625 | 2026-03-04 → 2026-01-27 (-36d) | 2026-03-05 → 2026-01-29 (-35d) | 2d → 2.18d |  | 22d → 44.69d | A7540 → A7540 FF |  |
| A7620 | TIE-IN N° 6457 - 5827-EST-6050 Ac. Inox. a Línea Proyectada 80-DR-5827-P2-6622 | 2026-03-04 → 2026-01-27 (-36d) | 2026-03-05 → 2026-01-29 (-35d) | 2d → 2.18d |  | 22d → 44.69d | A7610 SS → A7610 FF |  |
| A7630 | TIE-IN N° 6460 -5827-EST-7050 Ac. Inox. a Línea Proyectada 80-DR-5827-P2-6627 | 2026-03-06 → 2026-01-27 (-38d) | 2026-03-07 → 2026-01-29 (-37d) | 2d → 2.18d |  | 22d → 44.69d | A7620 → A7620 FF |  |
| A7640 | TIE-IN N° 6461 - 5827-EST-7050 Ac. Inox. a Línea Proyectada 80-DR-5827-P2-6624 | 2026-03-06 → 2026-01-27 (-38d) | 2026-03-07 → 2026-01-29 (-37d) | 2d → 2.18d |  | 22d → 44.69d | A7630 SS → A7630 FF |  |
| 4 | **AISLACIÓN LÍNEAS L5 LiOH (TK-6100)** | 2026-03-12 → 2026-01-01 (-70d) | 2026-03-25 → 2026-02-03 (-50d) |  |  |  |  |  |
| A7650 | Ø 6" - Aislación de Lana Mineral de 1,5" de espesor | 2026-03-23 → 2026-01-01 (-81d) | 2026-03-25 → 2026-01-31 (-53d) | 3d → 30.55d |  | 6d → 42.51d | A7500 FF, A7500 → A7500 FF | resources SQM-PIPING [1426.88 h] → SQM-PIPING [1846.38 h] |
| A7660 | Ø 4" - Aislación de Lana Mineral de 1,5" de espesor | 2026-03-23 → 2026-01-18 (-64d) | 2026-03-25 → 2026-01-22 (-62d) | 3d → 3.27d |  | 6d → 40.33d | A7650 FF, A7510 FF → A7650 SS, A7510 SS | resources SQM-PIPING [72 h] → SQM-PIPING [67.2 h] |
| A7670 | Ø 3" - Aislación de Lana Mineral de 1,5" de espesor | 2026-03-12 → 2026-01-18 (-53d) | 2026-03-25 → 2026-02-03 (-50d) | 14d → 15.27d |  | 6d → 40.33d | A7660 FF, A7530 FF, A7640 FF, A7520 FF, A7600 FF → A7660 SS, A7520 SS | resources SQM-PIPING [550.4 h] → SQM-PIPING [915.2 h] |
| 2 | **OBRAS DE INSTRUMENTACIÓN SECTOR ESTANQUES L5 LiOH (TK-6100)** | 2026-02-15 → 2025-12-01 (-76d) | 2026-03-23 → 2026-01-06 (-76d) |  |  |  |  |  |
| 1 | **MONTAJE DE CANALIZACIÓN Y FERRETERÍA INST. ESTANQUES L5 LiOH (TK-6100)** | 2026-02-15 → 2025-12-23 (-54d) | 2026-02-15 → 2025-12-25 (-52d) |  |  |  |  |  |
| A7680 | Canalización y Copla de Conduit de Acero Galvanizado 1"Ø, Conduit ANSI C80.1 | 2026-02-15 → 2025-12-23 (-54d) | 2026-02-15 → 2025-12-24 (-53d) | 1d → 1.09d |  | 21d → 67.74d |  | resources SQM-INSTRUMENTACIÓN [333.9 h] → SQM-INSTRUMENTACIÓN [1.26 h] |
| A7690 | Canalización y Copla de Conduit Flexible Metálico con Cubierta PVC 1" Ø Trabajo Pesado | 2026-02-15 → 2025-12-24 (-53d) | 2026-02-15 → 2025-12-25 (-52d) | 1d → 1.09d |  | 21d → 67.74d | A7680 SS → A7680 | resources SQM-INSTRUMENTACIÓN [70.56 h] → SQM-INSTRUMENTACIÓN [1.26 h] |
| 2 | **TENDIDO Y CONEXIONADO DE CABLES INSTRUMENTACIÓN ESTANQUES L5 LiOH (TK-6100)** | 2026-02-15 → 2025-12-01 (-76d) | 2026-02-22 → 2025-12-30 (-54d) |  |  |  |  |  |
| A7710 | Cable de Instrumentación (Señales Análogas), 1x1 par #16 AWG Apantallado | 2026-02-15 → 2025-12-01 A (-76d) | 2026-02-17 → 2025-12-23 (-56d) | 3d → 3.27d | 0% → 55% | 21d → 67.74d |  | resources SQM-INSTRUMENTACIÓN [346.32 h] → SQM-INSTRUMENTACIÓN [192.4 h] |
| A7720 | Cable Multiconductor de Cobre Blando 1x3C #12 AWG, Clase 0,3 | 2026-02-18 → 2025-12-01 A (-79d) | 2026-02-22 → 2025-12-24 (-60d) | 5d → 5.45d | 0% → 56% | 21d → 67.74d | A7710 → A7710 SS | resources SQM-INSTRUMENTACIÓN [189.97 h] → SQM-INSTRUMENTACIÓN [548 h] |
| A7700 | Cable Multiconductor de Cobre con Aislación de XLPE, 1x3C #12 AWG, Clase 1 kV | 2026-02-15 → 2025-12-05 A (-72d) | 2026-02-20 → 2025-12-25 (-57d) | 6d → 6.55d | 0% → 52% | 21d → 67.74d | A7690 SS → A7690 FF | resources SQM-INSTRUMENTACIÓN [94.99 h] → SQM-INSTRUMENTACIÓN [127.87 h] |
| A7730 | Cable Multiconductor de Cobre Blando 1x5C #12 AWG, Clase 0,3 | 2026-02-18 → 2025-12-24 (-56d) | 2026-02-22 → 2025-12-30 (-54d) | 5d → 5.45d |  | 21d → 67.74d | A7720 SS → A7720 | resources SQM-INSTRUMENTACIÓN [427.44 h] → SQM-INSTRUMENTACIÓN [548 h] |
| 3 | **MONTAJE Y CONEXIONADO DE EQUIPOS E INSTRUMENTOS ESTANQUES L5 LiOH (TK-6100)** | 2026-02-23 → 2025-12-21 (-64d) | 2026-03-19 → 2026-01-05 (-73d) |  |  |  |  |  |
| A7740 | Módulos de Entradas y Salidas Análogas/Digitales en TAG: 5804-PNC-6402. | 2026-02-23 → 2025-12-21 (-64d) | 2026-03-02 → 2025-12-30 (-62d) | 8d → 8.73d |  | 21d → 67.74d | A7730 → A7730 FF |  |
| A7750 | Módulos de Entradas y Salidas Análogas/Digitales en TAG: 5804-PNC-7502. | 2026-02-23 → 2025-12-21 (-64d) | 2026-03-02 → 2025-12-30 (-62d) | 8d → 8.73d |  | 21d → 67.74d |  |  |
| A7760 | Brazo Prealambrado para Módulos de Entradas y Ealidas Análogas/Digitales en TAG: 5804-PNC-6402. | 2026-02-23 → 2025-12-21 (-64d) | 2026-03-02 → 2025-12-30 (-62d) | 8d → 8.73d |  | 21d → 67.74d |  | was named Brazo Prealambrado para Módulos de Entradas y Salidas Análogas/Digitales en TAG: 5804-PNC-6402. |
| A7770 | Brazo Prealambrado para Módulos de Entradas y Ealidas Análogas/Digitales en TAG: 5804-PNC-7502. | 2026-02-23 → 2025-12-21 (-64d) | 2026-03-02 → 2025-12-30 (-62d) | 8d → 8.73d |  | 21d → 67.74d |  | was named Brazo Prealambrado para Módulos de Entradas y Salidas Análogas/Digitales en TAG: 5804-PNC-7502. |
| A7780 | Instrumento TAG: FIT-6230 | 2026-03-15 → 2025-12-29 (-76d) | 2026-03-15 → 2025-12-30 (-75d) | 1d → 1.09d |  | 8d → 67.74d | A7770 FF, A7280 → A7770 FF | resources SQM-INSTRUMENTACIÓN [43.5 h] → SQM-INSTRUMENTACIÓN [21.75 h] |
| A7790 | Instrumento TAG: FIT-6240 | 2026-03-15 → 2025-12-29 (-76d) | 2026-03-15 → 2025-12-30 (-75d) | 1d → 1.09d |  | 8d → 67.74d |  | resources SQM-INSTRUMENTACIÓN [43.5 h] → SQM-INSTRUMENTACIÓN [21.75 h] |
| A7800 | Instrumento TAG: FIT-6268 | 2026-03-15 → 2025-12-29 (-76d) | 2026-03-15 → 2025-12-30 (-75d) | 1d → 1.09d |  | 8d → 67.74d |  | resources SQM-INSTRUMENTACIÓN [43.5 h] → SQM-INSTRUMENTACIÓN [21.75 h] |
| A7810 | Instrumento TAG: FIT-6670 | 2026-03-15 → 2025-12-29 (-76d) | 2026-03-15 → 2025-12-30 (-75d) | 1d → 1.09d |  | 8d → 67.74d |  | resources SQM-INSTRUMENTACIÓN [43.5 h] → SQM-INSTRUMENTACIÓN [21.75 h] |
| A7820 | Instrumento TAG: FV-6264 | 2026-03-15 → 2025-12-29 (-76d) | 2026-03-15 → 2025-12-30 (-75d) | 1d → 1.09d |  | 8d → 67.74d |  |  |
| A7830 | Instrumento TAG: FV-6265 | 2026-03-15 → 2025-12-29 (-76d) | 2026-03-15 → 2025-12-30 (-75d) | 1d → 1.09d |  | 8d → 67.74d |  |  |
| A7840 | Instrumento TAG: FV-6264 | 2026-03-15 → 2025-12-29 (-76d) | 2026-03-15 → 2025-12-30 (-75d) | 1d → 1.09d |  | 8d → 67.74d |  |  |
| A7850 | Instrumento TAG: FV-6265 | 2026-03-15 → 2025-12-29 (-76d) | 2026-03-15 → 2025-12-30 (-75d) | 1d → 1.09d |  | 8d → 67.74d |  |  |
| A7860 | Instrumento TAG: XV-6251 | 2026-03-16 → 2025-12-30 (-76d) | 2026-03-16 → 2025-12-31 (-75d) | 1d → 1.09d |  | 8d → 67.74d |  |  |
| A7870 | Instrumento TAG: XV-6229 | 2026-03-16 → 2025-12-30 (-76d) | 2026-03-16 → 2025-12-31 (-75d) | 1d → 1.09d |  | 8d → 67.74d |  | resources SQM-INSTRUMENTACIÓN → SQM-INSTRUMENTACIÓN [21.75 h] |
| A7880 | Instrumento TAG: XV-6232 | 2026-03-16 → 2025-12-30 (-76d) | 2026-03-16 → 2025-12-31 (-75d) | 1d → 1.09d |  | 8d → 67.74d |  |  |
| A7890 | Instrumento TAG: XV-6245 | 2026-03-16 → 2025-12-30 (-76d) | 2026-03-16 → 2025-12-31 (-75d) | 1d → 1.09d |  | 8d → 67.74d |  |  |
| A7900 | Instrumento TAG: XV-6246 | 2026-03-16 → 2025-12-31 (-75d) | 2026-03-16 → 2026-01-01 (-74d) | 1d → 1.09d |  | 8d → 67.74d | A7890 SS → A7890 |  |
| A7910 | Instrumento TAG: XV-6247 | 2026-03-16 → 2025-12-31 (-75d) | 2026-03-16 → 2026-01-01 (-74d) | 1d → 1.09d |  | 8d → 67.74d |  |  |
| A7920 | Instrumento TAG: XV-6252 | 2026-03-16 → 2025-12-31 (-75d) | 2026-03-16 → 2026-01-01 (-74d) | 1d → 1.09d |  | 8d → 67.74d |  |  |
| A7930 | Instrumento TAG: XV-6253 | 2026-03-16 → 2025-12-31 (-75d) | 2026-03-16 → 2026-01-01 (-74d) | 1d → 1.09d |  | 8d → 67.74d |  |  |
| A7940 | Instrumento TAG: XV-6258 | 2026-03-17 → 2026-01-01 (-75d) | 2026-03-17 → 2026-01-02 (-74d) | 1d → 1.09d |  | 8d → 67.74d |  |  |
| A7950 | Instrumento TAG: XV-6249 | 2026-03-17 → 2026-01-01 (-75d) | 2026-03-17 → 2026-01-02 (-74d) | 1d → 1.09d |  | 8d → 67.74d |  |  |
| A7960 | Instrumento TAG: XV-6229 | 2026-03-17 → 2026-01-01 (-75d) | 2026-03-17 → 2026-01-02 (-74d) | 1d → 1.09d |  | 8d → 67.74d |  |  |
| A7970 | Instrumento TAG: XV-6230 | 2026-03-17 → 2026-01-01 (-75d) | 2026-03-17 → 2026-01-02 (-74d) | 1d → 1.09d |  | 8d → 67.74d |  |  |

| ID | Task | Start | Finish | Duration | Complete | Total float | Predecessors | Other |
| --- | --- | --- | --- | --- | --- | --- | --- | --- |
| A7980 | Instrumento TAG: XV-6240 | 2026-03-17 → 2026-01-02 (-74d) | 2026-03-17 → 2026-01-03 (-73d) | 1d → 1.09d |  | 8d → 67.74d | A7970 SS → A7970 |  |
| A7990 | Instrumento TAG: XV-6242 | 2026-03-17 → 2026-01-02 (-74d) | 2026-03-17 → 2026-01-03 (-73d) | 1d → 1.09d |  | 8d → 67.74d |  |  |
| A8000 | Instrumento TAG: XV-6245 | 2026-03-17 → 2026-01-02 (-74d) | 2026-03-17 → 2026-01-03 (-73d) | 1d → 1.09d |  | 8d → 67.74d |  |  |
| A8010 | Instrumento TAG: XV-6250 | 2026-03-17 → 2026-01-02 (-74d) | 2026-03-17 → 2026-01-03 (-73d) | 1d → 1.09d |  | 8d → 67.74d |  |  |
| A8020 | Instrumento TAG: XV-6251 | 2026-03-18 → 2026-01-03 (-74d) | 2026-03-18 → 2026-01-04 (-73d) | 1d → 1.09d |  | 8d → 67.74d |  |  |
| A8030 | Instrumento TAG: XV-6258 | 2026-03-19 → 2026-01-04 (-74d) | 2026-03-19 → 2026-01-05 (-73d) | 1d → 1.09d |  | 8d → 67.74d |  | resources SQM-INSTRUMENTACIÓN → SQM-INSTRUMENTACIÓN [21.75 h] |
| 4 | **PRUEBAS DE FUNCIONAMIENTO Y PEM INST. ESTANQUES L5 LiOH (TK-6100)** | 2026-03-20 → 2025-12-26 (-84d) | 2026-03-23 → 2026-01-06 (-76d) |  |  |  |  |  |
| A8040 | Pruebas de Operación y PEM Módulos de Entradas y Salidas Análogas/Digitales en TAG: 5804-PNC-6402 | 2026-03-20 → 2025-12-26 (-84d) | 2026-03-20 → 2025-12-30 (-80d) | 1d → 3.27d |  | 8d → 68.83d | A8050 SS → A7770 FF |  |
| A8050 | Pruebas de Operación y PEM de Entradas y Salidas Análogas/Digitales en TAG: 5801-PNC-7502 | 2026-03-20 → 2025-12-30 (-80d) | 2026-03-20 → 2026-01-02 (-77d) | 1d → 3.27d |  | 8d → 68.83d | A8030 → A8040 |  |
| A8060 | Pruebas de Operación y PEM de Brazo Prealambrado Módulos de Entradas y Salidas Análogas/Digitales en TAG: 5804-PNC-6402 | 2026-03-20 → 2026-01-02 (-77d) | 2026-03-20 → 2026-01-05 (-74d) | 1d → 3.27d |  | 8d → 68.83d | A8040 SS → A8050 | was named Pruebas de Operación y PEM de Brazo Prealambrado Módulos de Entradas y Salidas Análogas/Digitales en TAG: 5804-PNC |
| A8070 | Pruebas de Operación y PEM de Brazo Prealambrado Módulos de Entradas y Salidas Análogas/Digitales en TAG: 5801-PNC-7502 | 2026-03-20 → 2026-01-02 (-77d) | 2026-03-20 → 2026-01-05 (-74d) | 1d → 3.27d |  | 8d → 68.83d | A8060 SS → A8060 FF | was named Pruebas de Operación y PEM de Brazo Prealambrado Módulos de Entradas y Salidas Análogas/Digitales en TAG: 5801-PNC |
| A8080 | Pruebas de Operación y Puesta en Marcha de Instrumento TAG: FIT-6230 | 2026-03-20 → 2026-01-02 (-77d) | 2026-03-20 → 2026-01-03 (-76d) | 1d → 1.09d |  | 8d → 68.83d |  |  |
| A8090 | Pruebas de Operación y Puesta en Marcha de Instrumento TAG: FIT-6240 | 2026-03-20 → 2026-01-02 (-77d) | 2026-03-20 → 2026-01-03 (-76d) | 1d → 1.09d |  | 8d → 68.83d |  |  |
| A8100 | Pruebas de Operación y Puesta en Marcha de Instrumento TAG: FIT-6268 | 2026-03-20 → 2026-01-02 (-77d) | 2026-03-20 → 2026-01-03 (-76d) | 1d → 1.09d |  | 8d → 68.83d |  |  |
| A8110 | Pruebas de Operación y Puesta en Marcha de Instrumento TAG: FIT-6670 | 2026-03-21 → 2026-01-03 (-77d) | 2026-03-21 → 2026-01-04 (-76d) | 1d → 1.09d |  | 8d → 68.83d |  |  |
| A8120 | Pruebas de Operación y Puesta en Marcha de Instrumento TAG: FV-6264 | 2026-03-21 → 2026-01-03 (-77d) | 2026-03-21 → 2026-01-04 (-76d) | 1d → 1.09d |  | 8d → 68.83d |  |  |
| A8130 | Pruebas de Operación y Puesta en Marcha de Instrumento TAG: FV-6265 | 2026-03-21 → 2026-01-03 (-77d) | 2026-03-21 → 2026-01-04 (-76d) | 1d → 1.09d |  | 8d → 68.83d |  |  |
| A8140 | Pruebas de Operación y Puesta en Marcha de Instrumento TAG: FV-6264 | 2026-03-21 → 2026-01-03 (-77d) | 2026-03-21 → 2026-01-04 (-76d) | 1d → 1.09d |  | 8d → 68.83d |  |  |
| A8150 | Pruebas de Operación y Puesta en Marcha de Instrumento TAG: FV-6265 | 2026-03-21 → 2026-01-04 (-76d) | 2026-03-21 → 2026-01-05 (-75d) | 1d → 1.09d |  | 8d → 68.83d | A8140 SS → A8140 |  |
| A8160 | Pruebas de Operación y Puesta en Marcha de Instrumento TAG: XV-6251 | 2026-03-21 → 2026-01-04 (-76d) | 2026-03-21 → 2026-01-05 (-75d) | 1d → 1.09d |  | 8d → 68.83d |  | resources SQM-INSTRUMENTACIÓN [24 h] → SQM-INSTRUMENTACIÓN [12 h] |
| A8170 | Pruebas de Operación y Puesta en Marcha de Instrumento TAG: XV-6229 | 2026-03-21 → 2026-01-04 (-76d) | 2026-03-21 → 2026-01-05 (-75d) | 1d → 1.09d |  | 8d → 68.83d |  |  |
| A8180 | Pruebas de Operación y Puesta en Marcha de Instrumento TAG: XV-6232 | 2026-03-21 → 2026-01-04 (-76d) | 2026-03-21 → 2026-01-05 (-75d) | 1d → 1.09d |  | 8d → 68.83d |  |  |
| A8190 | Pruebas de Operación y Puesta en Marcha de Instrumento TAG: XV-6245 | 2026-03-22 → 2026-01-04 (-77d) | 2026-03-22 → 2026-01-05 (-76d) | 1d → 1.09d |  | 8d → 68.83d | A8180 → A8180 FF |  |
| A8200 | Pruebas de Operación y Puesta en Marcha de Instrumento TAG: XV-6246 | 2026-03-22 → 2026-01-04 (-77d) | 2026-03-22 → 2026-01-05 (-76d) | 1d → 1.09d |  | 8d → 68.83d |  |  |
| A8210 | Pruebas de Operación y Puesta en Marcha de Instrumento TAG: XV-6247 | 2026-03-22 → 2026-01-04 (-77d) | 2026-03-22 → 2026-01-05 (-76d) | 1d → 1.09d |  | 8d → 68.83d |  |  |
| A8220 | Pruebas de Operación y Puesta en Marcha de Instrumento TAG: XV-6252 | 2026-03-22 → 2026-01-04 (-77d) | 2026-03-22 → 2026-01-05 (-76d) | 1d → 1.09d |  | 8d → 68.83d |  |  |
| A8230 | Pruebas de Operación y Puesta en Marcha de Instrumento TAG: XV-6253 | 2026-03-22 → 2026-01-04 (-77d) | 2026-03-22 → 2026-01-05 (-76d) | 1d → 1.09d |  | 8d → 68.83d | A8220 SS → A8220 FF |  |
| A8240 | Pruebas de Operación y Puesta en Marcha de Instrumento TAG: XV-6258 | 2026-03-22 → 2026-01-04 (-77d) | 2026-03-22 → 2026-01-05 (-76d) | 1d → 1.09d |  | 8d → 68.83d |  |  |
| A8250 | Pruebas de Operación y Puesta en Marcha de Instrumento TAG: XV-6249 | 2026-03-22 → 2026-01-04 (-77d) | 2026-03-22 → 2026-01-05 (-76d) | 1d → 1.09d |  | 8d → 68.83d |  |  |
| A8260 | Pruebas de Operación y Puesta en Marcha de Instrumento TAG: XV-6229 | 2026-03-23 → 2026-01-04 (-78d) | 2026-03-23 → 2026-01-05 (-77d) | 1d → 1.09d |  | 8d → 68.83d | A8250 → A8250 SS | was named New Activity; resources SQM-INSTRUMENTACIÓN → SQM-INSTRUMENTACIÓN [12 h] |
| A8270 | Pruebas de Operación y Puesta en Marcha de Instrumento TAG: XV-6230 | 2026-03-23 → 2026-01-04 (-78d) | 2026-03-23 → 2026-01-05 (-77d) | 1d → 1.09d |  | 8d → 68.83d | A8260 SS → A8260 FF |  |
| A8280 | Pruebas de Operación y Puesta en Marcha de Instrumento TAG: XV-6240 | 2026-03-23 → 2026-01-04 (-78d) | 2026-03-23 → 2026-01-05 (-77d) | 1d → 1.09d |  | 8d → 68.83d |  |  |
| A8290 | Pruebas de Operación y Puesta en Marcha de Instrumento TAG: XV-6242 | 2026-03-23 → 2026-01-04 (-78d) | 2026-03-23 → 2026-01-05 (-77d) | 1d → 1.09d |  | 8d → 68.83d |  |  |
| A8300 | Pruebas de Operación y Puesta en Marcha de Instrumento TAG: XV-6245 | 2026-03-23 → 2026-01-04 (-78d) | 2026-03-23 → 2026-01-05 (-77d) | 1d → 1.09d |  | 8d → 68.83d |  |  |
| A8310 | Pruebas de Operación y Puesta en Marcha de Instrumento TAG: XV-6250 | 2026-03-23 → 2026-01-04 (-78d) | 2026-03-23 → 2026-01-05 (-77d) | 1d → 1.09d |  | 8d → 68.83d | A8300 SS → A8300 FF |  |
| A8320 | Pruebas de Operación y Puesta en Marcha de Instrumento TAG: XV-6251 | 2026-03-23 → 2026-01-04 (-78d) | 2026-03-23 → 2026-01-05 (-77d) | 1d → 1.09d |  | 8d → 68.83d |  |  |
| A8330 | Pruebas de Operación y Puesta en Marcha de Instrumento TAG: XV-6258 | 2026-03-23 → 2026-01-05 (-77d) | 2026-03-23 → 2026-01-06 (-76d) | 1d → 1.09d |  | 8d → 67.74d | A8320 SS → A8320 SS, A8030 |  |
| 5 | **ÁREA 5872 - SECTOR TK-3016** | 2026-01-28 → 2025-11-01 (-88d) | 2026-03-31 → 2026-01-24 (-66d) |  |  |  |  |  |
| 6 | **OBRAS CIVILES TK-3016** | 2026-01-28 → 2025-11-01 (-88d) | 2026-02-02 → 2025-12-22 (-42d) |  |  |  |  |  |
| 1 | **OOCC SECTOR ESTANQUE DE AGUA ULTRA PURA TAG:5872-EST-3016** | 2026-01-28 → 2025-11-01 (-88d) | 2026-02-02 → 2025-12-22 (-42d) |  |  |  |  |  |
| A8350 | Armadura de Refuerzo A630-420H para PD-1 | 2026-01-28 → 2025-11-01 A (-88d) | 2026-01-31 → 2025-12-15 (-47d) | 4d → 4.36d | 0% → 91% | 1d → 57.78d | A6870 SS → A6040 SS | resources SQM-OBRAS CIVILES [9.98 h] → SQM-OOCC [9.78 h] |
| A8340 | Hormigón G30 Pedestal PD-1 (TAG: 5817-BBA-1681 y TAG: 5817-BBA-1684) | 2026-02-01 → 2025-11-05 A (-88d) | 2026-02-02 → 2025-12-22 (-42d) | 2d → 2.18d | 0% → 100% | 1d → 49.98d | A8350, A6540 → A8350 SS, A6540 FF | resources SQM-OBRAS CIVILES [13.44 h] → SQM-OOCC [9.86 h] |
| 1 | **OBRAS MECÁNICAS TK-3016** | 2026-02-03 → 2025-11-07 (-88d) | 2026-02-06 → 2025-12-24 (-44d) |  |  |  |  |  |
| 1 | **MONTAJE Y PRUEBAS DE EQUIPOS MECÁNICOS ÁREA 5872 TK3016 HIDRÓXIDO** | 2026-02-03 → 2025-11-07 (-88d) | 2026-02-06 → 2025-12-24 (-44d) |  |  |  |  |  |
| A8360 | Bomba Centrífuga y Motor TAG: 5872-BBA-1681; 5872-MTR-1682 | 2026-02-03 → 2025-11-07 A (-88d) | 2026-02-06 → 2025-12-24 (-44d) | 4d → 4.36d | 0% → 65% | 1d → 49.98d | A8340, A6030 → A8340 SS, A6030 SS |  |
| A8370 | Bomba Centrífuga y Motor TAG: 5872-BBA-1684; 5872-MTR-1685 | 2026-02-03 → 2025-11-11 A (-84d) | 2026-02-06 → 2025-12-24 (-44d) | 4d → 4.36d | 0% → 65% | 1d → 49.98d |  |  |
| 2 | **OBRAS PIPING TK-3016** | 2026-02-03 → 2025-11-15 (-80d) | 2026-03-13 → 2026-01-24 (-48d) |  |  |  |  |  |
| 1 | **FABRICACIÓN Y MONTAJE DE CAÑERÍAS ÁREA TK-3016** | 2026-02-03 → 2025-11-15 (-80d) | 2026-03-11 → 2026-01-24 (-46d) |  |  |  |  |  |
| A8380 | Ø 200 mm - Cañería HDPE, PE 100, PN20 (8") - Fabricación | 2026-02-03 → 2025-11-15 A (-80d) | 2026-02-08 → 2025-12-09 A (-61d) | 6d → 6.55d | 0% → 100% | 1d → none | A3600, A8370 SS → A3600 SS, A8370 SS | resources SQM-PIPING [217 h] → SQM-PIPING [157.5 h] |
| A8500 | Ø 200 mm - Cañería HDPE, PE 100, PN20 (8") - Montaje | 2026-02-19 → 2025-12-01 A (-80d) | 2026-02-21 → 2026-01-02 (-50d) | 3d → 3.27d | 0% → 71% | 21d → 53.25d | A8420 → A8420 FF |  |
| A8400 | Ø 6" - Cañería Acero Inoxidable - Fabricación | 2026-02-09 → 2025-12-15 (-56d) | 2026-03-10 → 2026-01-22 (-47d) | 30d → 38.18d |  | 1d → 51.23d | A6610 SS, A8380, A4540 → A6610 FF, A8380 FF | resources SQM-PIPING [1261 h] → SQM-PIPING [1378 h] |
| A8460 | Ø 6" - Cañería Acero Inoxidable - Montaje | 2026-02-12 → 2025-12-17 (-57d) | 2026-03-11 → 2026-01-24 (-46d) | 28d → 38.18d |  | 1d → 49.98d | A8400 FF+1d, A8510 FF, A8520 FF → A8400 FF+1.09d, A8510 FF, A8520 FF | resources SQM-PIPING [75.63 h] → SQM-PIPING [95.45 h] |
| A8390 | Ø 8" - Cañería Acero Inoxidable - Fabricación | 2026-02-09 → 2025-12-22 (-49d) | 2026-02-12 → 2025-12-27 (-47d) | 4d → 4.36d |  | 21d → 52.16d |  | resources SQM-PIPING [29.6 h] → SQM-PIPING [59.2 h] |
| A8410 | Ø 4" - Cañería Acero Inoxidable - Fabricación | 2026-02-13 → 2025-12-27 (-48d) | 2026-02-15 → 2025-12-30 (-47d) | 3d → 3.27d |  | 21d → 52.16d |  |  |
| A8420 | Ø 3" - Cañería Acero Inoxidable - Fabricación | 2026-02-16 → 2025-12-30 (-48d) | 2026-02-18 → 2026-01-02 (-47d) | 3d → 3.27d |  | 21d → 52.16d |  |  |
| A8430 | Ø 2" - Cañería Acero Inoxidable - Fabricación | 2026-02-19 → 2026-01-02 (-48d) | 2026-02-22 → 2026-01-07 (-46d) | 4d → 4.36d |  | 23d → 52.16d |  | resources SQM-PIPING [82.11 h] → SQM-PIPING [49.27 h] |
| A8450 | Ø 8" - Cañería Acero Inoxidable - Montaje | 2026-02-22 → 2026-01-02 (-51d) | 2026-02-24 → 2026-01-05 (-50d) | 3d → 3.27d |  | 21d → 53.25d |  |  |
| A8480 | Ø 3" - Cañería Acero Inoxidable - Montaje | 2026-02-25 → 2026-01-05 (-51d) | 2026-02-27 → 2026-01-09 (-49d) | 3d → 3.27d |  | 21d → 53.25d |  |  |
| A8440 | Ø 1" - Cañería Acero Inoxidable - Fabricación | 2026-02-23 → 2026-01-07 (-47d) | 2026-02-25 → 2026-01-10 (-46d) | 3d → 3.27d |  | 23d → 52.16d |  |  |
| A8490 | Ø 2" - Cañería Acero Inoxidable - Montaje | 2026-02-28 → 2026-01-09 (-50d) | 2026-03-02 → 2026-01-12 (-49d) | 3d → 3.27d |  | 21d → 53.25d |  | resources SQM-PIPING [13.96 h] → SQM-PIPING [9.14 h] |
| A8470 | Ø 4" - Cañería Acero Inoxidable - Montaje | 2026-03-03 → 2026-01-12 (-50d) | 2026-03-05 → 2026-01-15 (-49d) | 3d → 3.27d |  | 21d → 53.25d |  |  |
| 2 | **MONTAJE DE VÁLVULAS Y FITTING SECTOR TK-3016** | 2026-02-03 → 2025-11-15 (-80d) | 2026-03-10 → 2026-01-24 (-45d) |  |  |  |  |  |
| A8510 | Fitting Sector TK-3016 (Global) | 2026-02-03 → 2025-11-15 A (-80d) | 2026-03-10 → 2026-01-24 (-45d) | 36d → 32.73d |  | 2d → 49.98d |  | resources SQM-PIPING [1441.13 h] → SQM-PIPING [1507.89 h] |
| A8520 | Válvulas Sector TK-3016(Global) | 2026-02-03 → 2025-11-15 A (-80d) | 2026-03-10 → 2026-01-24 (-45d) | 36d → 32.73d |  | 2d → 49.98d |  | resources SQM-PIPING [251.25 h] → SQM-PIPING [281.25 h] |
| 3 | **TIE IN LÍNEAS ASOCIADAS A TK-3016** | 2026-03-12 → 2026-01-22 (-49d) | 2026-03-13 → 2026-01-24 (-48d) |  |  |  |  |  |
| A8530 | TIE-IN N° 1421 - 5872-EST-3016 a Línea Proyectada 150-IW-5872-I1-1621 | 2026-03-12 → 2026-01-22 (-49d) | 2026-03-13 → 2026-01-24 (-48d) | 2d → 2.18d |  | 1d → 49.98d | A8460 → A8460 FF |  |
| A8540 | TIE-IN N° 1422 - 5872-EST-3016 a Línea Proyectada 150-IW-5872-I1-1622 | 2026-03-12 → 2026-01-22 (-49d) | 2026-03-13 → 2026-01-24 (-48d) | 2d → 2.18d |  | 1d → 49.98d |  |  |
| A8550 | Perforación de Estanque Existente TK-3016 para TIE-IN N°1421 y 1422. | 2026-03-12 → 2026-01-22 (-49d) | 2026-03-13 → 2026-01-24 (-48d) | 2d → 2.18d |  | 18d → 49.98d |  | was named PerforaciØn de Estanque Existente TK-3016 para TIE-IN N°1421 y 1422. |
| 4 | **FABRICACIÓN Y MONTAJE DE SOPORTES TK-3016** | 2026-02-26 → 2026-01-10 (-47d) | 2026-03-08 → 2026-01-20 (-47d) |  |  |  |  |  |
| A8560 | Soporte N°001 - Pedestal Tipo TEE, Acero Estructural para Tuberías Diámetros Pequeños | 2026-02-26 → 2026-01-10 (-47d) | 2026-02-28 → 2026-01-13 (-46d) | 3d → 3.27d |  | 23d → 52.16d |  | resources SQM-PIPING [12.75 h] → SQM-PIPING [8.5 h] |

| ID | Task | Start | Finish | Duration | Complete | Total float | Predecessors | Other |
| --- | --- | --- | --- | --- | --- | --- | --- | --- |
| A8570 | Soporte N°002A - Pedestal con Repisa de Acero Estructural para Tuberías Diámetros Pequeños | 2026-03-01 → 2026-01-13 (-47d) | 2026-03-03 → 2026-01-16 (-46d) | 3d → 3.27d |  | 23d → 52.16d |  |  |
| A8580 | Soporte Primario Tipo "U" (Para Uso General) | 2026-03-06 → 2026-01-16 (-49d) | 2026-03-08 → 2026-01-20 (-47d) | 3d → 3.27d |  | 21d → 52.16d |  | resources SQM-PIPING [7.7 h] → SQM-PIPING [1.16 h] |
| 3 | **OBRAS ELÉCTRICAS TK-3016** | 2026-03-14 → 2025-12-01 (-103d) | 2026-03-27 → 2026-01-04 (-82d) |  |  |  |  |  |
| 1 | **MONTAJE DE CANALIZACIÓN Y FERRETERÍA TK-3016** | 2026-03-14 → 2025-12-01 (-103d) | 2026-03-19 → 2025-12-28 (-81d) |  |  |  |  |  |
| A8630 | Canalización y Copla de Conduit de Acero Galvanizado 1 ½"Ø, Conduit ANSI C80.1 | 2026-03-16 → 2025-12-01 A (-105d) | 2026-03-19 → 2025-12-28 (-81d) | 4d → 4.36d | 0% → 15% | 1d → 68.88d | A8620 → A8620 FF | was named Canalización y Copla de Conduit de Acero Galvanizado 1 1/2"Ø, Conduit ANSI C80.1; resources SQM-ELÉCTRICO [7.56 h] → SQM-ELÉCTRICO [50.4 h] |
| A8640 | Canalización y Copla de Conduit Flexible Metálico con Cubierta PVC 1 ½" Ø Trabajo Pesado | 2026-03-16 → 2025-12-01 A (-105d) | 2026-03-17 → 2025-12-26 (-81d) | 2d → 2.18d | 0% → 15% | 1d → 68.88d |  | was named Canalización y Copla de Conduit Flexible Metálico con Cubierta PVC 1 1/2" Ø Trabajo Pesado; resources SQM-ELÉCTRICO [2.52 h] → SQM-ELÉCTRICO [6.3 h] |
| A8610 | Canalización y Copla de Conduit de Acero Galvanizado 2 ½"Ø, Conduit ANSI C80.1 | 2026-03-14 → 2025-12-22 (-82d) | 2026-03-17 → 2025-12-26 (-81d) | 4d → 4.36d |  | 1d → 68.88d | A8540 → A8600 | was named Canalización y Copla de Conduit de Acero Galvanizado 2 1/2"Ø, Conduit ANSI C80.1; resources SQM-ELÉCTRICO [17.01 h] → SQM-ELÉCTRICO [75.6 h] |
| A8620 | Canalización y Copla de Conduit Flexible Metálico con Cubierta PVC 2 ½" Ø Trabajo Pesado | 2026-03-14 → 2025-12-26 (-78d) | 2026-03-15 → 2025-12-28 (-77d) | 2d → 2.18d |  | 1d → 68.88d | A8610 SS → A8610 | was named Canalización y Copla de Conduit Flexible Metálico con Cubierta PVC 2 1/2" Ø Trabajo Pesado; resources SQM-ELÉCTRICO [3.78 h] → SQM-ELÉCTRICO [9.45 h] |
| 2 | **TENDIDO Y CONEXIONADO DE CABLES DE ALIMENTACIÓN TK-3016** | 2026-03-18 → 2025-12-01 (-107d) | 2026-03-24 → 2026-01-01 (-82d) |  |  |  |  |  |
| A8650 | Cable Monoconductor de Cobre con Aislación XLPE, 1C #250 MCM, Clase 1 kV | 2026-03-18 → 2025-12-01 A (-107d) | 2026-03-24 → 2026-01-01 (-82d) | 7d → 7.64d | 0% → 8% | 1d → 68.88d | A8640 → A8640 SS | resources SQM-ELÉCTRICO [252.8 h] → SQM-ELÉCTRICO |
| A8660 | Cable Multiconductor de Cobre con Aislación XLPE, 1X4C #2 AWG, Clase 1 kV | 2026-03-18 → 2025-12-01 A (-107d) | 2026-03-21 → 2025-12-28 (-83d) | 4d → 4.36d | 0% → 9% | 1d → 68.88d |  |  |
| A8670 | Cable Multiconductor de Cobre con Aislación de XLPE, 1x5C #12 AWG, Clase 1 kV | 2026-03-18 → 2025-12-01 A (-107d) | 2026-03-21 → 2025-12-28 (-83d) | 4d → 4.36d | 0% → 9% | 1d → 68.88d |  | resources SQM-ELÉCTRICO [14.61 h] → SQM-ELÉCTRICO [16.44 h] |
| 3 | **MONTAJE Y CONEXIONADO DE EQUIPOS ELÉCTRICOS TK-3016** | 2026-03-22 → 2025-12-28 (-84d) | 2026-03-24 → 2026-01-01 (-82d) |  |  |  |  |  |
| A8680 | Tablero Partidor de Motores TAG: 5817-TPM-1502. | 2026-03-22 → 2025-12-28 (-84d) | 2026-03-24 → 2026-01-01 (-82d) | 3d → 3.27d |  | 4d → 69.97d |  |  |
| A8690 | Conexión de Motor TAG: 5872-MTR-1682 a TPM TAG: 5817-TPM-1502. | 2026-03-22 → 2025-12-28 (-84d) | 2026-03-23 → 2025-12-31 (-82d) | 2d → 2.18d |  | 4d → 69.97d |  |  |
| A8700 | Conexión de Motor TAG: 5872-MTR-1685 a TPM TAG: 5817-TPM-1502. | 2026-03-22 → 2025-12-28 (-84d) | 2026-03-23 → 2025-12-31 (-82d) | 2d → 2.18d |  | 4d → 69.97d |  |  |
| A8710 | Conexión de Tablero Partidor de Motores TAG: 5817-TPM-1502 a Sala Eléctrica TAG: SEL-4016. | 2026-03-22 → 2025-12-28 (-84d) | 2026-03-23 → 2025-12-31 (-82d) | 2d → 2.18d |  | 4d → 69.97d |  |  |
| 4 | **PRUEBAS DE FUNCIONAMIENTO Y PEM TK-3016** | 2026-03-24 → 2025-12-31 (-83d) | 2026-03-27 → 2026-01-04 (-82d) |  |  |  |  |  |
| A8720 | Pruebas de Funcionamiento y Puesta en Marcha de Motor TAG: 5872-MTR-1682. | 2026-03-24 → 2025-12-31 (-83d) | 2026-03-25 → 2026-01-02 (-82d) | 2d → 2.18d |  | 4d → 69.97d |  |  |
| A8730 | Pruebas de Funcionamiento y Puesta en Marcha de Motor TAG: 5872-MTR-1685. | 2026-03-26 → 2026-01-02 (-83d) | 2026-03-27 → 2026-01-04 (-82d) | 2d → 2.18d |  | 4d → 69.97d |  |  |
| 4 | **OBRAS DE INSTRUMENTACIÓN TK-3016** | 2026-03-22 → 2025-11-10 (-132d) | 2026-03-31 → 2026-01-05 (-85d) |  |  |  |  |  |
| 1 | **MONTAJE DE CANALIZACIÓN Y FERRETERÍA INST. TK-3016** | 2026-03-22 → 2025-12-28 (-84d) | 2026-03-26 → 2026-01-03 (-82d) |  |  |  |  |  |
| A8740 | Canalización y Copla de Conduit de Acero Galvanizado 1"Ø, Conduit ANSI C80.1 | 2026-03-22 → 2025-12-28 (-84d) | 2026-03-24 → 2026-01-01 (-82d) | 3d → 3.27d |  | 1d → 68.88d |  | resources SQM-INSTRUMENTACIÓN [22.68 h] → SQM-INSTRUMENTACIÓN [100.8 h] |
| A8750 | Canalización y Copla de Conduit Flexible Metálico con Cubierta PVC 1" Ø Trabajo Pesado | 2026-03-25 → 2026-01-01 (-83d) | 2026-03-26 → 2026-01-03 (-82d) | 2d → 2.18d |  | 1d → 68.88d |  | resources SQM-INSTRUMENTACIÓN [6.3 h] → SQM-INSTRUMENTACIÓN [12.6 h] |
| 2 | **TENDIDO Y CONEXIONADO DE CABLES INSTRUMENTACIÓN TK-3016** | 2026-03-27 → 2025-11-10 (-137d) | 2026-03-31 → 2025-12-31 (-90d) |  |  |  |  |  |
| A8760 | Cable Multiconductor de Cobre con Aislación de XLPE, 1x3C #12 AWG, Clase 1 kV | 2026-03-27 → 2025-11-10 A (-137d) | 2026-03-30 → 2025-11-14 A (-136d) | 4d → 4.36d | 0% → 100% | 1d → none | A8750 → A8660 SS | resources SQM-INSTRUMENTACIÓN [0.28 h] → SQM-INSTRUMENTACIÓN [0.37 h] |
| A8770 | Cable de Instrumentación (Señales Análogas), 1x1 par #16 AWG Apantallado | 2026-03-27 → 2025-12-01 A (-116d) | 2026-03-31 → 2025-12-31 (-90d) | 5d → 7.64d | 0% → 10% | 1d → 72.86d |  | resources SQM-INSTRUMENTACIÓN [69.26 h] → SQM-INSTRUMENTACIÓN [88.8 h] |
| A8780 | Conductor Fibra Óptica Multimodo 12 Hilos | 2026-03-27 → 2025-12-25 (-92d) | 2026-03-30 → 2025-12-29 (-91d) | 4d → 4.36d |  | 1d → 72.86d |  | resources SQM-INSTRUMENTACIÓN [62.14 h] → SQM-INSTRUMENTACIÓN [71.7 h] |
| 3 | **MONTAJE Y CONEXIONADO DE EQUIPOS E INSTRUMENTOSTK-3016** | 2026-03-27 → 2025-12-25 (-92d) | 2026-03-30 → 2026-01-05 (-84d) |  |  |  |  |  |
| A8790 | Fibra Óptica en TAG: SEL-4016. | 2026-03-27 → 2025-12-25 (-92d) | 2026-03-29 → 2025-12-28 (-91d) | 3d → 3.27d |  | 1d → 72.86d |  | resources SQM-INSTRUMENTACIÓN [12 h] → SQM-INSTRUMENTACIÓN [4.12 h] |
| A8800 | Instrumento TAG: FIT-1177 | 2026-03-27 → 2025-12-28 (-89d) | 2026-03-28 → 2025-12-30 (-88d) | 2d → 2.18d |  | 1d → 72.86d | A8790 SS → A8790 | resources SQM-INSTRUMENTACIÓN [12 h] → SQM-INSTRUMENTACIÓN [21.75 h] |
| A8810 | Instrumento TAG: PIT-1176 | 2026-03-29 → 2026-01-03 (-85d) | 2026-03-30 → 2026-01-05 (-84d) | 2d → 2.18d |  | 1d → 68.88d | A8800 → A8800, A8750 |  |
| 4 | **PRUEBAS DE FUNCIONAMIENTO Y PEM INST. TK-3016** | 2026-03-29 → 2025-12-01 (-118d) | 2026-03-30 → 2026-01-05 (-84d) |  |  |  |  |  |
| A8830 | Pruebas de Operación y Puesta en Marcha de Instrumento TAG: FIT-1177 | 2026-03-29 → 2025-12-01 A (-118d) | 2026-03-30 → 2026-01-05 (-84d) | 2d → 2.18d | 0% → 10% | 1d → 68.88d | A8820 SS → A8820 FF | resources SQM-INSTRUMENTACIÓN [21.75 h] → SQM-INSTRUMENTACIÓN [12 h] |
| A8840 | Pruebas de Operación y Puesta en Marcha de Instrumento TAG: PIT-1176 | 2026-03-29 → 2025-12-01 A (-118d) | 2026-03-30 → 2026-01-05 (-84d) | 2d → 2.18d | 0% → 10% | 1d → 68.88d | A8830 SS, A8730 SS → A8830 SS, A8730 FF |  |
| A8820 | Pruebas de Funcionamiento de Conectividad de Fibra Óptica desde SEL-4016 a TPM-1502. | 2026-03-29 → 2026-01-03 (-85d) | 2026-03-29 → 2026-01-05 (-83d) | 1d → 2.18d |  | 1d → 68.88d |  | resources SQM-INSTRUMENTACIÓN → SQM-INSTRUMENTACIÓN [12 h] |

## Version 3 (data date 2026-03-15, saved 2026-03-14, file 15682-SEG-1.14-03-25.xer)

Note of the change: feat: sync W11 EV validation, engine fixes, tests 11/11 green

Last finish 2026-03-15 → 2026-04-12 (+28d). Complete tasks 65 → 356.

Added:

| ID | Task | Duration | Start | Finish | Predecessors | Resources |
| --- | --- | --- | --- | --- | --- | --- |
| 2 | **MONTAJE DE BOMBAS PATIO ESTANQUES** |  | 2025-07-24 | 2026-03-16 |  |  |
| 2 | **MONTAJE DE CAÑERÍAS HDPE PN16 (P1) PATIO DE ESTANQUES** |  | 2025-08-08 | 2026-03-23 |  |  |
| 4 | **MONTAJE DE FITTING Y VÁLVULAS PATIO DE ESTANQUES** |  | 2025-08-08 | 2026-03-20 |  |  |
| 4 | **MONTAJE DE CANALIZACIÒN Y FERRETERÍA PATIO DE ESTANQUES** |  | 2025-12-01 | 2026-03-28 |  |  |
| 6 | **MONTAJE, CONEXIONADO Y PRUEBAS DE INSTRUMENTOS - SENSORES Y TRANSMISORES DE FLUJO PATIO ESTANQUES** |  | 2025-12-01 | 2026-03-16 |  |  |
| 7 | **MONTAJE, PRUEBAS Y CONEXIONADO DE INSTRUMENTOS - TRANSMISORES DE NIVEL PATIO ESTANQUES** |  | 2025-12-01 | 2026-03-16 |  |  |
| 8 | **MONTAJE, PRUEBAS Y CONEXIONADO DE INSTRUMENTOS - INTERRUPTOR DE PRESIÓN PATIO ESTANQUES** |  | 2025-12-01 | 2026-03-16 |  |  |
| 9 | **MONTAJE, PRUEBAS Y CONEXIONADO DE INSTRUMENTOS - INTERRUPTOR DE NIVEL PATIO ESTANQUES** |  | 2025-12-01 | 2026-03-16 |  |  |
| 10 | **MONTAJE, PRUEBAS Y CONEXIONADO DE INSTRUMENTOS - INTERRUPTOR DE FLUJO PATIO ESTANQUES** |  | 2025-12-01 | 2026-03-16 |  |  |
| 11 | **MONTAJE DE INSTRUMENTOS - INDICADORES DE PRESIÓN (MANÓMETROS) PATIO ESTANQUES** |  | 2025-12-01 | 2026-03-16 |  |  |
| 1 | **ÁREA 5801 - SECTOR DATA CENTER 5801** |  | 2025-09-21 | 2026-03-17 |  |  |
| 1 | **OBRAS CIVILES DATA CENTER 5801** |  | 2025-10-16 | 2025-12-16 |  |  |
| 1 | **SUMINISTRO Y MONTAJE ASOCIADO A CERCO PERIMETRAL DATA CENTER 5801** |  | 2025-10-16 | 2025-12-16 |  |  |
| 2 | **OBRAS ESTRUCTURALES DATA CENTER 5801** |  | 2025-11-13 | 2025-12-16 |  |  |
| 1 | **ACERO ESTRUCTURAL, PLATAFORMA DATA CENTER 5801** |  | 2025-11-13 | 2025-12-16 |  |  |
| 3 | **OBRAS MECÁNICAS DATA CENTER 5801** |  | 2025-09-21 | 2025-12-15 |  |  |
| 1 | **MONTAJE Y PRUEBAS DE DATA CENTER 5801** |  | 2025-09-21 | 2025-12-08 |  |  |
| 2 | **MONTAJE Y PRUEBAS DE BOMBAS DOSIFICADORAS DATA CENTER 5801** |  | 2025-10-20 | 2025-12-15 |  |  |
| 3 | **MONTAJE Y PRUEBAS DE ESTANQUES DATA CENTER 5801** |  | 2025-10-16 | 2025-12-08 |  |  |
| 4 | **OBRAS PIPING DATA CENTER 5801** |  | 2025-10-28 | 2025-12-28 |  |  |
| 1 | **MONTAJE DE CAÑERÍAS DATA CENTER 5801** |  | 2025-10-28 | 2025-12-28 |  |  |
| 2 | **MONTAJE DE VÁLVULAS Y FITTING PIPING DATA CENTER 5801** |  | 2025-12-15 | 2025-12-28 |  |  |
| 5 | **OBRAS ELÉCTRICAS DATA CENTER 5801** |  | 2025-10-16 | 2026-03-17 |  |  |
| 1 | **MONTAJE Y CONEXIONADO CONDUCTORES FUERZA Y CONTROL DATA CENTER 5801** |  | 2025-10-18 | 2026-03-17 |  |  |
| 1 | **TENDIDO Y CONEXIONADO CABLES FUERZA MONOCONDUCTOR DATA CENTER 5801** |  | 2025-10-18 | 2025-12-15 |  |  |
| 2 | **TENDIDO Y CONEXIONADO CABLES FUERZA MULTICONDUCTOR DATA CENTER 5801** |  | 2025-10-29 | 2026-03-17 |  |  |
| 2 | **MONTAJE DE CANALIZACIÓN Y FERRETERÍA DATA CENTER 5801** |  | 2025-10-16 | 2025-12-15 |  |  |
| 3 | **MONTAJE Y CONEXIONADO EQUIPOS DE ALUMBRADO DATA CENTER 5801** |  | 2025-10-18 | 2026-03-16 |  |  |
| 4 | **MONTAJE, CONEXIÓN Y PRUEBAS EQUIPOS DE CONTROL BOMBAS DATA CENTER 5801** |  | 2025-11-03 | 2025-12-15 |  |  |
| 5 | **MONTAJE/HABILITACIÓN DE EQUIPOS ELÉCTRICOS PRINCIPALES DATA CENTER 5801** |  | 2025-11-17 | 2025-12-27 |  |  |
| 6 | **OBRAS DE INSTRUMENTACIÓN SECTOR DATA CENTER 5801** |  | 2025-11-29 | 2025-12-28 |  |  |
| 1 | **MONTAJE DE EQUIPOS DE COMUNICACIÓN Y CABECERAS DE F.O. EN RACK DE 19" DATA CENTER 5801** |  | 2025-11-29 | 2025-12-26 |  |  |
| 2 | **TENDIDO Y CONEXIONADO DE CABLES DE ALIMENTACIÓN DATA CENTER 5801** |  | 2025-12-05 | 2025-12-13 |  |  |
| 3 | **SUMINSITRO Y MONTAJE DE PROTECCIONES ELÉCTRICAS DATA CENTER 5801** |  | 2025-12-05 | 2025-12-28 |  |  |
| 2 | **RED GN-GL L5 LiOH, ALIMENTACIÓN CALDERA UTILITIES - ÁREA 5801 GNL 5801** |  | 2025-10-06 | 2026-03-17 |  |  |
| 1 | **ÁREA 5801 - SECTOR GNL 5801** |  | 2025-10-06 | 2026-03-17 |  |  |
| 1 | **OBRAS CIVILES SECTOR LÍNEA DE GAS 5801** |  | 2025-10-29 | 2026-03-17 |  |  |
| 1 | **MOVIMIENTO DE TIERRAS, EXCAVACIÓN PARA CRUCE DE CAMINO GNL 5801** |  | 2025-11-02 | 2026-03-16 |  |  |
| 2 | **EXCAVACIÓN PARA CAÉRÍAS ENTERRADA GNL 5801** |  | 2025-10-29 | 2026-03-17 |  |  |
| 3 | **SERVICIOS, CRUCE DE CAMINO GNL 5801** |  | 2025-11-15 | 2025-12-17 |  |  |
| 2 | **OBRAS PIPING SECTOR LÍNEA DE GAS 5801** |  | 2025-10-06 | 2026-03-16 |  |  |
| 1 | **MONTAJE DE CAÑERÍA, LÍNEAS DE GAS 5801** |  | 2025-10-09 | 2025-12-25 |  |  |
| 2 | **MONTAJE DE VÁLVULAS MANUALES Y FITTING, LÍNEA DE GAS 5801** |  | 2025-10-06 | 2026-03-16 |  |  |
| 3 | **TIE-IN LÍNEAS ASOCIADAS A GNL 5801** |  | 2025-10-29 | 2026-03-16 |  |  |
| 4 | **FABRICACIÓN Y MONTAJE DE SOPORTES GNL 5801** |  | 2025-10-30 | 2025-12-29 |  |  |
| 1 | **OBRAS CIVILES TK-6060 5817** |  | 2025-09-24 | 2025-12-15 |  |  |
| 1 | **LOSA Y FUNDACIONES TK-6060 5817** |  | 2025-10-03 | 2025-12-13 |  |  |
| 3 | **FABRICACIÓN DE LOSA Y FUNDACIONES 5817** |  | 2025-10-03 | 2025-12-13 |  |  |
| 2 | **CRUCE DE CAMINO 5817** |  | 2025-09-24 | 2025-12-15 |  |  |
| 1 | **MOVIMIENTO MASIVO DE TIERRA PARA CRUCE DE CAMINOS 5817** |  | 2025-09-24 | 2025-12-15 |  |  |
| 2 | **ENCAMISADO PARA CRUCE DE CAMINOS 5817** |  | 2025-10-08 | 2025-12-15 |  |  |
| 3 | **OBRAS MECÁNICAS TK-6060 5817** |  | 2025-10-01 | 2025-12-20 |  |  |
| 1 | **MONTAJE Y PRUEBAS DE EQUIPOS MECÁNICOS TK-6060 5817** |  | 2025-10-01 | 2025-12-20 |  |  |
| 4 | **OBRAS PIPING TK-6060 5817** |  | 2025-10-05 | 2026-03-30 |  |  |
| 1 | **MONTAJE Y FABRICACIÓN DE CAÑERÍAS TK-6060 5817** |  | 2025-10-05 | 2026-03-23 |  |  |
| 1 | **FABRICACIÓN CAÑERÍAS TK-6060 5817** |  | 2025-10-05 | 2026-03-16 |  |  |
| 2 | **MONTAJE CAÑERÍAS TK-6060 5817** |  | 2025-10-12 | 2026-03-23 |  |  |
| 2 | **MONTAJE DE FITTING Y VÁLVULAS TK-6060 5817** |  | 2025-10-05 | 2026-03-24 |  |  |
| 3 | **FABRICACIÓN Y MONTAJE DE SOPORTES TK-6060 5817** |  | 2025-10-24 | 2026-03-17 |  |  |
| 4 | **TIE-IN DE LÍNEAS ASOCIADAS A TK-6060 5817** |  | 2026-01-26 | 2026-01-30 |  |  |
| 5 | **AISLACIÓN LÍNEAS TK-6060 5817** |  | 2025-11-05 | 2026-03-30 |  |  |
| 6 | **RED DE AIRE 5817** |  | 2026-01-08 | 2026-03-24 |  |  |
| 1 | **FABRICACIÓN Y MONTAJE DE CAÑERÍAS RED DE AIRE 5817** |  | 2026-01-08 | 2026-03-22 |  |  |
| 2 | **MONTAJE DE FITTING Y VÁLVULAS RED DE AIRE 5817** |  | 2026-01-14 | 2026-03-19 |  |  |
| 3 | **TIE-IN DE LÍNEAS ASOCIADAS A RED DE AIRE 5817** |  | 2026-03-16 | 2026-03-24 |  |  |
| 5 | **OBRAS ELÉCTRICAS TK-6060 5817** |  | 2025-11-08 | 2026-03-19 |  |  |
| 1 | **MONTAJE DE CANALIZACIÓN Y FERRETERÍA TK-6060 5817** |  | 2025-11-08 | 2026-03-19 |  |  |
| 2 | **TENDIDO Y CONEXIONADO DE CABLES DE ALIMENTACIÓN TK-6060 5817** |  | 2025-12-01 | 2026-01-10 |  |  |
| 3 | **MONTAJE DE POSTACIÓN TK-6060 5817** |  | 2025-12-11 | 2025-12-24 |  |  |
| A6170 | Retiro Perfil Exsitente y Soporte de Tuberias Existentes | 7d | 2025-09-11 A | 2026-01-05 A | A5990, A6250 | SQM-PIPING [432 h] |

Removed: MONTAJE DE BOMBAS; A1230 Bomba Centrífuga y Motor TAG: 5817-BBA-4003; 5817-MTR-4004; A1240 Bomba Centrífuga y Motor TAG: 5817-BBA-4006; 5817-MTR-4007; A1310 Bomba Centrífuga y Motor TAG: 5817-BBA-5002; 5817-MTR-5003; A1320 Bomba Centrífuga y Motor TAG: 5817-BBA-5005; 5817-MTR-5006; A1470 Parron Patio de Estanques Planchas; A1610 Conexiones Parrón desde Patio de Estanques hasta L5 LiOH.; A1619 Entrega de fundaciones; A1620 Estructura liviana: 0@30 kg/m Desde L5 LiOH hasta L3 LiOH; A1630 Planchas Desde L5 LiOH hasta L3 LiOH; MONTAJE DE CAÑERÍAS HDPE PN10 (P1) PATIO DE ESTANQUES; MONTAJE DE FITTING, VÁLVULAS Y FILTROS LÍNEAS PATIO DE ESTANQUES; A1870 DN 2" - Conjunto Portafiltro y Filtro de Insolubles; A1900 P1.9 x 3 un. - Pedestales para Tuberías Elevadas; A2000 Tie-In N° 4405A - Conexión de equipo existente TAG: 250-BB-5759-P5-3156 a equipo proyectado TAG: 5817-BBA-4006; A2040 Tie-In N° 5403A - TAG: 250-LMB-5759-P5-3356 a Succión TAG: 5817-BBA-5002; A2060 Tie-In N° 5404A - TAG: 250-LMB-5759-P5-3355 a Succión TAG: 5817-BBA-5005; A1980 Tie-In N° 4404A - Conexión de equipo existente TAG: 250-BB-5759-P5-3155 a equipo proyectado TAG: 5817-BBA-4003; A1990 Tie-In N° 4404B - Conexión de equipo existente TAG: 160-BB-5759-P5-3153 a equipo proyectado TAG: 5817-BBA-4003; A2010 Tie-In N° 4405B - TAG: 160-BB-5759-P5-3154 a Descarga TAG: 5817-BBA-4006; A2050 Tie-In N° 5403B - TAG: 160-LMB-5759-P7-3352 a Descarga TAG: 5817-BBA-5002; A2070 Tie-In N° 5404B - TAG: 160-LMB-5759-P7-3352 a Descarga TAG: 5817-BBA-5005; A2090 Cable Multiconductor para VDF BT (3C#6 + 3C#12) AWG; A2100 Cable Multiconductor para VDF BT (3C#2 + 3C#10) AWG; A2110 Cable Multiconductor para VDF BT (3C#2/0 + 3C#6) AWG; A2080 Cable de Fuerza Monoconductor de Cobre Blando, 1C #500 MCM; A2120 Cable de Fuerza Multiconductor de Cobre Blando, 1x4C #10 AWG; A2130 Cable de Fuerza Multiconductor de Cobre Blando, 1x4C #8 AWG; A2190 Conduit de Acero Galvanizado, 6"Ø, tipo Conduit ANSI C80.1; A2200 Conduit Flexible Metálico con Cubierta PVC 6" Ø Trabajo Pesado; A2210 Copla para Cañería de Acero Galvanizado 6"Ø; A2220 Conexión Terminal para Cañería de Acero Galvanizado 6"Ø; A2270 Conduit de Acero Galvanizado 2 1/2"Ø, tipo Conduit ANSI C80.1. Incluye Copla; A2280 Conduit Flexible Metálico con Cubierta PVC 2 1/2" Ø Trabajo Pesado; A2290 Conexión Terminal para Cañería de Acero Galvanizado 2 1/2"Ø; A2350 Conexión Terminal para Cañería de Acero Galvanizado 1 1/2"Ø; A2410 EPC Porta Conductores 400x100mm e:2mm, tiras 3m. Incluir tapa dos aguas, eclisas y pernos de unión.; A2420 EPC Curva Vertical Interior de 90°, 400x100mm e:2mm. Incluir tapa dos aguas, eclisas y pernos de unión.; A2430 EPC Derivación tipo TEE, 400x100mm e:2mm. Incluir tapa dos aguas, eclisas y pernos de unión.; A2450 Tablero Partidor de Motores Tag. N° 5817-TPM-7501; A2460 Fabricación de Fundaciones y Montaje de Transformador TAG:5817-TRF-7501; A2540 Cable de Cobre Desnudo Temple Blando, Nº 250 MCM , 19 Hebra.; A2560 Barra Copperweld 5/8" Ø x 3 metros de largo.; A2570 Cámara de registro de Concreto 8" Ø con Tapa.; A2580 Molde Cadweld para Unión Termofusión Conexión "TA", Móldelo TAC-2G2G.; A2590 Molde Cadweld para Unión Termofusión Conexión "XB", Modelo XBM-2G2G.; A2600 Molde Cadweld para Unión Termofusión Conexión "GY", Modelo GYE-162V.; A2610 Molde Cadweld para Unión Termofusión Conexión a Superficie Metálica, Modelo HSC-2G.; A2620 Carga para Termofusión Número 150.; A2630 Carga para Termofusión Número 200.; A2640 Carga para Termofusión Número 90.; A2670 Cable de Comunicaciones de Datos 1x4 Par #22 AWG Apantallado, Categoría 6; A2720 Cable de Control Multiconductor de Cobre Blando, 1 x 3c #8 AWG, Clase 1,0 kV; MONTAJE DE CANALIZACIÓN Y FERRETERÍA PATIO DE ESTANQUES; A2750 EPC Curva Tipo "Cruz" 600x100x2,5mm. Incluye eclipsas, pernos y tapa dos aguas.; A2780 Conduit flexible metálico con cubierta PVC 1" Ø; A2820 Tablero controlador Tag N° 5817-PLC-1201; A2830 Tablero de Distribución de Instrumentación Tag N°5817-TDI-1203; MONTAJE, CONEXIONADO Y PRUEBAS DE INSTRUMENTOS - SENSORES Y TRANSMISORES DE FLUJO; A2880 Tubo sensor de Flujo Magnético y Transmisor Remoto Tag FE/FIT-1204; MONTAJE, PRUEBAS Y CONEXIONADO DE INSTRUMENTOS - TRANSMISORES DE NIVEL; MONTAJE, PRUEBAS Y CONEXIONADO DE INSTRUMENTOS - INTERRUPTOR DE PRESIÓN; MONTAJE, PRUEBAS Y CONEXIONADO DE INSTRUMENTOS - INTERRUPTOR DE NIVEL; MONTAJE, PRUEBAS Y CONEXIONADO DE INSTRUMENTOS - INTERRUPTOR DE FLUJO; MONTAJE DE INSTRUMENTOS - INDICADORES DE PRESIÓN (MANÓMETROS); A3110 Indicador de Presión (manómetro) Tag PI-1205; A3120 Indicador de Presión (manómetro) Tag PI-1206; SECTOR SX5; OBRAS ELÉCTRICAS SX5; TENDIDO Y CONEXIONADO DE CABLES BAJA TENSIÓN SX5; A3260 Cable de fuerza Multiconductor de Cobre Blando 1x4C #6 AWG. Clase de Aislación 1 kV. Categoría C.; A3270 Cable de Control Multiconductor de Cobre Blando 1x5C #14 AWG. Clase de Aislación 1 kV. Categoría C.; A3280 Cable de Control Multiconductor de Cobre Blando 1x5C #14 AWG. Tensión de Servicio 1.0 kV.; MONTAJE DE CANALIZACIÓN Y FERRETERÍA SX5; A3290 Conduit Acero Galvanizado Ø 2" con Cubierta PVC; A3300 Conduit Flexible Metálico de Ø 2" con Cubierta PVC; ARMADO, MONTAJE Y HABILITACIÓN DE EQUIPOS SX5; A3310 Variador de Frecuencia 30kW, 400Vca. Ya instalado en Sala Eléctrica Existente.; A3320 Estación de Control con Cubierta “Rosite Glass Polyester”; MONTAJE DE SISTEMA PUESTA A TIERRA SX5; A3330 Cable de Cobre Desnudo Temple Blando, Nº 2/0 AWG, 19 Hebras.; ÁREA 5801 - SECTOR DATA CENTER; OBRAS CIVILES DATA CENTER; SUMINISTRO Y MONTAJE ASOCIADO A CERCO PERIMETRAL DATA CENTER; OBRAS ESTRUCTURALES DATA CENTER; ACERO ESTRUCTURAL, PLATAFORMA DATA CENTER; OBRAS MECÁNICAS DATA CENTER; MONTAJE Y PRUEBAS DE DATA CENTER; MONTAJE Y PRUEBAS DE BOMBAS DOSIFICADORAS DATA CENTER; MONTAJE Y PRUEBAS DE ESTANQUES DATA CENTER; OBRAS PIPING DATA CENTER; MONTAJE DE CAÑERÍA DATA CENTER; MONTAJE DE VÁLVULAS Y FITTING PIPING DATA CENTER; OBRAS ELÉCTRICAS DATA CENTER; MONTAJE Y CONEXIONADO CONDUCTORES FUERZA Y CONTROL; TENDIDO Y CONEXIONADO CABLES FUERZA MONOCONDUCTOR; TENDIDO Y CONEXIONADO CABLES FUERZA MULTICONDUCTOR; MONTAJE DE CANALIZACIÓN Y FERRETERÍA DATA CENTER; MONTAJE Y CONEXIONADO EQUIPOS DE ALUMBRADO; MONTAJE, CONEXIÓN Y PRUEBAS EQUIPOS DE CONTROL BOMBAS; MONTAJE/HABILITACÓN DE EQUIPOS ELÉCTRICOS PRINCIPALES DATA CENTER; OBRAS DE INSTRUMENTACIÓN SECTOR DATA CENTER; MONTAJE DE EQUIPOS DE COMUNICACIÓN Y CABECERAS DE F.O. EN RACK DE 19"; TENDIDO Y CONEXIONADO DE CABLES DE ALIMENTACIÓN DATA CENTER; SUMINSITRO Y MONTAJE DE PROTECCIONES ELÉCTRICAS; RED GN-GL L5 LiOH, ALIMENTACIÓN CALDERA UTILITIES - ÁREA 5801; ÁREA 5801 - SECTOR GNL; OBRAS CIVILES SECTOR LÍNEA DE GAS; MOVIMIENTO DE TIERRAS, EXCAVACIÓN PARA CRUCE DE CAMINO GNL; EXCAVACIÓN PARA CAÑERÍA ENTERRADA GNL; SERVICIOS, CRUCE DE CAMINO GNL; OBRAS PIPING SECTOR LÍNEA DE GAS; MONTAJE DE CAÑERÍAS, LÍNEAS DE GAS; MONTAJE DE VÁLVULAS MANUALES Y FITTING, LÍNEA DE GAS; TIE-IN LÍNEAS ASOCIADAS A GNL; FABRICACIÓN Y MONTAJE DE SOPORTES; OBRAS CIVILES TK-6060; LOSA Y FUNDACIONES TK-6060; MOVIMIENTO MASIVO DE TIERRA; A4100 Excavación Losa Estanque Pivote; A4110 Relleno Losa Estanque Pivote; SISTEMA DE IMPERMEABILIZACIÓN; A4120 Carpeta de HDPE Losa Estanque Pivote; A4130 Membrana de Geotextil Losa Estanque Pivote; FABRICACIÓN DE LOSA Y FUNDACIONES; A4160 Armadura de refuerzo A630-420H Losa Estanque Pivote; A4140 Hormigón G30 Losa Fundación Estanque Pivote; A4150 Hormigón G30 Pedestal PD-1 Bombas Estanque Pivote; CRUCE DE CAMINO; MOVIMIENTO MASIVO DE TIERRA PARA CRUCE DE CAMINOS; ENCAMISADO PARA CRUCE DE CAMINOS; A4270 Cañería 20" Cruce de Camino 1; A4290 Cañería 20" Cruce de Camino 2; OBRAS MECÁNICAS TK-6060; MONTAJE Y PRUEBAS DE EQUIPOS MECÁNICOS TK-6060; OBRAS PIPING TK-6060; MONTAJE Y FABRICACIÓN DE CAÑERÌAS TK-6060; FABRICACIÓN CAÑERÍAS TK-6060; MONTAJE CAÑERÍAS TK-6060; MONTAJE DE FITTING Y VÁLVULAS TK-6060; FABRICACIÓN Y MONTAJE DE SOPORTES TK-6060; TIE-IN DE LÍNEAS ASOCIADAS A TK-6060; AISLACIÓN LÍNEAS TK-6060; RED DE AIRE; FABRICACIÓN Y MONTAJE DE CAÑERÍAS RED DE AIRE; MONTAJE DE FITTING Y VÁLVULAS RED DE AIRE; TIE-IN DE LÍNEAS ASOCIADAS A RED DE AIRE; OBRAS ELÉCTRICAS TK-6060; MONTAJE DE CANALIZACIÓN Y FERRETERÍA TK-6060; A4880 Canalización y Copla de Conduit de Acero Galvanizado 2"Ø, Conduit ANSI C80.1; A4890 Canalización y Copla de Conduit Flexible Metálico con Cubierta PVC 2" Ø Trabajo Pesado; TENDIDO Y CONEXIONADO DE CABLES DE ALIMENTACIÓN TK-6060; MONTAJE DE POSTACIÓN TK-6060; A5180 EPC y Copla Porta Conductores 600x100mm e:2,5 mm, tiras 3m. Incluir tapa dos aguas, eclisas y pernos de unión.; A5190 EPC Curva de 90°, 600x100mm e:2,5mm. Incluir tapa dos aguas, eclisas y pernos de unión.; A6210 Perforación de Estanque Existente TK-800 para TIE-IN N°1431 y 1432.; EXTRACCIÓN DE ESTRUCTURA, FUNDACIONES Y DEM TK3000; A6500 Recorte de Grating Existente a Plomo Peldaño Escalera; A6510 Extracción Columnas Existentes de Estructura Monorriel; A6520 Extracción Diagonales Existentes de Estructura Monorriel; A6530 Extracción de Ducha; A6560 Columna Nueva de Estructura Monorriel; A6570 Diagonales Nuevas de Refuerzo Estructura Monorriel; OBRAS DE ESTRUCTURA TK-3000; MONTAJE Y PRUEBAS DE EQUIPOS MECÁNICOS ÁREA 5827 SECTOR TK-3000; A6600 Modificación de Estructura para Tecle Monorriel Existente; RETIRO DE ELEMENTOS EXISTENTES TK-3000; A6790 Retiro y Reubicación de Ducha Existente; A6800 Corte y Retiro de Parrilla de Piso Existente; A6810 Corte y Retiro de Columna Estructural Existente y Reforzamiento de Viga Voladizo.; A8590 Canalización y Copla de Conduit de Acero Galvanizado 4"Ø, Conduit ANSI C80.1; A8600 Canalización y Copla de Conduit Flexible Metálico con Cubierta PVC 4" Ø Trabajo Pesado

Changed:

| ID | Task | Start | Finish | Duration | Complete | Total float | Predecessors | Other |
| --- | --- | --- | --- | --- | --- | --- | --- | --- |
| 1 | **HITOS** | 2025-06-30 → 2026-03-16 (+259d) | 2026-03-15 → 2026-04-12 (+28d) |  |  |  |  |  |
| A1000 | Inicio de Proyecto | 2025-06-30 A → 2026-03-16 (+259d) | 2025-06-30 A → 2026-03-16 (+259d) |  | 100% → 0% | none → 28d |  |  |
| A1010 | Movilización, Instalación de Faenas y Proceso de Acreditación MEM Patio de Estanques | 2025-07-30 A → 2026-03-16 (+229d) | 2025-07-30 A → 2026-03-16 (+229d) | 15.27d → 0d | 100% → 0% | none → 28d |  |  |
| A1020 | Adjudicación OOCC Misceláneos Addendum 01 | 2025-08-28 A → 2026-03-16 (+200d) | 2025-08-28 A → 2026-03-16 (+200d) |  | 100% → 0% | none → 28d |  |  |
| A1030 | Proceso de Acreditación OOCC Misceláneos | 2025-08-28 A → 2026-03-16 (+200d) | 2025-09-10 A → 2026-03-16 (+187d) | 15.27d → 0d | 100% → 0% | none → 28d |  |  |
| A1040 | Desmovilización | 2026-02-28 → 2026-03-30 (+30d) | 2026-03-15 → 2026-04-12 (+28d) | 15.27d → 14d |  |  | A1080 → A1080, A1090 |  |
| A1050 | Término de Proyecto | 2026-03-15 → 2026-04-12 (+28d) | 2026-03-15 → 2026-04-12 (+28d) |  |  |  | A1040 FF → A1040 FF, A1090 FF |  |
| 2 | **HITOS CONTRACTUALES** | 2025-07-14 → 2026-03-16 (+245d) | 2026-02-28 → 2026-03-29 (+29d) |  |  |  |  |  |
| A1060 | Inicio Constructuvo Contractual MEM Patio de Estanques | 2025-07-14 A → 2026-03-16 (+245d) | 2025-07-14 A → 2026-03-16 (+245d) |  | 100% → 0% | none → 28d |  |  |
| A1070 | Inicio Constructuvo Contractual OOCC Misceláneos (Addendum 01) | 2025-09-11 A → 2026-03-16 (+186d) | 2025-09-11 A → 2026-03-16 (+186d) |  | 100% → 0% | none → 28d |  |  |
| A1080 | Término Constructivo Contractual MEM Patio de Estanques | 2026-02-28 → 2026-03-22 (+22d) | 2026-02-28 → 2026-03-22 (+22d) |  |  | 0d → 7d | A2180 FF, Tie-In N° 5404A - TAG: 250-LMB-5759-P5-3355 a Succión TAG: 5817-BBA-5005 FF, A1940, Carga para Termofusión Número 90., Cable de Control Multiconductor de Cobre Blando, 1 x 3c #8 AWG, Clase 1,0 kV, A3250 FF, Cable de Control Multiconductor de Cobre Blando 1x5C #14 AWG. Tensión de Servicio 1.0 kV., Tie-In N° 5404B - TAG: 160-LMB-5759-P7-3352 a Descarga TAG: 5817-BBA-5005, A3940, A1910 → A2180 FF, A1940, A3250 FF, A3940, A1910, A2030 FF, A1380 FF, A1430 FF, A1740 FF, A1720 FF |  |
| A1090 | Término Constructivo Contractual OOCC Misceláneos (Addendum 01) | 2026-02-05 → 2026-03-29 (+52d) | 2026-02-05 → 2026-03-29 (+52d) |  |  | 38.14d → 0d | A4690 FF, A5170 FF, A7440, A3910 FF, A3980 FF, A8330, A8810, A4060, A4480, A5950, A6490, Modificación de Estructura para Tecle Monorriel Existente, A8550, A7670 FF → A4690 FF, A5170 FF, A7440, A3910 FF, A3980 FF, A8330, A8810, A4060, A4480, A5950, A6490, A8550, A7670 FF, A6870 FF, A1920 FF, A4660 FF, A6200 FF, A6780 FF, A4380 FF |  |
| 3 | **CONSTRUCCIÓN** | 2025-07-14 → 2025-02-17 (-147d) | 2026-02-28 → 2026-03-30 (+30d) |  |  |  |  |  |
| 1 | **CONTRATO SC15682 - MEM PATIO DE ESTANQUES** | 2025-07-14 → 2025-02-17 (-147d) | 2026-02-28 → 2026-03-28 (+28d) |  |  |  |  |  |
| 1 | **SECTOR PATIO DE ESTANQUES** | 2025-07-14 → 2025-02-17 (-147d) | 2026-02-28 → 2026-03-28 (+28d) |  |  |  |  |  |
| 1 | **OBRAS MECÁNICAS PATIO DE ESTANQUES** |  | 2025-12-24 → 2026-03-17 (+83d) |  |  |  |  |  |
| 1 | **MONTAJE DE ESTANQUES** |  | 2025-10-31 → 2026-03-17 (+137d) |  |  |  |  |  |
| 1 | **MONTAJE DE ESTANQUES RED CONTRA INCENDIOS (RCI)** |  | 2025-08-31 → 2026-03-17 (+198d) |  |  |  |  |  |
| A1100 | Estanques de Agua para RCI TAG: 5764-EST-001 |  |  | 106.91d → 98d |  |  |  |  |
| A1110 | Estanques de Agua para RCI TAG: 5764-EST-015 | 2025-08-03 A → 2026-03-16 (+225d) | 2025-08-30 A → 2026-03-17 (+199d) | 90.55d → 2d | 100% → 0% | none → 26d | A1100 SS → A1100 SS+5d |  |
| A1130 | Estanque Agua Industrial y Plataforma Superior TAG: 5817-EST-1041 |  |  | 82.91d → 76d |  |  | A1110 SS+3.27d → A1110 SS+5d |  |
| A1140 | Estanque Agua Potable y Plataforma Superior TAG: 5817-EST-1071 |  |  | 86.18d → 79d |  |  | A1130 SS+3.27d → A1130 SS+5d |  |
| A1120 | Estanque Agua Ultrapura y Plataforma Superior TAG: 5817-EST-1001 |  |  | 82.91d → 76d |  |  | A1140 SS+3.27d → A1140 SS |  |
| A1170 | Bomba Centrífuga y Motor TAG: 5817-BBA-1052; 5817-MTR-1053 | 2025-08-03 A → 2025-07-24 A (-10d) | 2025-12-18 → 2026-03-16 (+88d) | 5.45d → 9d | 35% → 99% | 52.24d → 27.92d | A1110 SS → A1110 SS+5d | resources SQM-MECANICA [139.9 h] → SQM-MECANICA [98.25 h] |
| A1150 | Bomba Centrífuga y Motor TAG: 5817-BBA-1042; 5817-MTR-1043 | 2025-08-08 A → 2025-08-02 A (-6d) | 2025-12-18 → 2026-03-16 (+88d) | 5.45d → 9d | 65% → 89% | 52.24d → 27d | A1170 FF → A1170 SS |  |
| A1190 | Bomba Centrífuga y Motor TAG: 5817-BBA-1074; 5817-MTR-1075 | 2025-08-13 A → 2025-08-11 A (-2d) | 2025-12-18 → 2026-03-16 (+88d) | 5.45d → 9d | 65% → 98% | 52.24d → 27.82d | A1150 FF → A1150 SS |  |
| A1210 | Bomba Centrífuga y Motor TAG: 5817-BBA-1080; 5817-MTR-1081 |  | 2025-12-18 → 2026-03-16 (+88d) | 5.45d → 9d | 65% → 98% | 52.24d → 27.82d | A1190 FF → A1190 SS |  |
| A1220 | Bomba Centrífuga y Motor TAG: 5817-BBA-1083; 5817-MTR-1084 |  | 2025-12-18 → 2026-03-16 (+88d) | 5.45d → 9d | 65% → 98% | 52.24d → 27.82d | A1210 FF → A1210 SS |  |
| A1160 | Bomba Centrífuga y Motor TAG: 5817-BBA-1072; 5817-MTR-1073 |  | 2025-12-18 → 2026-03-16 (+88d) | 5.45d → 9d | 65% → 98% | 52.24d → 27.82d | A1220 FF → A1220 SS | resources SQM-MECANICA [98.25 h] → SQM-MECANICA [139.9 h] |
| A1180 | Bomba Centrífuga y Motor TAG: 5817-BBA-1055; 5817-MTR-1056 |  | 2025-12-18 → 2026-03-16 (+88d) | 5.45d → 9d | 65% → 98% | 52.24d → 27.82d | A1160 FF → A1160 SS |  |
| A1250 | Bomba Centrífuga y Motor TAG: 5817-BBA-4009; 5817-MTR-4010 |  | 2025-12-20 → 2026-03-16 (+86d) | 5.45d → 9d | 35% → 99% | 50.33d → 27.88d | Bomba Centrífuga y Motor TAG: 5817-BBA-4006; 5817-MTR-4007 FF → A1200 SS |  |
| A1200 | Bomba Centrífuga y Motor TAG: 5817-BBA-1077; 5817-MTR-1078 | 2025-12-15 → 2025-09-25 A (-81d) | 2025-12-20 → 2026-03-16 (+86d) | 5.45d → 9d | 0% → 98% | 50.33d → 27.82d | A1180 FF → A1180 SS |  |
| A1260 | Bomba Centrífuga y Motor TAG: 5817-BBA-4012; 5817-MTR-4013 |  | 2025-12-20 → 2026-03-16 (+86d) | 5.45d → 9d | 35% → 99% | 50.33d → 27.88d | A1250 FF → A1250 SS |  |
| A1270 | Bomba Centrífuga y Motor TAG: 5817-BBA-4015; 5817-MTR-4016 |  | 2025-12-20 → 2026-03-16 (+86d) | 5.45d → 9d | 35% → 99% | 50.33d → 27.88d | A1260 FF → A1260 SS |  |
| A1280 | Bomba Centrífuga y Motor TAG: 5817-BBA-4018; 5817-MTR-4019 |  | 2025-12-20 → 2026-03-16 (+86d) | 5.45d → 9d | 35% → 99% | 50.33d → 27.88d | A1270 FF → A1270 SS |  |
| A1290 | Bomba Centrífuga y Motor TAG: 5817-BBA-4021; 5817-MTR-4022 |  | 2025-12-20 → 2026-03-16 (+86d) | 5.45d → 9d | 35% → 99% | 50.33d → 27.88d | A1280 FF → A1280 SS |  |
| A1300 | Bomba Centrífuga y Motor TAG: 5817-BBA-4024; 5817-MTR-4025 |  | 2025-12-20 → 2026-03-16 (+86d) | 5.45d → 9d | 35% → 99% | 50.33d → 27.88d | A1290 FF → A1290 SS |  |
| A1330 | Bomba Centrífuga y Motor TAG: 5817-BBA-5008; 5817-MTR-5009 |  | 2025-12-21 → 2026-03-16 (+85d) | 5.45d → 9d | 12% → 95% | 50.33d → 27.53d |  |  |
| A1340 | Bomba Centrífuga y Motor TAG: 5817-BBA-5011; 5817-MTR-5012 |  | 2025-12-20 → 2026-03-16 (+86d) | 5.45d → 9d | 35% → 95% | 50.33d → 27.53d |  |  |
| A1350 | Bomba Sumidero y Motor TAG: 5817-BBS-1050; 5817-MTR-1051 |  | 2025-12-21 A | 5.45d → 9d | 12% → 100% | 50.33d → none | A1340 SS → A1340 |  |
| A1360 | Bomba Sumidero y Motor TTAG: 5817-BBS-4026; 5817-MTR-4027 |  | 2025-12-21 A | 5.45d → 9d | 12% → 100% | 50.33d → none | A1350 SS → A1350 |  |
| A1370 | Bomba Sumidero y Motor TAG: 5817-BBS-5014; 5817-MTR-5015 |  | 2025-12-21 A | 5.45d → 9d | 12% → 100% | 50.33d → none | A1360 SS → A1360 |  |
| A1380 | Alineamiento digital de Bombas de Proyecto | 2025-12-21 → 2026-03-16 (+85d) | 2025-12-24 → 2026-03-16 (+82d) | 3d → 1d |  | 69.58d → 13d | A1370, Bomba Centrífuga y Motor TAG: 5817-BBA-5005; 5817-MTR-5006 SS → A1370 |  |
| 3 | **OBRAS ESTRUCTURALES PATIO DE ESTANQUES** |  | 2026-02-17 → 2026-02-12 (-5d) |  |  |  |  |  |
| A1430 | Montaje de Acceso e Interconexión de Estanques TAG: 5817-EST-1001; 5817-EST-1041; 5817-EST-1071 |  | 2025-12-15 A | 10.91d → 10d | 93% → 100% | 0d → none |  | resources SQM-ESTRUCTURA [551.54 h] → SQM-ESTRUCTURA [1439.97 h] |
| 2 | **MONTAJE DE PARRÓN PATIO DE ESTANQUES ÁREA 7000** |  | 2025-12-24 → 2025-12-23 (-1d) |  |  |  |  |  |
| A1440 | Parron Patio de Estanques Estructura liviana |  | 2025-12-24 → 2025-12-23 A (-1d) | 32.73d → 30d | 72% → 100% | 42.08d → none | A1430 SS → A1100 SS, A1120 | resources SQM-ESTRUCTURA [1948.36 h] → SQM-ESTRUCTURA [3438.94 h] |
| A1450 | Parron Patio de Estanques Estructura Mediana |  | 2025-12-22 → 2025-12-21 A (-1d) | 36d → 25d | 79% → 100% | 42.08d → none | A1430 SS → A1440 SS+5d | resources SQM-ESTRUCTURA [1644.38 h] → SQM-ESTRUCTURA [2223.03 h] |
| A1460 | Parron Patio de Estanques Estructura Pesada |  | 2025-12-19 A | 27.27d → 25d | 82% → 100% | 0d → none | A1430 SS → A1450 SS+5d | resources SQM-ESTRUCTURA [2680.79 h] → SQM-ESTRUCTURA [4540.04 h] |
| 3 | **MONTAJE PLATAFORMA DE OPERACIÓN ÁREA 4000** |  | 2025-12-24 → 2025-12-23 (-1d) |  |  |  |  |  |
| A1480 | Plataforma de Operación Área 4000 Estructura Liviana |  | 2025-12-19 → 2025-12-18 A (-1d) | 4.36d → 4d | 7% → 100% | 42.08d → none | A1490 SS → A1460 | was named Plataforma de Operación área 4000 Estructura Liviana; resources SQM-ESTRUCTURA [258.65 h] → SQM-ESTRUCTURA [345.99 h] |
| A1490 | Plataforma de Operación Área 4000 Estructura Mediana |  | 2025-12-24 → 2025-12-23 A (-1d) | 10.91d → 10d | 15% → 100% | 42.08d → none | Parron Patio de Estanques Planchas SS → A1480 | was named Plataforma de Operación área 4000 Estructura Mediana; resources SQM-ESTRUCTURA [764.38 h] → SQM-ESTRUCTURA [1010.22 h] |
| A1510 | Plataforma de Operación Área 4000 Grating |  | 2025-12-21 → 2025-12-20 A (-1d) | 9.82d → 9d |  | 42.08d → none | A1500 FF → A1500 | was named Plataforma de Operación área 4000 Grating; resources SQM-ESTRUCTURA [516.55 h] → SQM-ESTRUCTURA [194.51 h] |
| A1520 | Plataforma de Operación Área 4000 Barandas FRP |  | 2025-12-22 → 2025-12-21 A (-1d) | 5.45d → 5d | 79% → 100% | 42.08d → none | A1510 SS → A1510 | was named Plataforma de Operación área 4000 Barandas FRP; resources SQM-ESTRUCTURA [109.98 h] → SQM-ESTRUCTURA [94.83 h] |
| A1500 | Plataforma de Operación Área 4000 Planchas | 2025-12-19 → 2025-12-18 A (-1d) | 2025-12-21 → 2025-12-20 A (-1d) | 2.18d → 2d | 0% → 100% | 42.08d → none |  | was named Plataforma de Operación área 4000 Planchas; resources SQM-ESTRUCTURA [12.22 h] → SQM-ESTRUCTURA [12.86 h] |
| 4 | **MONTAJE PLATAFORMA DE OPERACIÓN ÁREA 5000** | 2025-12-21 → 2025-12-20 (-1d) | 2026-01-16 → 2026-01-13 (-3d) |  |  |  |  |  |
| A1540 | Plataforma de Operación Área 5000 Estructura Mediana | 2025-12-21 → 2025-12-20 A (-1d) | 2025-12-29 → 2025-12-28 A (-1d) | 8.73d → 8d | 0% → 100% | 42.08d → none | A1520 SS → A1480 SS, A1480 | was named Plataforma de Operación área 5000 Estructura Mediana; resources SQM-ESTRUCTURA [367 h] → SQM-ESTRUCTURA [473.25 h] |
| A1530 | Plataforma de Operación Área 5000 Estructura Liviana | 2025-12-29 → 2025-12-28 A (-1d) | 2026-01-03 → 2026-01-01 A (-2d) | 4.36d → 4d | 0% → 100% | 42.08d → none |  | was named Plataforma de Operación área 5000 Estructura Liviana; resources SQM-ESTRUCTURA [131.39 h] → SQM-ESTRUCTURA [189.01 h] |
| A1550 | Plataforma de Operación Área 5000. Planchas | 2026-01-03 → 2026-01-01 A (-2d) | 2026-01-06 → 2026-01-04 A (-2d) | 3.27d → 3d | 0% → 100% | 42.08d → none |  | was named Plataforma de Operación área 5000. Planchas; resources SQM-ESTRUCTURA [5.4 h] → SQM-ESTRUCTURA [8.38 h] |
| A1560 | Plataforma de Operación Área 5000. Grating T3232 | 2026-01-06 → 2026-01-04 A (-2d) | 2026-01-13 → 2026-01-10 A (-3d) | 6.55d → 6d | 0% → 100% | 42.08d → none |  | was named Plataforma de Operación área 5000. Grating T3232; resources SQM-ESTRUCTURA [231.45 h] → SQM-ESTRUCTURA [99.17 h] |
| A1570 | Plataforma de Operación Área 5000. Barandas FRP Grado 3 | 2026-01-13 → 2026-01-10 A (-3d) | 2026-01-16 → 2026-01-13 A (-3d) | 3.27d → 3d | 0% → 100% | 42.08d → none | A1560, A1520 → A1560, A1520, A1490 | was named Plataforma de Operación área 5000. Barandas FRP Grado 3; resources SQM-ESTRUCTURA [61.1 h] → SQM-ESTRUCTURA [44.73 h] |
| 5 | **MONTAJE PARRÓN DESDE PATIO DE ESTANQUES A L5 LiOH** |  | 2026-02-17 → 2026-02-12 (-5d) |  |  |  |  |  |
| A1580 | Estructura A36 Liviana 0@30 Kg /m Parrón desde Patio de Estanques hasta L5 LiOH. |  | 2026-01-13 → 2026-01-10 A (-3d) | 38.18d → 35d | 23% → 100% | 35.57d → none | A1590 SS → A1590 SS+5d, A1570 FF | resources SQM-ESTRUCTURA [5681.6 h] → SQM-ESTRUCTURA [6372.6 h] |
| A1590 | Estructura A36 Mediana 31@60 Kg /m Parrón desde Patio de Estanques hasta L5 LiOH. |  | 2026-02-17 → 2026-02-12 A (-5d) | 84d → 77d | 23% → 100% | 0d → none | A1600 SS, A1460 SS → A1600 SS+5d | resources SQM-ESTRUCTURA [6500 h] → SQM-ESTRUCTURA [9325.65 h] |
| A1600 | Estructura A36 Pesada: > 61 Kg /m Parrón desde Patio de Estanques hasta L5 LiOH. |  | 2026-02-01 → 2026-01-28 A (-4d) | 84d → 77d | 42% → 100% | 0d → none | A1460 SS → A1450 | resources SQM-ESTRUCTURA [2646 h] → SQM-ESTRUCTURA [6541.74 h] |
| 6 | **MONTAJE PARRÓN DESDE L5 LiOH A L3 LiOH** | 2025-12-15 → none | 2025-12-25 → none |  |  |  |  |  |
| 4 | **OBRAS PIPING PATIO DE ESTANQUES** | 2025-08-26 → 2025-08-08 (-18d) | 2026-02-28 → 2026-03-25 (+25d) |  |  |  |  |  |
| 1 | **MONTAJE DE CAÑERÍAS ACERO INOXIDABLE PATIO DE ESTANQUES** |  | 2026-01-07 → 2026-03-20 (+72d) |  |  |  |  |  |
| A1650 | Ø 6" - Cañería Acero Inoxidable |  | 2025-12-27 → 2026-03-16 (+79d) | 10.91d → 10d | 74% → 90% | 67.06d → 27d | A1380 FF, A1920 SS → A1720 SS, A1580 | resources SQM-PIPING [593.28 h] → SQM-PIPING [647.42 h] |
| A1640 | Ø 8" - Cañería Acero Inoxidable |  | 2025-12-29 → 2026-03-16 (+77d) | 7.64d → 7d | 35% → 91% | 67.06d → 27.37d | A1650 SS, A1380 FF → A1650 SS | resources SQM-PIPING [153.47 h] → SQM-PIPING [182.65 h] |

| ID | Task | Start | Finish | Duration | Complete | Total float | Predecessors | Other |
| --- | --- | --- | --- | --- | --- | --- | --- | --- |
| A1680 | Ø 2" - Cañería Acero Inoxidable |  | 2026-01-05 → 2026-03-17 (+71d) | 15.27d → 14d | 64% → 90% | 67.06d → 26.53d | A1660 FF, A1640 SS → A1660 SS, A1640 SS | resources SQM-PIPING [556.61 h] → SQM-PIPING [836.16 h] |
| A1660 | Ø 4" - Cañería Acero Inoxidable | 2025-12-29 → 2025-12-28 A (-1d) | 2026-01-05 → 2026-03-16 (+70d) |  | 0% → 94% | 67.06d → 27.57d | A1640 → A1640 SS | resources SQM-PIPING → SQM-PIPING [19.81 h] |
| A1670 | Ø 3" - Cañería Acero Inoxidable | 2025-12-30 A | 2026-01-07 → 2026-03-16 (+68d) | 7.64d → 7d | 0% → 98% | 67.06d → 27.89d |  | resources SQM-PIPING [1.03 h] → SQM-PIPING [3.31 h] |
| A1690 | Ø 1" - Cañería Acero Inoxidable | 2025-12-30 A | 2026-01-07 → 2026-03-20 (+72d) | 7.64d → 7d | 0% → 99% | 67.06d → 9.47d | A1670 SS → A1670 SS, A1830 FF | resources SQM-PIPING [0.14 h] → SQM-PIPING [1.99 h] |
| A1720 | Ø 160 mm - Cañería HDPE, PE 100, PN10 | 2025-08-26 A → 2025-08-08 A (-18d) | 2026-02-17 → 2026-03-18 (+29d) | 193.09d → 160d | 71% → 98% | 0d → 11d | A1590 SS, Conexiones Parrón desde Patio de Estanques hasta L5 LiOH. FF → A1060 SS | resources SQM-PIPING [9441.54 h] → SQM-PIPING [7927.22 h] |
| A1750 | Ø 63 mm - Cañería HDPE, PE 100, PN10 | 2025-12-01 A → 2025-08-08 A (-115d) | 2026-02-17 → 2026-03-23 (+34d) | 15.27d → 14d | 2% → 48% | 16.89d → 20.79d | A1720 FF → A1720 SS | resources SQM-PIPING [325.14 h] → SQM-PIPING [266.04 h] |
| A1760 | Ø 50 mm - Cañería HDPE, PE 100, PN10 | 2025-12-01 A → 2025-08-22 A (-101d) | 2026-02-04 → 2026-03-16 (+40d) | 3.27d → 3d | 37% → 99% | 16.89d → 27.98d |  |  |
| A1770 | Ø 40 mm - Cañería HDPE, PE 100, PN10 | 2026-02-04 → 2025-08-25 A (-163d) | 2026-02-09 → 2026-03-16 (+35d) | 4.36d → 4d | 0% → 98% | 16.89d → 27.93d | A1760 → A1760 SS |  |
| A1780 | Ø 32 mm - Cañería HDPE, PE 100, PN10 | 2025-12-01 A → 2025-08-29 A (-94d) | 2026-02-09 → 2026-03-16 (+35d) | 3.27d → 3d | 7% → 99% | 16.89d → 27.98d | A1770 FF → A1770 SS |  |
| A1700 | Ø 250 mm - Cañería HDPE, PE 100, PN10 |  | 2026-01-08 → 2026-03-16 (+67d) | 15.27d → 14d | 2% → 93% | 47.86d → 27d | A1910 SS → A1650 SS | resources SQM-PIPING [730.65 h] → SQM-PIPING [29.25 h] |
| A1710 | Ø 200 mm - Cañería HDPE, PE 100, PN10 |  | 2025-12-31 → 2026-03-16 (+75d) | 7.64d → 7d | 7% → 86% | 52.07d → 27d |  | resources SQM-PIPING [52.34 h] → SQM-PIPING [56.84 h] |
| A1730 | Ø 110 mm - Cañería HDPE, PE 100, PN10 |  | 2026-01-04 → 2026-03-17 (+72d) | 15.27d → 14d | 24% → 86% | 52.07d → 26d |  | resources SQM-PIPING [726.45 h] → SQM-PIPING [1730.21 h] |
| A1740 | Ø 90 mm - Cañería HDPE, PE 100, PN10 |  | 2025-12-26 → 2026-03-20 (+84d) | 15.27d → 14d | 88% → 71% | 62.84d → 9d | A1730 SS → A1730 SS, A1860 FF, A1840 FF | resources SQM-PIPING [1.41 h] → SQM-PIPING [266.25 h] |
| 3 | **MONTAJE DE CAÑERÍAS HDPE PN16 (P7) PATIO DE ESTANQUES** | 2025-11-06 → 2025-09-01 (-66d) | 2025-12-31 → 2026-03-20 (+79d) |  |  |  |  |  |
| A1790 | Ø 90 mm - Cañería HDPE, PE 100, PN16 | 2025-11-06 A → 2025-09-01 A (-66d) | 2025-12-24 → 2026-03-16 (+82d) | 3.27d → 6d | 3% → 99% | 71.01d → 27.97d | A1110, A1380 FF → A1110 SS, A1780 SS | resources SQM-PIPING [0.1 h] → SQM-PIPING [0.77 h] |
| A1800 | DN 75 mm - Cañería HDPE, PE 100, PN16 | 2025-12-01 A → 2025-09-07 A (-85d) | 2025-12-30 → 2026-03-17 (+77d) | 15.27d → 8d | 63% → 83% | 59.09d → 26.62d | A1730 SS, A1860 FF → A1790 SS | resources SQM-PIPING [782.76 h] → SQM-PIPING [1027.42 h] |
| A1810 | Ø 63 mm - Cañería HDPE, PE 100, PN16 | 2025-12-24 → 2025-09-07 A (-108d) | 2025-12-27 → 2026-03-16 (+79d) | 3.27d → 3d | 0% → 83% | 71.01d → 27.49d | A1790 → A1790 SS | resources SQM-PIPING [19.89 h] → SQM-PIPING [14.02 h] |
| A1820 | Ø 40 mm - Cañería HDPE, PE 100, PN16 | 2025-12-27 → 2025-09-10 A (-108d) | 2025-12-31 → 2026-03-20 (+79d) | 3.27d → 3d | 0% → 100% | 71.01d → 23.1d | A1810 → A1810 SS, A1850 FF |  |
| A1850 | Montaje de Fitting HDPE (P7) GL | 2025-12-26 → 2025-08-08 A (-140d) | 2025-12-26 → 2026-03-20 (+84d) | 0d → 8d | 0% → 39% | 62.84d → 23.1d | A1740, A1840 → A1750 SS | resources SQM-PIPING → SQM-PIPING [636.87 h] |
| A1860 | Válvulas Patio de Estanques.(Global) | 2025-12-26 → 2025-08-18 A (-130d) | 2025-12-26 → 2026-03-20 (+84d) | 0d → 160d | 0% → 97% | 62.84d → 9d | A1740, A1850 → A1720 SS+10d | resources SQM-PIPING → SQM-PIPING [1423.5 h] |
| A1830 | Montaje de Fitting Acero Inoxidable GL |  | 2026-01-07 → 2026-03-20 (+72d) | 0d → 10d | 0% → 55% | 67.06d → 9.47d | A1740 SS, A1690 FF, DN 2" - Conjunto Portafiltro y Filtro de Insolubles FF → A1650 SS | resources SQM-PIPING → SQM-PIPING [1442.73 h] |
| A1840 | Montaje de Fitting HDPE (P1) GL | 2025-12-26 → 2025-12-25 A (-1d) | 2025-12-26 → 2025-12-25 A (-1d) | 0d → 160d | 0% → 100% | 62.84d → none | A1740, A1830 → A1720 SS+4d | resources SQM-PIPING → SQM-PIPING [5314.89 h] |
| 5 | **MONTAJE DE SOPORTACIÓN PIPING PATIO DE ESTANQUES** |  | 2026-02-07 → 2026-03-25 (+46d) |  |  |  |  |  |
| A1880 | P1.3 x 37 un. - Pedestales para Tuberías Elevadas |  | 2025-12-24 → 2026-03-18 (+84d) | 15.27d → 12d | 100% → 82% | 35.67d → 18d | A1720 SS → A1720 SS, A1750 SS | resources SQM-PIPING [486.26 h] → SQM-PIPING [1178.1 h] |
| A1910 | P4 x 40 un. - Pedestales para Tuberías Elevadas | 2025-10-28 A → 2025-09-10 A (-48d) | 2025-12-31 → 2026-03-16 (+75d) | 7.64d → 7d | 3% → 86% | 35.67d → 13d | P1.9 x 3 un. - Pedestales para Tuberías Elevadas SS → A1890 SS | resources SQM-PIPING [27.5 h] → SQM-PIPING [109.82 h] |
| A1920 | U3 x 5454 un. - Abrazadera para Tuberías Elevadas |  | 2026-02-07 → 2026-03-20 (+41d) | 50.18d → 36d | 9% → 94% | 35.67d → 9.47d | A1910 SS → A1910 SS, A1690 FF | resources SQM-PIPING [1285.61 h] → SQM-PIPING [253.07 h] |
| A1890 | P1.6 x 51 un. - Pedestal para Tuberías Elevadas. | 2025-09-09 A → 2026-03-16 (+188d) | 2026-02-04 → 2026-03-25 (+49d) | 45.82d → 10d | 8% → 0% | 35.67d → 18d |  | was named P1.6 x 51 un. - Pedestales para Tuberías Elevadas; resources SQM-PIPING → SQM-PIPING [487.44 h] |
| 6 | **TIE-IN DE LÍNEAS ASOCIADAS A PATIO DE ESTANQUES** | 2026-01-08 → 2026-01-14 (+6d) | 2026-02-28 → 2026-03-16 (+16d) |  |  |  |  |  |
| A1960 | Tie-In N° 4402 - Línea proyectada TAG: 160-BREF-5817-P1-4520 con equipo existente TAG: 5735-EST-5250 | 2026-02-18 → 2026-01-14 A (-35d) | 2026-02-19 → 2026-03-16 (+25d) | 1.09d → 1d |  | 0d → 27d | A1950 → A1950 SS |  |
| A1930 | Tie-In N° 1442 - Línea proyectada TAG: 110-W-5817-P1-1715 con existente TAG: 50-WW-5752-IA-7575 | 2026-02-09 → 2026-02-04 A (-5d) | 2026-02-10 → 2026-02-05 A (-5d) | 1.09d → 1d | 0% → 100% | 16.89d → none | A1730, A1780 → A1720, A1740 |  |
| A1940 | Tie-In N° 1471 - Línea proyectada TAG: 75-PW-5817-P7-1910 con existente TAG: 63-PW-5759-P5-3900 | 2026-02-10 → 2026-02-05 A (-5d) | 2026-02-11 → 2026-02-06 A (-5d) | 1.09d → 1d | 0% → 100% | 16.89d → none |  |  |
| A1950 | Tie-In N° 4401 - Línea proyectada TAG: 160-BREF-5817-P1-4504 con existente TAG: 160-BB-5759-P5-3153 | 2026-02-17 → 2026-02-12 A (-5d) | 2026-02-18 → 2026-02-13 A (-5d) | 1.09d → 1d | 0% → 100% | 0d → none | A1720 → A1720 FF |  |
| A2020 | Tie-In N° 5401 - Línea existente TAG:160-LMB-5759-P5-3352 a proyectada TAG:160-SAB-5817-P1-5504 | 2026-02-24 → 2026-02-18 A (-6d) | 2026-02-25 → 2026-02-19 A (-6d) | 1.09d → 1d | 0% → 100% | 0d → none | Tie-In N° 4405B - TAG: 160-BB-5759-P5-3154 a Descarga TAG: 5817-BBA-4006 → A1970 |  |
| A1970 | Tie-In N° 4403 - Línea proyectada TAG: 160-BREF-5817-P1-4524 con equipo existente TAG: 5759-EST-001 | 2026-02-19 → 2026-03-16 (+25d) | 2026-02-21 → 2026-03-16 (+23d) | 1.09d → 1d |  | 0d → 27d | A1960 → A1960 SS+1d | resources SQM-PIPING [15.75 h] → SQM-PIPING |
| A2030 | Tie-In N° 5402 - Línea proyectada TAG: 160-SAB-5817- P1-5503 con equipo existente TAG: 5735-EST-1800 | 2026-02-25 → 2026-03-16 (+19d) | 2026-02-26 → 2026-03-16 (+18d) | 1.09d → 1d |  | 0d → 13d | A2020 → A2020 SS | resources SQM-PIPING [15.75 h] → SQM-PIPING |
| 5 | **OBRAS ELÉCTRICAS PATIO DE ESTANQUES** | 2025-10-30 → 2025-02-17 (-255d) | 2026-01-19 → 2026-03-22 (+62d) |  |  |  |  |  |
| 1 | **TENDIDO Y CONEXIONADO DE CABLES BAJA TENSIÓN PATIO DE ESTANQUES** | 2025-12-01 → 2025-11-01 (-30d) | 2026-01-10 → 2026-03-22 (+71d) |  |  |  |  |  |
| A2140 | Cable de Fuerza Multiconductor de Cobre Blando, 1x4C #6 AWG | 2025-12-01 A → 2025-11-01 A (-30d) | 2026-01-03 → 2026-03-17 (+73d) | 4.36d → 4d | 6% → 64% | 50.33d → 24.55d | Cable de Fuerza Multiconductor de Cobre Blando, 1x4C #8 AWG FF → A2360 SS | resources SQM-ELÉCTRICO [123 h] → SQM-ELÉCTRICO [319.8 h] |
| A2150 | Cable de Fuerza Multiconductor de Cobre Blando, 1x4C #4 AWG | 2025-12-01 A → 2025-11-01 A (-30d) | 2026-01-05 → 2026-03-21 (+75d) | 6.55d → 6d | 1% → 0% | 50.33d → 22d |  | resources SQM-ELÉCTRICO [300.2 h] → SQM-ELÉCTRICO [621.26 h] |
| A2160 | Cable de Fuerza Multiconductor de Cobre Blando, 1x4C #2 AWG | 2026-01-05 → 2025-11-07 A (-59d) | 2026-01-08 → 2026-03-18 (+69d) | 3.27d → 3d |  | 50.33d → 25d | A2150 → A2150 SS | resources SQM-ELÉCTRICO [94.8 h] → SQM-ELÉCTRICO [384.26 h] |
| A2180 | Cable de Fuerza Multiconductor de Cobre Blando, 1x5C #14 AWG | 2025-12-01 A → 2025-11-07 A (-24d) | 2026-01-10 → 2026-03-22 (+71d) | 30.55d → 28d | 13% → 75% | 48.67d → 7d | A2170 FF → A2170 SS | resources SQM-ELÉCTRICO [1185.72 h] → SQM-ELÉCTRICO [940.7 h] |
| A2170 | Cable de Fuerza Multiconductor de Cobre Blando, 1x3C #6 AWG |  | 2026-01-08 → 2026-01-06 A (-2d) | 15.27d → 14d | 16% → 100% | 50.33d → none | A2160 FF → A2160 SS | resources SQM-ELÉCTRICO [432.96 h] → SQM-ELÉCTRICO [227.3 h] |
| 2 | **MONTAJE DE CANALIZACIÓN Y FERRETERÍA PATIO DE ESTANQUES** | 2025-12-01 → 2025-02-17 (-287d) | 2026-01-16 → 2026-03-19 (+62d) |  |  |  |  |  |
| A2250 | Instalación de Copla para Cañería de Acero Galvanizado 3"Ø. Incluye Copla. | 2025-12-01 A → 2025-02-17 A (-287d) | 2025-12-19 → 2026-03-16 (+87d) | 3.27d → 3.33d | 20% → 95% | 66.51d → 27.82d |  | was named Copla para Cañería de Acero Galvanizado 3"Ø. Incluye Copla; resources SQM-ELÉCTRICO [18.48 h] → SQM-ELÉCTRICO [8.4 h] |
| A2260 | Instalación de Conexión Terminal para Cañería de Acero Galvanizado 3"Ø. | 2025-12-01 A → 2025-02-17 A (-287d) | 2025-12-20 → 2026-03-16 (+86d) | 4.36d → 3.33d | 20% → 99% | 66.51d → 27.97d |  | was named Conexión Terminal para Cañería de Acero Galvanizado 3"Ø; resources SQM-ELÉCTRICO [4.2 h] → SQM-ELÉCTRICO [1.68 h] |
| A2240 | Conduit Flexible Metálico con Cubierta PVC 3" Ø Trabajo Pesado | 2025-12-01 A → 2025-10-19 A (-43d) | 2025-12-18 → 2026-03-16 (+88d) | 2.18d → 2d | 20% → 79% | 66.51d → 27.58d | A2230 SS, Conexión Terminal para Cañería de Acero Galvanizado 6"Ø SS → A2230 SS | resources SQM-ELÉCTRICO [10.5 h] → SQM-ELÉCTRICO [19.95 h] |
| A2300 | Conduit de Acero Galvanizado, 2"Ø, tipo Conduit ANSI C80.1.Incluye Copla | 2025-12-01 A → 2025-10-24 A (-38d) | 2025-12-22 → 2026-03-19 (+87d) | 8.73d → 8d | 30% → 55% | 66.51d → 24.36d | Conexión Terminal para Cañería de Acero Galvanizado 2 1/2"Ø SS → A2260 SS | resources SQM-ELÉCTRICO [840.26 h] → SQM-ELÉCTRICO [611.1 h] |
| A2310 | Conduit Flexible Metálico con Cubierta PVC 2" Ø Trabajo Pesado | 2025-12-01 A → 2025-11-01 A (-30d) | 2025-12-23 → 2026-03-18 (+85d) | 8.73d → 8d | 20% → 73% | 66.51d → 25.84d |  | resources SQM-ELÉCTRICO [252 h] → SQM-ELÉCTRICO [85.05 h] |
| A2330 | Conduit de Acero Galvanizado, 1 1/2"Ø, tipo Conduit ANSI C80.1. Incluye Copla | 2025-12-01 A → 2025-11-01 A (-30d) | 2025-12-23 → 2026-03-16 (+83d) | 8.73d → 8d | 23% → 93% | 68.96d → 27.41d | A2300 SS+2.18d → A2300 SS | resources SQM-ELÉCTRICO [516.6 h] → SQM-ELÉCTRICO [283.5 h] |
| A2230 | Conduit de Acero Galvanizado 3"Ø, tipo Conduit ANSI C80.1 |  | 2025-12-21 → 2025-12-20 A (-1d) | 5.45d → 5d | 20% → 100% | 66.51d → none | Conduit de Acero Galvanizado, 6"Ø, tipo Conduit ANSI C80.1 SS → A2360, A2400 | resources SQM-ELÉCTRICO [220.5 h] → SQM-ELÉCTRICO [121.8 h] |
| A2320 | Conexión Terminal para Cañería de Acero Galvanizado 2"Ø |  | 2025-12-19 → 2025-12-18 A (-1d) | 3.27d → 3d | 25% → 100% | 66.51d → none | A2310 SS → A2310 | resources SQM-ELÉCTRICO [9.45 h] → SQM-ELÉCTRICO [7.35 h] |
| A2340 | Conduit Flexible Metálico con Cubierta PVC 1 1/2" Ø Trabajo Pesado. | 2025-12-01 A → 2026-03-16 (+105d) | 2025-12-21 → 2026-03-19 (+88d) | 5.45d → 3.33d | 15% → 0% | 68.96d → 22.67d |  | was named Conduit Flexible Metálico con Cubierta PVC 1 1/2" Ø Trabajo Pesado; resources SQM-ELÉCTRICO [37.8 h] → SQM-ELÉCTRICO |
| 3 | **MONTAJE DE ESCALERILLAS Y PIEZAS ESPECIALES PATIO DE ESTANQUES** | 2025-11-26 → 2025-09-22 (-65d) | 2025-12-24 → 2026-03-20 (+86d) |  |  |  |  |  |
| A2360 | EPC Porta Conductores 600x100mm e:2 mm, tiras 3m. Incluir tapa dos aguas, eclisas y pernos de Unión. | 2025-11-26 A → 2025-09-22 A (-65d) | 2025-12-24 → 2026-03-18 (+84d) | 10.91d → 13d | 34% → 82% | 50.33d → 15.7d | A1370 SS, A1460 SS → A1880 SS, A1910 SS | was named EPC Porta Conductores 600x100mm e:2 mm, tiras 3m. Incluir tapa dos aguas, eclisas y pernos de unión.; resources SQM-ELÉCTRICO [1904 h] → SQM-ELÉCTRICO [1848 h] |
| A2370 | EPC Curva Horizontal de 90°, 600x100mm e:2mm. Incluir tapa dos aguas, eclisas y pernos de Unión. | 2025-12-04 A → 2025-09-28 A (-67d) | 2025-12-20 → 2026-03-20 (+90d) | 4.36d → 9d | 8% → 98% | 50.33d → 23.64d | A2360 SS → A2360 FF+2d | was named EPC Curva Horizontal de 90°, 600x100mm e:2mm. Incluir tapa dos aguas, eclisas y pernos de unión.; resources SQM-ELÉCTRICO → SQM-ELÉCTRICO [11.2 h] |
| A2380 | EPC Curva Vertical Interior de 90°, 600x100mm e:2mm. Incluir tapa dos aguas, eclisas y pernos de Unión. | 2025-12-04 A → 2025-10-07 A (-58d) | 2025-12-18 → 2026-03-16 (+88d) | 2.18d → 4d | 8% → 97% | 50.33d → 23.87d |  | was named EPC Curva Vertical Interior de 90°, 600x100mm e:2mm. Incluir tapa dos aguas, eclisas y pernos de unión.; resources SQM-ELÉCTRICO → SQM-ELÉCTRICO [5.6 h] |
| A2400 | EPC DerivaciØn tipo TEE, 600x100mm e:2mm. Incluir tapa dos aguas, eclisas y pernos de Unión. | 2025-12-06 A → 2025-10-11 A (-56d) | 2025-12-20 → 2026-03-18 (+88d) | 4.36d → 8d | 13% → 73% | 50.33d → 15.88d |  | was named EPC Derivación tipo TEE, 600x100mm e:2mm. Incluir tapa dos aguas, eclisas y pernos de unión.; resources SQM-ELÉCTRICO [44.8 h] → SQM-ELÉCTRICO [67.2 h] |
| A2390 | EPC Curva Vertical Exterior de 90°, 600x100mm e:2mm. Incluir tapa dos aguas, eclisas y pernos de Unión. | 2025-12-06 A → 2026-03-16 (+100d) | 2025-12-18 → 2026-03-20 (+92d) | 2.18d → 4d | 8% → 0% | 50.33d → 23.87d | A2380 SS → A2380 | was named EPC Curva Vertical Exterior de 90°, 600x100mm e:2mm. Incluir tapa dos aguas, eclisas y pernos de unión. |
| 4 | **MONTAJE DE EQUIPOS ELÉCTRICOS PATIO DE ESTANQUES** | 2025-12-01 → 2025-11-12 (-19d) | 2026-01-19 → 2026-03-17 (+57d) |  |  |  |  |  |
| A2440 | Estación Local Marca Allen Bradley o Equivalente, para Trabajo Pesado, NEMA 4X | 2025-12-01 A → 2025-11-12 A (-19d) | 2026-01-18 → 2026-03-17 (+58d) | 10.91d → 10d | 50% → 89% | 42.08d → 26.88d | Conexión Terminal para Cañería de Acero Galvanizado 1 1/2"Ø SS, A2520 SS → A2320, A2230 | resources SQM-ELÉCTRICO [588 h] → SQM-ELÉCTRICO [616 h] |
| 5 | **MONTAJE DE SISTEMA DE ILUMINACIÓN PATIO DE ESTANQUES** | 2025-10-30 → 2025-11-01 (+2d) | 2025-12-23 → 2026-03-21 (+88d) |  |  |  |  |  |
| A2500 | Poste Recto Acero Galvanizado 3" Ø 4m |  | 2025-12-21 → 2026-03-16 (+85d) | 7.64d → 7d | 11% → 93% | 66.9d → 27.48d |  | was named Postes Abatible Swivelpole Acero Galvanizado 1½" Ø x 4m; resources SQM-ELÉCTRICO [294 h] → SQM-ELÉCTRICO [126 h] |
| A2490 | Postes Abatible Swivelpole Acero Galvanizado 1 1/2" Ø x 4m |  | 2025-12-22 → 2025-12-21 A (-1d) | 10.91d → 10d | 33% → 100% | 66.9d → none | A2500 SS → A2500 | was named Postes Abatible Swivelpole Acero Galvanizado 1½" Ø x 4m; resources SQM-ELÉCTRICO [285.6 h] → SQM-ELÉCTRICO [319.2 h] |
| A2480 | Proyector de Área LED 200W - 220VAC - 50Hz, IP65, 2.200ØK, 12.800 Lm |  | 2025-12-23 → 2026-03-21 (+88d) | 10.91d → 10d | 18% → 46% | 66.9d → 22.64d | A2490 SS → none | was named Proyector de Área LED 200W - 220VAC - 50Hz, IP65, 2.200°K, 12.800 Lm; resources SQM-ELÉCTRICO [499.8 h] → SQM-ELÉCTRICO [882 h] |
| A2470 | Luminaria LED Tipo Campana Industrial Según DS N°1 35W - 220VAC - 50Hz, IP65 o Nema4X, 2.200ØK, 432,0 Lm |  | 2025-12-22 → 2025-12-21 A (-1d) | 12d → 11d | 40% → 100% | 66.9d → none | A2480 SS → A2480 | was named Luminaria LED Tipo Campana Industrial Según DS N°1 35W - 220VAC - 50Hz, IP65 o Nema4X, 2.200°K, 432,0 Lm |
| A2520 | Caja de Conexión Hermética 100x100x60 mm. Nema 4X con 6 Bornes de 6mm. |  | 2025-12-19 → 2026-03-17 (+88d) | 5.45d → 5d | 15% → 60% | 66.9d → 26.03d | A2470 SS → A2470 | resources SQM-ELÉCTRICO [144 h] → SQM-ELÉCTRICO [308.57 h] |
| A2530 | Instalación y Conexión de !quipos de Iluminación. |  | 2025-12-18 → 2026-03-16 (+88d) | 4.36d → 4d | 9% → 99% | 66.9d → 25.94d |  |  |
| A2510 | Poste Recto Acero Galvanizado 3" Ø 2,5m | 2025-10-30 A → 2026-03-19 (+140d) | 2025-12-16 → 2026-03-21 (+95d) | 2.18d → 2d | 18% → 0% | 66.9d → 22.67d | A1120 → A2140, A2340 | resources SQM-ELÉCTRICO [50.4 h] → SQM-ELÉCTRICO |
| 6 | **MONTAJE SISTEMA PUESTA A TIERRA PATIO DE ESTANQUES** |  | 2026-01-17 → 2026-03-18 (+60d) |  |  |  |  |  |
| A2550 | Cable de Cobre Desnudo Temple Blando, N° 2/0 AWG, 19 Hebras. |  | 2026-01-11 → 2026-03-16 (+64d) | 21.82d → 20d | 12% → 97% | 62.18d → 27.42d | Cable de Cobre Desnudo Temple Blando, Nº 250 MCM , 19 Hebra. SS → A2530 SS | was named Cable de Cobre Desnudo Temple Blando, Nº 2/0 AWG, 19 Hebras.; resources SQM-ELÉCTRICO [1080.8 h] → SQM-ELÉCTRICO [710.24 h] |

| ID | Task | Start | Finish | Duration | Complete | Total float | Predecessors | Other |
| --- | --- | --- | --- | --- | --- | --- | --- | --- |
| A2650 | Caja de Barra Puesta a Tierra 500x400x200mm, de Poliéster con Tapa. | 2025-12-23 A | 2026-01-03 → 2026-03-18 (+74d) | 10.91d → 10d | 0% → 77% | 62.18d → 15.76d | Cámara de registro de Concreto 8" Ø con Tapa. SS → A2550 SS | resources SQM-ELÉCTRICO [420 h] → SQM-ELÉCTRICO [210 h] |
| 6 | **OBRAS DE INSTRUMENTACIÓN PATIO DE ESTANQUES** |  | 2026-01-05 → 2026-03-28 (+82d) |  |  |  |  |  |
| 1 | **TENDIDO Y CONEXIONADO DE CABLES DE COMUNICACIÓN PATIO DE ESTANQUES** |  | 2025-12-22 → 2026-03-18 (+86d) |  |  |  |  |  |
| A2660 | Cable Fibra Óptica Multimodo Exterior 12 fibras OM3 LSZH |  | 2025-12-22 → 2026-03-18 (+86d) | 8.73d → 8d | 76% → 69% | 60.59d → 23.53d |  |  |
| 2 | **TENDIDO Y CONEXIONADO DE CABLES DE INSTRUMENTACIÓN PATIO DE ESTANQUES** |  | 2026-01-05 → 2026-03-19 (+73d) |  |  |  |  |  |
| A2680 | Cable de Instrumentación (Señales Análogas), 1x1 par #16 AWG Apantallado |  | 2026-01-01 → 2026-03-19 (+77d) | 13.09d → 10d | 10% → 64% | 60.88d → 24.38d | Cable de Comunicaciones de Datos 1x4 Par #22 AWG Apantallado, Categoría 6 SS → A2660 SS | resources SQM-INSTRUMENTACIÓN [636.4 h] → SQM-INSTRUMENTACIÓN [478.04 h] |
| A2690 | Cable de Control Multiconductor de Cobre Blando, 1x3c #14 AWG, Clase 1,0 kV |  | 2026-01-01 → 2026-03-19 (+77d) | 4.36d → 4d | 10% → 69% | 60.88d → 24.38d |  | resources SQM-INSTRUMENTACIÓN [162.8 h] → SQM-INSTRUMENTACIÓN [106.26 h] |
| A2700 | Cable de Control Multiconductor de Cobre Blando, 1x3c #14 AWG, Clase 0,3 kV |  | 2026-01-05 → 2026-03-17 (+71d) | 8.73d → 4d | 10% → 52% | 60.88d → 24.08d |  | resources SQM-INSTRUMENTACIÓN [251.6 h] → SQM-INSTRUMENTACIÓN [177.9 h] |
| 3 | **TENDIDO Y CONEXIONADO DE CABLES DE ALIMENTACIÓN 120V PATIO DE ESTANQUES** |  | 2026-01-05 → 2026-03-19 (+73d) |  |  |  |  |  |
| A2710 | Cable de Control Multiconductor de Cobre Blando, 1x3c #12 AWG, Clase 1,0 kV |  | 2026-01-05 → 2026-03-19 (+73d) | 10.91d → 9d | 10% → 66% | 60.88d → 22.91d | A2700 FF → A2700 FF, A2650 FF | resources SQM-INSTRUMENTACIÓN [355.2 h] → SQM-INSTRUMENTACIÓN [263.44 h] |
| A2770 | Conduit de acero galvanizado 1"Ø, tipo conduit ANSI C80.1 |  | 2025-12-21 → 2026-03-17 (+86d) | 4.36d → 5d | 15% → 71% | 60.59d → 26.56d | A2760 FF → A2760 SS | resources SQM-INSTRUMENTACIÓN [346.5 h] → SQM-INSTRUMENTACIÓN [343.35 h] |
| A2790 | Conduit flexible Metálico con cubierta PVC 1/2" Ø |  | 2025-12-23 → 2026-03-16 (+83d) | 3.27d → 4d | 10% → 75% | 60.59d → 27.01d | Conduit flexible metálico con cubierta PVC 1" Ø FF → A2770 SS | was named Conduit flexible metálico con cubierta PVC 1/2" Ø; resources SQM-INSTRUMENTACIÓN [40.95 h] → SQM-INSTRUMENTACIÓN [52.92 h] |
| A2800 | Caja metØlica de Distribución 100x100x65mm |  | 2025-12-23 → 2026-03-16 (+83d) | 3.27d → 4d | 15% → 92% | 60.59d → 27.7d |  | was named Caja metálica de distribución 100x100x65mm |
| A2810 | Riel unistrut 42x42x2,5 mm, acero galvanizado, tiras de 3 metros |  | 2026-01-02 → 2026-03-16 (+73d) | 3.27d → 4d | 28% → 94% | 58.32d → 27.76d | A2730 FF → A2730 SS |  |
| A2730 | EPC porta conductores de acero galvanizado 600x100x2,5mm. Incluye eclipsas, pernos y tapa dos aguas. | 2025-12-16 → 2026-03-18 (+92d) | 2026-01-02 → 2026-03-23 (+80d) | 16.36d → 4.95d |  | 58.32d → 15.7d | A2360 SS → A2360, A2400, A2650 | resources SQM-INSTRUMENTACIÓN [1344 h] → SQM-INSTRUMENTACIÓN |
| A2740 | EPC Curva Tipo "T", 600x100x2,5mm. Incluir tapa dos aguas, eclisas y pernos de Unión. | 2025-12-19 → 2026-03-23 (+94d) | 2025-12-21 → 2026-03-26 (+95d) | 2.18d → 3d |  | 60.59d → 15.7d | A2730 SS+2.18d → A2730 | was named EPC Curva Tipo "T", 600x100x2,5mm. Incluir tapa dos aguas, eclisas y pernos de unión.; resources SQM-INSTRUMENTACIÓN [33.6 h] → SQM-INSTRUMENTACIÓN |
| A2760 | Conduit de acero galvanizado 1"Ø, tipo conduit ANSI C80.1 | 2025-12-20 → 2026-03-26 (+96d) | 2025-12-21 → 2026-03-28 (+97d) | 1.09d → 2d |  | 60.59d → 15.7d | EPC Curva Tipo "Cruz" 600x100x2,5mm. Incluye eclipsas, pernos y tapa dos aguas. → A2740 | resources SQM-INSTRUMENTACIÓN [9.66 h] → SQM-INSTRUMENTACIÓN |
| 5 | **ARMADO Y MONTAJE DE EQUIPOS E INSTRUMENTOS PATIO DE ESTANQUES** | 2025-12-22 → 2026-03-19 (+87d) | 2025-12-29 → 2026-03-21 (+82d) |  |  |  |  |  |
| A2840 | Fuente Ininterrumpida de Poder Tag N°5817-UPS-1202. Conexión de UPS a TPM de planta. | 2025-12-26 → 2026-03-19 (+83d) | 2025-12-29 → 2026-03-21 (+82d) | 2.18d → 2d |  | 60.59d → 22.91d | Tablero de Distribución de Instrumentación Tag N°5817-TDI-1203 → A2660, A2530, A2710 | resources SQM-INSTRUMENTACIÓN [170 h] → SQM-INSTRUMENTACIÓN |
| A2850 | Tubo sensor de Flujo Magnético y Transmisor Remoto Tag FE/FIT-1301 |  | 2025-12-29 → 2026-03-16 (+77d) | 1.09d → 1d | 52% → 0% | 60.59d → 27d | A2840 FF → A2840 SS |  |
| A2860 | Tubo sensor de Flujo Magnético y Transmisor Remoto Tag FE/FIT-1306 |  | 2025-12-29 → 2026-03-16 (+77d) | 1.09d → 1d | 52% → 0% | 60.59d → 27d |  |  |
| A2890 | Tubo sensor de Flujo Magnético y Transmisor Remoto Tag FE/FIT-1207 |  | 2025-12-29 → 2026-03-16 (+77d) | 1.09d → 1d | 52% → 0% | 60.59d → 27d | Tubo sensor de Flujo Magnético y Transmisor Remoto Tag FE/FIT-1204 SS → A2870 SS |  |
| A2900 | Tubo sensor de Flujo Magnético y Transmisor Remoto Tag FE/FIT-4102 |  | 2025-12-29 → 2026-03-16 (+77d) | 1.09d → 1d | 10% → 0% | 60.59d → 27d | A2890 SS → A2890 SS, A2870 SS |  |
| A2910 | Tubo sensor de Flujo Magnético y Transmisor Remoto Tag FE/FIT-4103 |  | 2025-12-29 → 2026-03-16 (+77d) | 1.09d → 1d | 10% → 0% | 60.59d → 27d |  |  |
| A2920 | Tubo sensor de Flujo Magnético y Transmisor Remoto Tag FE/FIT-4104 |  | 2025-12-29 → 2026-03-16 (+77d) | 1.09d → 1d | 10% → 0% | 60.59d → 27d |  |  |
| A2930 | Tubo sensor de Flujo Magnético y Transmisor Remoto Tag FE/FIT-5102 |  | 2025-12-29 → 2026-03-16 (+77d) | 1.09d → 1d | 10% → 0% | 60.59d → 27d |  |  |
| A2870 | Tubo sensor de Flujo Magnético y Transmisor Remoto Tag FE/FIT-1307 |  | 2025-12-29 → 2026-03-16 (+77d) | 1.09d → 1d | 10% → 0% | 60.59d → 27d |  |  |
| A2940 | Transmisor de Nivel Tag LT-1301 |  | 2025-12-29 → 2026-03-16 (+77d) | 1.09d → 1d | 52% → 0% | 60.59d → 27d |  |  |
| A2950 | Transmisor de Nivel Tag LT-1201 |  | 2025-12-29 → 2026-03-16 (+77d) | 1.09d → 1d | 52% → 0% | 60.59d → 27d |  |  |
| A2960 | Transmisor de Nivel Tag LT-4101 |  | 2025-12-29 → 2026-03-16 (+77d) | 1.09d → 1d | 10% → 0% | 60.59d → 27d |  |  |
| A2970 | Transmisor de Nivel Tag LT-4102 |  | 2025-12-29 → 2026-03-16 (+77d) | 1.09d → 1d | 10% → 0% | 60.59d → 27d |  |  |
| A2980 | Transmisor de Nivel Tag LT-5101 |  | 2025-12-29 → 2026-03-16 (+77d) | 1.09d → 1d | 10% → 0% | 60.59d → 27d |  |  |
| A2990 | Interruptor de Nivel Tag PSL-1301 |  | 2025-12-29 → 2026-03-16 (+77d) | 1.09d → 1d | 10% → 0% | 60.59d → 27d |  |  |
| A3000 | Interruptor de Nivel Tag PSL-1302 |  | 2025-12-29 → 2026-03-16 (+77d) | 1.09d → 1d | 10% → 0% | 60.59d → 27d |  |  |
| A3010 | Interruptor de Nivel Tag LCHL-1201 |  | 2025-12-29 → 2026-03-16 (+77d) | 1.09d → 1d | 10% → 0% | 60.59d → 27d |  |  |
| A3020 | Interruptor de Nivel Tag LCHL-4101 |  | 2025-12-29 → 2026-03-16 (+77d) | 1.09d → 1d | 10% → 0% | 60.59d → 27d |  |  |
| A3030 | Interruptor de Nivel Tag LCHL-5101 |  | 2025-12-29 → 2026-03-16 (+77d) | 1.09d → 1d | 10% → 0% | 60.59d → 27d |  |  |
| A3040 | Interruptor de Nivel Tag FS-4101 |  | 2025-12-29 → 2026-03-16 (+77d) | 1.09d → 1d | 10% → 0% | 60.59d → 27d |  |  |
| A3050 | Interruptor de Nivel Tag FS-4102 |  | 2025-12-29 → 2026-03-16 (+77d) | 1.09d → 1d | 10% → 0% | 60.59d → 27d |  |  |
| A3060 | Interruptor de Nivel Tag FS-5101 |  | 2025-12-29 → 2026-03-16 (+77d) | 1.09d → 1d | 10% → 0% | 60.59d → 27d |  |  |
| A3070 | Interruptor de Nivel Tag FS-8101 |  | 2025-12-29 → 2026-03-16 (+77d) | 1.09d → 1d | 10% → 0% | 60.59d → 27d |  |  |
| A3080 | Indicador de Presión (Manómetro) Tag PI-1201 |  | 2025-12-29 → 2026-03-16 (+77d) | 1.09d → 1d | 10% → 0% | 60.59d → 27d |  | was named Indicador de Presión (manómetro) Tag PI-1201 |
| A3090 | Indicador de Presión (Manómetro) Tag PI-1202 |  | 2025-12-29 → 2026-03-16 (+77d) | 1.09d → 1d | 10% → 0% | 60.59d → 27d |  | was named Indicador de Presión (manómetro) Tag PI-1202 |
| A3100 | Indicador de Presión (Manómetro) Tag PI-1203 |  | 2025-12-29 → 2026-03-16 (+77d) | 1.09d → 1d | 10% → 0% | 60.59d → 27d |  | was named Indicador de Presión (manómetro) Tag PI-1203 |
| A3130 | Indicador de Presión (Manómetro) Tag PI-1301 |  | 2025-12-29 → 2026-03-16 (+77d) | 1.09d → 1d | 10% → 0% | 60.59d → 27d | Indicador de Presión (manómetro) Tag PI-1206 SS → A3100 SS | was named Indicador de Presión (manómetro) Tag PI-1301 |
| A3140 | Indicador de Presión (Manómetro) Tag PI-1302 |  | 2025-12-29 → 2026-03-16 (+77d) | 1.09d → 1d | 10% → 0% | 60.59d → 27d | A3130 SS → A3130 SS, A3100 SS | was named Indicador de Presión (manómetro) Tag PI-1302 |
| A3150 | Indicador de Presión (Manómetro) Tag PI-1303 |  | 2025-12-29 → 2026-03-16 (+77d) | 1.09d → 1d | 10% → 0% | 60.59d → 27d |  | was named Indicador de Presión (manómetro) Tag PI-1303 |
| A3160 | Indicador de Presión (Manómetro) Tag PI-1304 |  | 2025-12-29 → 2026-03-16 (+77d) | 1.09d → 1d | 10% → 0% | 60.59d → 27d |  | was named Indicador de Presión (manómetro) Tag PI-1304 |
| A3170 | Indicador de Presión (Manómetro) Tag PI-1305 |  | 2025-12-29 → 2026-03-16 (+77d) | 1.09d → 1d | 10% → 0% | 60.59d → 27d |  | was named Indicador de Presión (manómetro) Tag PI-1305 |
| A3180 | Indicador de Presión (Manómetro) Tag PI-4103 |  | 2025-12-29 → 2026-03-16 (+77d) | 1.09d → 1d | 10% → 0% | 60.59d → 27d |  | was named Indicador de Presión (manómetro) Tag PI-4103 |
| A3190 | Indicador de Presión (Manómetro) Tag PI-4104 |  | 2025-12-29 → 2026-03-16 (+77d) | 1.09d → 1d | 10% → 0% | 60.59d → 27d |  | was named Indicador de Presión (manómetro) Tag PI-4104 |
| A3200 | Indicador de Presión (Manómetro) Tag PI-4105 |  | 2025-12-29 → 2026-03-16 (+77d) | 1.09d → 1d | 10% → 0% | 60.59d → 27d |  | was named Indicador de Presión (manómetro) Tag PI-4105 |
| A3210 | Indicador de Presión (Manómetro) Tag PI-4106 |  | 2025-12-29 → 2026-03-16 (+77d) | 1.09d → 1d | 10% → 0% | 60.59d → 27d |  | was named Indicador de Presión (manómetro) Tag PI-4106 |
| A3220 | Indicador de Presión (Manómetro) Tag PI-4107 |  | 2025-12-29 → 2026-03-16 (+77d) | 1.09d → 1d | 10% → 0% | 60.59d → 27d |  | was named Indicador de Presión (manómetro) Tag PI-4107 |
| A3240 | Indicador de Presión (Manómetro) Tag PI-5103 |  | 2025-12-29 → 2026-03-16 (+77d) | 1.09d → 1d | 10% → 0% | 60.59d → 27d |  | was named Indicador de Presión (manómetro) Tag PI-5103 |
| A3250 | Indicador de Presión (Manómetro) Tag PI-5104 |  | 2025-12-31 → 2026-03-16 (+75d) | 1.09d → 1d | 10% → 0% | 58.32d → 13d |  | was named Indicador de Presión (manómetro) Tag PI-5104 |
| A3230 | Indicador de Presión (Manómetro) Tag PI-4108 |  | 2025-12-29 → 2026-03-16 (+77d) | 1.09d → 1d | 10% → 0% | 60.59d → 27d |  | was named Indicador de Presión (manómetro) Tag PI-4108 |
| 2 | **CONTRATO ADDENDUM 01 - OOCC Y MEM MISCELÁNEOS** |  | 2026-02-05 → 2026-03-30 (+53d) |  |  |  |  |  |
| 1 | **HABILITACIÓN DATA CENTER ZONA NORTE - ÁREA 5801** |  | 2025-12-29 → 2026-03-17 (+78d) |  |  |  |  |  |
| A3340 | Excavación para Fundaciones Cerco Perimetral Data Center |  | 2025-12-15 A | 2.18d → 2d | 85% → 100% | 88.6d → none |  | resources SQM-OOCC [18.38 h] → SQM-OOCC [42.21 h] |
| A3350 | Emplantillado (G-05) para Fundaciones Cerco Perimetral Data Center |  | 2025-12-15 A | 1.09d → 1d | 90% → 100% | 88.6d → none | A3340 SS → A3340 | resources SQM-OOCC [5.6 h] → SQM-OOCC [7.73 h] |
| A3370 | Armadura de Refuerzo para Fundaciones Cerco Perimetral Data Center |  | 2025-12-16 A | 4.36d → 4d | 56% → 100% | 88.6d → none | A3350 SS → A3350 | resources SQM-OOCC [122.4 h] → SQM-OOCC [211.59 h] |
| A3360 | Hormigonado (G-25) para Fundaciones Cerco Perimetral Data Center |  |  | 2.18d → 2d |  |  | A3370 SS → A3370 | resources SQM-OOCC [96 h] → SQM-OOCC [186.48 h] |
| A3390 | Pilar prefabricado PP7530 Cerco Perimetral Data Center |  |  | 7.64d → 7d |  |  |  |  |
| A3380 | Cierro Fijo ACMAFOR Data Center |  |  | 3.27d → 3d |  |  |  | resources SQM-OOCC [291.25 h] → SQM-OOCC [305.11 h] |
| A3400 | Accesos a Cierro Perimetral Data Center |  | 2025-12-15 A | 9.82d → 9d | 98% → 100% | 89.17d → none |  |  |
| A3410 | Estructuras Livianas, Plataforma Data Center |  | 2025-12-15 A | 5.45d → 5d | 94% → 100% | 89.17d → none | A3400 SS → A3400 | resources SQM-ESTRUCTURA [396.26 h] → SQM-ESTRUCTURA [276.69 h] |
| A3430 | Barandas, Plataforma Data Center |  | 2025-12-15 A | 3.27d → 3d | 95% → 100% | 89.17d → none | A3410 SS → A3410 | resources SQM-ESTRUCTURA [150.48 h] → SQM-ESTRUCTURA [147.74 h] |
| A3420 | Parrillas de Piso, Plataforma Data Center |  | 2025-12-15 A | 2.18d → 2d |  | 89.17d → none | A3430 SS → A3430 | resources SQM-ESTRUCTURA [6.08 h] → SQM-ESTRUCTURA [293.75 h] |
| A3440 | Escaleras, Plataforma Data Center |  | 2025-12-15 A | 3.27d → 3d | 95% → 100% | 89.17d → none | A3420 SS → A3420 | resources SQM-ESTRUCTURA [15.2 h] → SQM-ESTRUCTURA [15.07 h] |

| ID | Task | Start | Finish | Duration | Complete | Total float | Predecessors | Other |
| --- | --- | --- | --- | --- | --- | --- | --- | --- |
| A3450 | Grout Fundaciones Estructura Data Center |  | 2025-12-16 A | 3.27d → 3d | 59% → 100% | 89.17d → none | A3440 SS → A3440 |  |
| A3460 | Data center TAG 5808-SDAT-1701 |  |  | 27.27d → 25d |  |  | A1070 SS+10.91d → A1070 SS |  |
| A3470 | Bomba dosificadora TAG 5801-BBA-3100 |  | 2025-12-15 A | 4.36d → 4d | 80% → 100% | 54.18d → none |  |  |
| A3480 | Bomba dosificadora TAG 5801-BBA-3103 |  | 2025-12-15 A | 4.36d → 4d | 80% → 100% | 54.18d → none |  |  |
| A3490 | Estanque IBC para almcenamiento de agua. TAG 5801-EST-3106 |  |  | 1.09d → 1d |  |  | A3460 → A3460 SS |  |
| A3500 | Estanque IBC para almcenamiento de agua. TAG 5801-EST-3107 |  |  | 1.09d → 1d |  |  |  |  |
| A3510 | Estanque IBC para almcenamiento de agua. |  |  | 1.09d → 1d |  |  |  |  |
| A3520 | Estanque IBC para almcenamiento de agua. |  |  | 1.09d → 1d |  |  |  |  |
| A3540 | Ø 1" - Cañería Acero Inoxidable - Fabricación |  | 2025-12-15 A | 5.45d → 5d | 90% → 100% | 54.18d → none |  | resources SQM-PIPING [136 h] → SQM-PIPING [162 h] |
| A3530 | Ø 1 " - Cañería Acero Inoxidable - Montaje |  | 2025-12-15 A | 3.27d → 3d | 90% → 100% | 54.18d → none | A3540 FF → A3540 | resources SQM-PIPING [27.92 h] → SQM-PIPING [27.26 h] |
| A3580 | Ø 1-1/4" - Cañería Acero Inoxidable - Fabricación |  | 2025-12-18 A | 2.18d → 2d | 90% → 100% | 54.18d → none | A3550 FF → A3550 | resources SQM-PIPING [6 h] → SQM-PIPING [54 h] |
| A3570 | Ø 1-1/4 " - Cañería Acero Inoxidable - Montaje |  | 2025-12-18 A | 2.18d → 2d | 90% → 100% | 54.18d → none | A3580 SS+1.09d → A3580 | resources SQM-PIPING [10.05 h] → SQM-PIPING [1.96 h] |
| A3600 | Ø 2" - Cañería Acero Inoxidable - Fabricación |  | 2025-12-19 → 2025-12-18 A (-1d) | 3.27d → 3d | 82% → 100% | 54.18d → none | A3570 SS → A3570 | resources SQM-PIPING [111.11 h] → SQM-PIPING [122.73 h] |
| A3590 | Ø 2 " - Cañería Acero Inoxidable - Montaje |  | 2025-12-29 → 2025-12-28 A (-1d) | 3.27d → 3d | 83% → 100% | 76.11d → none | A3610 FF, A3620 FF, A3600 SS+1.09d, A3480 SS → A3610 FF, A3620, A3600, A3480 | resources SQM-PIPING [33.5 h] → SQM-PIPING [36.66 h] |
| A3560 | Ø 3/4" - Cañería Acero Inoxidable - Fabricación | 2025-12-15 A | 2025-12-17 A | 2.18d → 2d | 0% → 100% | 54.18d → none |  |  |
| A3550 | Ø 3/4 " - Cañería Acero Inoxidable - Montaje | 2025-12-16 A | 2025-12-18 A | 2.18d → 2d | 0% → 100% | 54.18d → none | A3560 SS+1.09d → A3560 | resources SQM-PIPING [6.3 h] → SQM-PIPING [0.32 h] |
| A3610 | Montaje de Fitting Acero Inoxidable GL Data Center | 2025-12-15 A | 2025-12-29 → 2025-12-28 A (-1d) | 14.18d → 15d | 0% → 100% | 76.11d → none | A3530 SS → A3530 | resources SQM-PIPING [387.61 h] → SQM-PIPING [388.56 h] |
| A3620 | Válvulas Data Center (Global) | 2025-12-15 A | 2025-12-29 → 2025-12-28 A (-1d) | 14.18d → 15d | 0% → 100% | 76.11d → none | A3530 SS → A3530, A3610 SS |  |
| A3630 | Cable Fuerza 3x1c # 350 MCM |  | 2025-12-15 A | 5.45d → 5d | 99% → 100% | 79.55d → none | A3730 SS → A3480, A3620 SS | resources SQM-ELÉCTRICO [136.85 h] → SQM-ELÉCTRICO [149.48 h] |
| A3640 | Cable Fuerza 3x1c # 500 MCM |  | 2025-12-15 A | 4.36d → 4d | 99% → 100% | 79.55d → none | A3630 SS → A3630 | resources SQM-ELÉCTRICO [61.76 h] → SQM-ELÉCTRICO [60.99 h] |
| A3650 | Cable tierra 1x1c # 2/0 AWG (VERDE) |  | 2025-12-15 A | 2.18d → 2d | 94% → 100% | 79.55d → none | A3640 SS → A3640 | resources SQM-ELÉCTRICO [26.35 h] → SQM-ELÉCTRICO [20.8 h] |
| A3660 | Cable Fuerza 1x4c # 12 AWG |  | 2025-12-15 A | 2.18d → 2d | 91% → 100% | 79.55d → none | A3650 SS → A3650 | resources SQM-ELÉCTRICO [23.38 h] → SQM-ELÉCTRICO [25.57 h] |
| A3670 | Cable Fuerza 1x4c # 8 AWG |  | 2025-12-16 A | 2.18d → 2d | 43% → 100% | 79.55d → none | A3660 SS → A3660 | resources SQM-ELÉCTRICO [8.12 h] → SQM-ELÉCTRICO [16.23 h] |
| A3690 | Cables Control 1x5c # 14 AWG |  | 2025-12-15 A | 2.18d → 2d | 91% → 100% | 79.55d → none | A3680 SS → A3680 | resources SQM-ELÉCTRICO [22.49 h] → SQM-ELÉCTRICO [24.59 h] |
| A3700 | Cables Control 1x3c # 12 AWG |  | 2025-12-16 → 2025-12-15 A (-1d) | 2.18d → 2d | 53% → 100% | 79.55d → none | A3690 SS → A3690 |  |
| A3680 | Cable Fuerza 1x5c # 8 AWG | 2025-11-02 A → 2026-03-16 (+134d) | 2025-12-16 → 2026-03-17 (+91d) | 2.18d → 2d | 12% → 0% | 79.55d → 26d | A3670 SS → A3670 |  |
| A3710 | C.A.G. 1", con Hilo y Copla de Unión, Según Norma ANSI C80-1. |  | 2025-12-15 A | 2.18d → 2d | 95% → 100% | 77.29d → none | A3460 → A3460, A3700 | resources SQM-ELÉCTRICO [25.2 h] → SQM-ELÉCTRICO [17.01 h] |
| A3720 | Conduit Flexible de Acero de 1" de Diámetro, con Chaqueta de PVC. |  |  | 2.18d → 2d |  |  | A3710 SS → A3710 |  |
| A3730 | Cable Fuerza 1x3c #12 AWG |  | 2025-12-16 → 2026-03-16 (+90d) | 2.18d → 2d | 45% → 95% | 77.29d → 27.9d | A3710 SS → A3710, A3720 | resources SQM-ELÉCTRICO [47.49 h] → SQM-ELÉCTRICO [54.8 h] |
| A3740 | Montaje y Soportación C.A.G. 1", con Hilo y Copla de Unión, Según Norma ANSI C80-1 |  |  | 2.18d → 2d |  |  | A3730 SS → A3730 | resources SQM-ELÉCTRICO [138.6 h] → SQM-ELÉCTRICO [151.2 h] |
| A3760 | Poste Recto/Curvo de Acero Galvanizado, 6 m útiles. |  | 2025-12-19 → 2025-12-18 A (-1d) | 6.55d → 6d | 33% → 100% | 77.29d → none |  |  |
| A3750 | Equipo de Alumbrado Público LED de 120 W, para Poste Tubular 6m.(LUZ CALIDA) |  | 2025-12-18 A | 6.55d → 6d | 50% → 100% | 77.29d → none | A3740 SS, A3760 SS, A3720 SS → A3740 SS, A3760, A3720 |  |
| A3770 | Estación Local y Elementos Asociados. |  | 2025-12-15 A | 2.18d → 2d | 93% → 100% | 80.14d → none | A3750 SS → A3750 |  |
| A3780 | Cable de Cobre electrolítico Desnudo, 2/0 AWG |  | 2025-12-15 A | 3.27d → 3d | 86% → 100% | 80.14d → none | A3770 SS → A3770 | resources SQM-ELÉCTRICO [144 h] → SQM-ELÉCTRICO [95.04 h] |
| A3800 | Tablero de Distribución de Fuerza y Alumbrado TAG: 5870-PNL-3101 |  | 2025-12-28 → 2025-12-27 A (-1d) | 3.27d → 3d | 93% → 100% | 77.29d → none | A3790 FF → A3790 |  |
| A3810 | Tablero de Alumbrado TAG: 5870-TDA-3103 |  | 2025-12-28 → 2025-12-27 A (-1d) | 3.27d → 3d | 93% → 100% | 77.29d → none | A3800 SS → A3800 |  |
| A3820 | Tablero Eléctrico Orion TAG: 5870-PNL-3105 |  | 2025-12-28 → 2025-12-27 A (-1d) | 3.27d → 3d | 93% → 100% | 77.29d → none | A3810 SS → A3810 |  |
| A3830 | Sistema de Almacenamiento de Energía BESS TAG: 5870-BCB-3102 |  | 2025-12-28 → 2025-12-27 A (-1d) | 3.27d → 3d | 90% → 100% | 77.29d → none | A3820 SS → A3820 |  |
| A3790 | SubEstación Unitaria TAG: 5870-SEU-3100 | 2025-12-18 A | 2025-12-28 → 2025-12-27 A (-1d) | 9.82d → 9d | 0% → 100% | 77.29d → none |  | was named Subestación Unitaria TAG: 5870-SEU-3100 |
| A3840 | Switch cisco catalyst, 9500, 24x1 y colocaciØn de TAGs |  | 2025-12-27 → 2025-12-26 A (-1d) | 1.09d → 1d | 90% → 100% | 77.29d → none | A3830 SS → A3830 | was named Switch cisco catalyst, 9500, 24x1 y colocación de TAGs |
| A3850 | Switch networking interr. Connectrix DS-6610B-L |  | 2025-12-27 → 2025-12-26 A (-1d) | 1.09d → 1d | 97% → 100% | 77.29d → none | A3840 SS → A3840 |  |
| A3860 | Servidores, poweredge, R660, DELL |  | 2025-12-27 → 2025-12-26 A (-1d) | 1.09d → 1d | 90% → 100% | 77.29d → none | A3850 SS → A3850 |  |
| A3870 | Servidores, poweredge, 500T, DELL |  | 2025-12-27 → 2025-12-26 A (-1d) | 1.09d → 1d | 90% → 100% | 77.29d → none | A3860 SS → A3860 |  |
| A3880 | TRANSCEIVER,QSFP,100GBASE,LR4 |  | 2025-12-27 → 2025-12-26 A (-1d) | 1.09d → 1d | 90% → 100% | 77.29d → none | A3870 SS → A3870 |  |
| A3890 | Conversor,SFP,TRANSCEIVER,10GBASE-T |  | 2025-12-27 → 2025-12-26 A (-1d) | 1.09d → 1d | 90% → 100% | 77.29d → none | A3880 SS → A3880 |  |
| A3900 | Cable Alimentación Eléctrica de Switches. Considera Suministro y Preparación |  |  | 3.27d → 3d |  |  | A3890 SS → A3890 | resources SQM-INSTRUMENTACIÓN [168 h] → SQM-INSTRUMENTACIÓN [126 h] |
| A3910 | Protecciones Eléctricas (CB-01;CB-02;CB-03;CB-04;CB-01R;CB-02R;CB-03R;CB-04R), y Borneras |  | 2025-12-29 → 2025-12-28 A (-1d) | 3.27d → 3d | 90% → 100% | 76.32d → none | A3900 SS, A3590 SS → A3900 FF, A3590 |  |
| A3920 | Excavación para Curce de Camino Norte Líneas de Gas |  | 2025-12-15 A | 1.09d → 3d | 68% → 100% | 75.23d → none |  | was named Excavación para Curce de Camino Norte Línes de Gas; resources SQM-OOCC [378 h] → SQM-OOCC [149.49 h] |
| A3950 | Arena para Relleno de Curce de Camino Norte Líneas de Gas |  | 2025-12-15 A | 2.18d → 2d |  | 84.01d → none |  | was named Arena para Relleno de Curce de Camino Norte Línes de Gas; resources SQM-OOCC [67.07 h] → SQM-OOCC [24.77 h] |
| A3930 | Relleno para Curce de Camino Norte Líneas de Gas |  |  | 3.27d → 6d |  |  | A4000 SS → A4000 FF | was named Relleno para Curce de Camino Norte Línes de Gas; resources SQM-OOCC [170.4 h] → SQM-OOCC [32.17 h] |
| A3940 | Transporte de Material a Botadero | 2025-11-03 A → 2026-03-16 (+133d) | 2025-12-14 A → 2026-03-16 (+92d) | 1.09d → 1d | 100% → 0% | none → 12d | A3920 SS, A3960 FF → A3920, A3960 | resources SQM-OOCC [14.4 h] → SQM-OOCC |
| A3960 | Excavación para Curce de Camino Sur Líneas de Gas |  |  | 5.45d → 7d |  |  | A4020 SS → A1070 SS | was named Excavación para Curce de Camino Sur Línes de Gas; resources SQM-OOCC [2094.75 h] → SQM-OOCC [372.75 h] |
| A3990 | Arena para Relleno de Curce de Camino Sur Líneas de Gas |  |  | 6.55d → 6d |  |  |  | was named Arena para Relleno de Curce de Camino Sur Línes de Gas; resources SQM-OOCC [123.89 h] → SQM-OOCC [58.83 h] |
| A3970 | Relleno para Curce de Camino Sur Líneas de Gas |  |  | 3.27d → 6d |  |  |  | was named Relleno para Curce de Camino Sur Línes de Gas; resources SQM-OOCC [950.4 h] → SQM-OOCC [81.02 h] |
| A3980 | Transporte de Material a Botadero | 2025-11-04 A → 2026-03-17 (+133d) | 2025-12-13 A → 2026-03-17 (+94d) | 3.27d → 1d | 100% → 0% | none → 12d |  | resources SQM-OOCC [79.8 h] → SQM-OOCC |
| A4000 | Camisa de 8" para Cruce de Camino Norte y Sur, Línea de Gas |  | 2025-12-18 → 2025-12-17 A (-1d) | 4.36d → 4d | 26% → 100% | 84.01d → none | A3950 SS → A3950 | resources SQM-OOCC [441 h] → SQM-OOCC [1359.75 h] |
| A4020 | Ø 4" - Cañería Acero Carbono ASTM A106 Gr. B (100mm) |  | 2025-12-26 → 2025-12-25 A (-1d) | 21.82d → 20d | 49% → 100% | 66.08d → none | A6040 SS → A4000 | resources SQM-PIPING [3233.15 h] → SQM-PIPING [2644.41 h] |
| A4010 | Ø 110 mm - Cañería HDPE, PE 100, PN10 (4") |  | 2025-12-19 → 2025-12-18 A (-1d) | 5.45d → 5d | 24% → 100% | 86.36d → none |  | resources SQM-PIPING [681.78 h] → SQM-PIPING [281.12 h] |
| A4030 | Montaje de Fitting para Líneas GNL | 2025-10-09 A → 2025-10-06 A (-3d) | 2025-12-29 → 2026-03-16 (+77d) | 54.55d → 24d | 74% → 100% | 76.11d → 27.97d | A4020 SS, A4010 SS → A4010 | resources SQM-PIPING [738.95 h] → SQM-PIPING [1052.25 h] |
| A4040 | Válvulas Línea de Gas (Global) |  | 2025-12-29 → 2026-03-16 (+77d) | 54.55d → 12d | 74% → 92% | 76.11d → 27d | A4030 SS → A4030 FF |  |
| A4060 | TIE-IN 5801-002 Acero Carbono Ø4" | 2025-12-26 → 2025-10-29 A (-58d) | 2025-12-29 → 2026-03-16 (+77d) | 3.27d → 1d |  | 76.11d → 13d |  |  |
| A4050 | TIE-IN 5801-001 Acero Carbono Ø4" | 2025-12-26 → 2025-12-25 A (-1d) | 2025-12-29 → 2025-12-28 A (-1d) | 3.27d → 1d | 0% → 100% | 76.11d → none |  |  |
| A4070 | Soportes tipo SOP 01-A |  | 2025-12-17 A | 6.55d → 6d | 60% → 100% | 66.08d → none | A4020 SS+22.91d → A4010 |  |
| A4080 | Soportes tipo SOP 01-B | 2025-12-17 A | 2025-12-24 → 2025-12-23 A (-1d) | 6.55d → 6d | 0% → 100% | 66.08d → none |  |  |
| A4090 | Soportes tipo SOP 02 | 2025-12-24 → 2025-12-23 A (-1d) | 2025-12-30 → 2025-12-29 A (-1d) | 6.55d → 6d | 0% → 100% | 66.08d → none | A4080 → A4080, A4020 FF | resources SQM-PIPING [97.88 h] → SQM-PIPING [105.38 h] |
| 3 | **ESTANQUE PIVOTE** |  | 2026-02-05 → 2026-03-30 (+53d) |  |  |  |  |  |
| 1 | **ÁREA 5817 - SECTOR TK-6060** | 2025-09-11 → 2025-09-24 (+13d) | 2026-02-05 → 2026-03-30 (+53d) |  |  |  |  |  |
| A4170 | Grating FRP T3232 Bomba Sumidero |  |  | 2.18d → 2d |  |  | Hormigón G30 Pedestal PD-1 Bombas Estanque Pivote SS → A3450 |  |
| A4180 | Estructura Liviana de Bomba Sumidero |  |  | 2.18d → 2d |  |  |  |  |
| A4190 | Excavación Cruce de Camino 1 |  | 2025-12-15 A | 7.64d → 7d | 92% → 100% | 49.98d → none | Membrana de Geotextil Losa Estanque Pivote SS → A3970, A4070, A4080 | resources SQM-OOCC [513.98 h] → SQM-OOCC [144.8 h] |

| ID | Task | Start | Finish | Duration | Complete | Total float | Predecessors | Other |
| --- | --- | --- | --- | --- | --- | --- | --- | --- |
| A4210 | Relleno Estructural Cruce de Camino 1 |  | 2025-12-15 A | 3.27d → 3d |  | 49.98d → none | A4190 SS → A4190 | resources SQM-OOCC [130.34 h] → SQM-OOCC [41.77 h] |
| A4230 | Excavación Cruce de Camino 2 |  | 2025-12-15 A | 5.45d → 5d | 91% → 100% | 87.23d → none | A4190 SS → A4190 | resources SQM-OOCC [367.13 h] → SQM-OOCC [133.88 h] |
| A4220 | Cama de Arena Cruce de Camino 1 |  | 2025-12-15 A | 1.09d → 1d |  | 49.98d → none | A4210 SS → A4210 | resources SQM-OOCC [8.44 h] → SQM-OOCC [2.61 h] |
| A4250 | Relleno Estructural Cruce de Camino 2 |  | 2025-12-15 A | 4.36d → 4d |  | 87.23d → none | A4230 SS → A4230 | resources SQM-OOCC [93.11 h] → SQM-OOCC [32.4 h] |
| A4260 | Cama de Arena Cruce de Camino 2 |  | 2025-12-15 A | 1.09d → 1d |  | 87.23d → none | A4250 SS → A4250 | resources SQM-OOCC [6.03 h] → SQM-OOCC [2.24 h] |
| A4200 | Relleno compactado Cruce de Camino 1 |  | 2025-12-15 A | 6.55d → 6d |  | 87.23d → none | A4280 SS → A4280 | resources SQM-OOCC [93.73 h] → SQM-OOCC [13.67 h] |
| A4240 | Relleno compactado Cruce de Camino 2 |  | 2025-12-15 A | 2.18d → 2d |  | 87.23d → none | A4300 SS, A4200 SS, A4260 SS → A4300, A4200, A4260 | resources SQM-OOCC [66.95 h] → SQM-OOCC [17.94 h] |
| A4280 | Cañería 12" Cruce de Camino 1 |  | 2025-12-15 A | 9.82d → 9d |  | 77.6d → none | Cañería 20" Cruce de Camino 1 SS+3.27d → A4190 | resources SQM-OOCC [651.74 h] → SQM-OOCC [510.09 h] |
| A4300 | Cañería 12" Cruce de Camino 2 |  | 2025-12-15 A | 8.73d → 8d |  | 87.23d → none | Cañería 20" Cruce de Camino 2 SS+3.27d → A4280, A4220 | resources SQM-OOCC [481.72 h] → SQM-OOCC [396.74 h] |
| A4320 | Estanque Pivote y Plataforma Sumerior TAG: 5817-EST-6060 |  |  | 54.55d → 50d |  |  | Hormigón G30 Losa Fundación Estanque Pivote SS → A4190 SS |  |
| A4340 | Bomba Centrífuga y Motor TAG: 5817-BBA-6069; 5817-MTR-6070 |  | 2025-12-16 A | 4.36d → 4d | 65% → 100% | 48.64d → none | Hormigón G30 Pedestal PD-1 Bombas Estanque Pivote SS → A4300 |  |
| A4350 | Bomba Centrífuga y Motor TAG: 5817-BBA-6072; 5817-MTR-6073 |  |  | 4.36d → 4d |  |  | A4340 SS → A4340 |  |
| A4360 | Bomba Centrífuga y Motor TAG: 5817-BBA-6077; 5817-MTR-6078 |  | 2025-12-16 A | 4.36d → 4d | 65% → 100% | 48.64d → none |  |  |
| A4330 | Agitador Vertical Estanque Pivote TAG: 5817-AGT-6061 / 5817-MTR-6062 |  | 2025-12-17 → 2025-12-16 A (-1d) | 10.91d → 10d | 80% → 100% | 48.64d → none | A4320 FF → A4320 |  |
| A4370 | Bomba Sumidero y Motor TAG: 5817-BBS-6075; 5817-MTR-6076 | 2025-12-17 A | 2025-12-21 → 2025-12-20 A (-1d) | 4.36d → 4d | 0% → 100% | 62.14d → none |  |  |
| A4380 | Ø 6" - Cañería Acero Inoxidable - Fabricación |  | 2026-01-11 → 2026-01-09 A (-2d) | 49.09d → 62d | 44% → 100% | 38.14d → none | A4320 SS+4.36d → A4320 SS | resources SQM-PIPING [8216.02 h] → SQM-PIPING [5915 h] |
| A4420 | Ø 1-1/2" - Cañería Acero Inoxidable - Fabricación | 2026-01-26 → 2025-10-25 A (-93d) | 2026-01-29 → 2026-03-16 (+46d) | 2.18d → 2d | 0% → 75% | 38.87d → 27.5d | A4400, A4090 → A4090 | resources SQM-PIPING [6 h] → SQM-PIPING [18 h] |
| A4410 | Ø 1" - Cañería Acero Inoxidable - Fabricación | 2026-01-29 → 2025-10-27 A (-94d) | 2026-02-01 → 2026-03-16 (+43d) | 3.27d → 3d | 0% → 88% | 38.87d → 27.65d | A4420 → A4420 SS |  |
| A4440 | Ø 4" - Cañería CPVC, SCH 80 - Fabricación |  | 2026-02-04 → 2026-01-31 A (-4d) | 13.09d → 12d | 8% → 100% | 38.87d → none | A4430 FF → A4430 |  |
| A4400 | Ø 2" - Cañería Acero Inoxidable - Fabricación | 2026-01-13 → 2025-12-21 A (-23d) | 2026-01-26 → 2026-03-16 (+49d) | 13.09d → 12d | 0% → 95% | 38.87d → 27.4d | A4390, A4330, A4370 → A4330, A4370 | resources SQM-PIPING [1416.4 h] → SQM-PIPING [903.21 h] |
| A4390 | Ø 4" - Cañería Acero Inoxidable - Fabricación | 2025-12-29 → 2025-12-28 A (-1d) | 2026-01-13 → 2026-01-11 A (-2d) | 15.27d → 14d | 0% → 100% | 38.87d → none | A4380 FF+2.18d → A4380 FF | resources SQM-PIPING [813.2 h] → SQM-PIPING [532 h] |
| A4450 | Ø 2" - Cañería CPVC, SCH 80 - Fabricación | 2026-01-23 → 2026-01-20 A (-3d) | 2026-01-26 → 2026-01-23 A (-3d) | 3.27d → 3d | 0% → 100% | 47.7d → none | A4440 SS → A4440 |  |
| A4430 | Ø 8" - Cañería CPVC, SCH 80 - Fabricación | 2026-02-01 → 2026-01-28 A (-4d) | 2026-02-04 → 2026-01-31 A (-4d) | 3.27d → 3d | 0% → 100% | 38.87d → none | A4410 → A4380 | resources SQM-PIPING [30.25 h] → SQM-PIPING [19.25 h] |
| A4490 | Ø 6" - Cañería Acero Inoxidable - Montaje |  | 2026-01-22 → 2026-03-23 (+60d) | 65.45d → 20d | 41% → 64% | 38.14d → 20.78d | A4380 SS+7.64d → A4380 | resources SQM-PIPING [4222.01 h] → SQM-PIPING [3785.39 h] |
| A4470 | Ø 4" - Cañería CPVC, SCH 80 - Montaje |  | 2026-01-26 → 2026-01-23 A (-3d) | 15.27d → 14d | 45% → 100% | 47.7d → none | A4460 FF → A4460, A4430 | resources SQM-PIPING [380.58 h] → SQM-PIPING [302.4 h] |
| A4500 | Ø 4" - Cañería Acero Inoxidable - Montaje | 2026-01-22 → 2026-01-19 A (-3d) | 2026-02-04 → 2026-01-31 A (-4d) | 13.09d → 12d | 0% → 100% | 38.52d → none | A4490 → A4490, A4390 | resources SQM-PIPING [130.62 h] → SQM-PIPING [229.81 h] |
| A4510 | Ø 2" - Cañería Acero Inoxidable - Montaje | 2026-01-22 → 2026-01-19 A (-3d) | 2026-02-02 → 2026-03-16 (+42d) | 10.91d → 10d | 0% → 92% | 38.52d → 13.18d | A4500 SS → A4500, A4450 SS, A4400 SS | resources SQM-PIPING [348.44 h] → SQM-PIPING [568.1 h] |
| A4460 | Ø 8" - Cañería CPVC, SCH 80 - Montaje | 2026-01-23 → 2026-01-20 A (-3d) | 2026-01-26 → 2026-01-23 A (-3d) | 3.27d → 3d | 0% → 100% | 47.7d → none | A4450 SS, A4320 → A4320 SS, A4430 | resources SQM-PIPING [35.13 h] → SQM-PIPING [39.9 h] |
| A4530 | Ø 1" - Cañería Acero Inoxidable - Montaje | 2026-01-30 → 2026-01-26 A (-4d) | 2026-02-04 → 2026-03-16 (+40d) | 5.45d → 5d | 0% → 100% | 38.52d → 28d | A4550 FF, A4520 FF, A4540 FF → A4520 SS |  |
| A4480 | Ø 2" - Cañería CPVC, SCH 80 - Montaje | 2026-02-02 → 2026-01-29 A (-4d) | 2026-02-05 → 2026-01-31 A (-5d) | 3.27d → 3d | 0% → 100% | 38.14d → none | A4470 FF, A4660 SS, A4240 → A4240, A4470 | resources SQM-PIPING [22.5 h] → SQM-PIPING [17.33 h] |
| A4520 | Ø 1-1/2" - Cañería Acero Inoxidable - Montaje | 2026-02-02 → 2026-01-29 A (-4d) | 2026-02-04 → 2026-03-16 (+40d) | 2.18d → 2d | 0% → 100% | 38.52d → 28d | A4510 → A4510 SS |  |
| A4540 | Montaje de Fitting para Líneas TK-6060 |  | 2026-02-04 → 2026-03-21 (+45d) | 104.73d → 93d | 50% → 94% | 38.52d → 22.8d |  | resources SQM-PIPING [6657.54 h] → SQM-PIPING [6575.76 h] |
| A4550 | Válvulas Sector TK-6060 (Global) |  | 2026-02-04 → 2026-03-24 (+48d) | 104.73d → 93d | 50% → 91% | 38.52d → 19.91d |  |  |
| A4580 | Soporte N°002 - Pedestal, Acero Estructural para Tuberías Diámetros Pequeños |  | 2025-12-28 → 2026-03-16 (+78d) | 4.36d → 3d | 86% → 94% | 38.14d → 27.82d | A4570 FF → A4570 | resources SQM-PIPING [8.5 h] → SQM-PIPING [12.75 h] |
| A4560 | Soporte N°001A - Pedestal con Repisa de Acero Estructural para Tuberías Diámetros Pequeños | 2025-12-15 A | 2025-12-17 → 2025-12-16 A (-1d) | 2.18d → 1d | 0% → 100% | 38.14d → none | A4380 SS, A4490 SS → A4380, A4490 |  |
| A4570 | Soporte N°001B - Pedestal con Repisa de Acero Estructural para Tuberías Diámetros Pequeños | 2025-12-17 A | 2025-12-28 → 2025-12-26 A (-2d) | 10.91d → 5d | 0% → 100% | 38.14d → none |  |  |
| A4590 | Soporte N°003A - Pedestal Tipo TEE, Acero Estructural para Tuberías Diámetros Pequeños | 2025-12-28 → 2025-12-27 A (-1d) | 2026-01-01 → 2025-12-30 A (-2d) | 4.36d → 3d | 0% → 100% | 38.14d → none |  |  |
| A4600 | Soporte N°003B - Pedestal Tipo TEE, Acero Estructural para Tuberías Diámetros Pequeños | 2026-01-01 → 2025-12-31 A (-1d) | 2026-01-07 → 2026-01-05 A (-2d) | 6.55d → 6d | 0% → 100% | 38.14d → none |  |  |
| A4610 | Soporte N°004 - Arco Tipo Vertical, Acero Estructural | 2026-01-08 → 2026-01-06 A (-2d) | 2026-01-10 → 2026-01-07 A (-3d) | 2.18d → 2d | 0% → 100% | 38.14d → none |  |  |
| A4620 | Soporte N°005 - Pedestal y Voladizo Tipo Simple, Acero Estructural para Tuberías Diámetros Pequeños | 2026-01-10 → 2026-01-08 A (-2d) | 2026-01-14 → 2026-01-11 A (-3d) | 4.36d → 4d | 0% → 100% | 38.14d → none |  |  |
| A4630 | Soporte N°006 - Pedestal y Voladizo Tipo Simple, Acero Estructural para Tuberías Diámetros Pequeños | 2026-01-14 → 2026-01-12 A (-2d) | 2026-01-18 → 2026-01-15 A (-3d) | 4.36d → 4d | 0% → 100% | 38.14d → none | A4620 → A4620 SS |  |
| A4640 | Soporte Primario Tipo "U" (Para Uso General) | 2026-01-18 → 2026-01-16 A (-2d) | 2026-02-02 → 2026-03-17 (+43d) | 14.18d → 13d | 0% → 88% | 38.14d → 26.42d | A4630 → A4630, A4550 SS | resources SQM-PIPING [5 h] → SQM-PIPING [86.63 h] |
| A4650 | TIE-IN N° 1433 - 5836-EST-3015 a Línea Proyectada 100-DR-5817-P2-6630 | 2026-01-30 → 2026-01-26 A (-4d) | 2026-02-01 → 2026-01-28 A (-4d) | 2.18d → 2d | 0% → 100% | 40.7d → none | A4530 SS → A4530 FF |  |
| A4660 | TIE-IN N° 1434 - 5836-EST-3015 a Línea Proyectada 100-DR-5817-P2-6610 | 2026-02-02 → 2026-01-29 A (-4d) | 2026-02-04 → 2026-01-30 A (-5d) | 2.18d → 2d | 0% → 100% | 38.14d → none | A4650 SS, A4640 → A4650 FF, A4640 |  |
| A4670 | Ø 6" - Aislación de Lana Mineral de 1,5" de espesor |  | 2026-01-22 → 2026-03-30 (+67d) | 39.27d → 15d | 20% → 0% | 51.61d → 13d | A4490 FF → A4490 SS | resources SQM-PIPING [6664.65 h] → SQM-PIPING [6005.38 h] |
| A4680 | Ø 4" - Aislación de Lana Mineral de 1,5" de espesor |  | 2026-02-04 → 2026-03-16 (+40d) | 7.64d → 7d | 10% → 93% | 38.52d → 12.48d | A4500 FF, A4670 SS → A4500, A4670 SS | resources SQM-PIPING [258.72 h] → SQM-PIPING [412.8 h] |
| A4690 | Ø 2" - Aislación de Lana Mineral de 1,5" de espesor | 2026-01-20 → 2026-03-16 (+55d) | 2026-02-04 → 2026-03-17 (+41d) | 15.27d → 1d |  | 38.52d → 12.48d | A4510 FF, A4680 FF → A4510 FF, A4680 | resources SQM-PIPING [52.3 h] → SQM-PIPING [32 h] |
| A4710 | Ø 3/4" - Cañería Acero Inoxidable - Fabricación | 2026-01-10 → 2026-01-08 A (-2d) | 2026-01-25 → 2026-03-19 (+53d) | 15.27d → 7d | 0% → 45% | 42.14d → 24.16d | A4720 FF → A4720 SS |  |
| A4700 | Ø 1" - Cañería Acero Inoxidable - Fabricación | 2026-01-17 → 2026-01-14 A (-3d) | 2026-02-01 → 2026-03-22 (+49d) | 15.27d → 7d |  | 42.14d → 21d | A4410 FF → A4410 SS, A4530 SS |  |
| A4720 | Ø 1" - Cañería Acero Inoxidable - Montaje | 2026-01-20 → 2026-01-17 A (-3d) | 2026-01-25 → 2026-03-18 (+52d) | 5.45d → 5d | 0% → 45% | 42.14d → 25.24d | A4700 SS+3.27d → A4700 SS+3d, A4410 SS | resources SQM-PIPING [173.99 h] → SQM-PIPING [174.09 h] |
| A4730 | Ø 3/4" - Cañería Acero Inoxidable - Montaje | 2026-01-22 → 2026-01-19 A (-3d) | 2026-01-25 → 2026-03-19 (+53d) | 3.27d → 3d | 0% → 85% | 42.14d → 19.14d | A4740 FF, A4750 FF, A4710 FF → A4740 FF, A4750 FF, A4710 SS | resources SQM-PIPING [8.64 h] → SQM-PIPING [12.35 h] |
| A4740 | Fitting Líneas de Aire (Global) | 2026-01-17 → 2026-01-14 A (-3d) | 2026-01-25 → 2026-03-18 (+52d) | 8.73d → 18d | 0% → 85% | 42.14d → 20.22d |  |  |
| A4750 | Válvulas Líneas de Aire (Global) | 2026-01-17 → 2026-01-14 A (-3d) | 2026-01-25 → 2026-03-19 (+53d) | 8.73d → 18d | 0% → 79% | 42.14d → 19.14d |  |  |
| A4760 | TIE-IN N° 1425 - 150-IA-5771-I1-2486 a Línea Proyectada 25-IA-5771-I1-1630 | 2026-01-21 → 2026-03-16 (+54d) | 2026-01-25 → 2026-03-19 (+53d) | 4.36d → 4d |  | 42.14d → 19d |  |  |
| A4770 | TIE-IN N° 1426 - 25-IA-5871-I1-1644 a Línea Proyectada 25-IA-5871-I1-1634 | 2026-01-25 → 2026-03-20 (+54d) | 2026-01-26 → 2026-03-20 (+53d) | 1.09d → 1d |  | 42.14d → 19d |  |  |
| A4780 | TIE-IN N° 1427 - 25-IA-5871-I1-1644 a Línea Proyectada 25-IA-5871-I1-1638 | 2026-01-26 → 2026-03-21 (+54d) | 2026-01-28 → 2026-03-21 (+52d) | 1.09d → 1d |  | 42.14d → 19d |  |  |
| A4790 | TIE-IN N° 1428 - LØne Existente (TAG por Confirmar) a Línea Proyectada 25-IA-5871-I1-1642 | 2026-01-28 → 2026-03-22 (+53d) | 2026-01-29 → 2026-03-22 (+52d) | 1.09d → 1d |  | 42.14d → 19d |  | was named TIE-IN N° 1428 - Líne Existente (TAG por Confirmar) a Línea Proyectada 25-IA-5871-I1-1642 |
| A4800 | TIE-IN N° 1429 - Línea Existente (TAG por Confirmar) a Línea Proyectada 25-IA-5871-I1-1646 | 2026-01-29 → 2026-03-23 (+53d) | 2026-01-30 → 2026-03-23 (+52d) | 1.09d → 1d |  | 42.14d → 19d |  |  |
| A4810 | TIE-IN N° 1430 - Línea Existente (TAG por Confirmar) a Línea Proyectada 25-IA-5871-I1-1649 | 2026-01-30 → 2026-03-24 (+53d) | 2026-01-31 → 2026-03-24 (+52d) | 1.09d → 1d |  | 42.14d → 19d |  |  |
| A4820 | EPC y Copla Porta Conductores 600x100mm e:2,5 mm, tiras 3m. Incluir tapa dos aguas, eclisas y pernos de Unión. |  | 2025-12-19 → 2026-03-16 (+87d) | 13.09d → 12d | 64% → 93% | 48.64d → 27.19d | A4360 SS, A4330 SS → A4360, A4330 FF | was named EPC y Copla Porta Conductores 600x100mm e:2,5 mm, tiras 3m. Incluir tapa dos aguas, eclisas y pernos de unión.; resources SQM-ELÉCTRICO [1120 h] → SQM-ELÉCTRICO [616 h] |
| A4830 | EPC Curva de 90°, 600x100mm e:2,5mm. Incluir tapa dos aguas, eclisas y pernos de Unión. |  | 2025-12-19 A | 3.27d → 3d | 47% → 100% | 61.89d → none |  | was named EPC Curva de 90°, 600x100mm e:2,5mm. Incluir tapa dos aguas, eclisas y pernos de unión.; resources SQM-ELÉCTRICO [56 h] → SQM-ELÉCTRICO [72.8 h] |
| A4840 | Canalización y Copla de Conduit de Acero Galvanizado 6"Ø, Conduit ANSI C80.1 |  | 2025-12-24 → 2026-03-19 (+85d) | 7.64d → 7d | 17% → 52% | 74.86d → 24.64d | A4830 SS → A4830 | resources SQM-ELÉCTRICO [441.21 h] → SQM-ELÉCTRICO [136.37 h] |
| A4900 | Canalización y Copla de Conduit de Acero Galvanizado 1 1/2"Ø, Conduit ANSI C80.1 |  | 2025-12-23 → 2025-12-22 A (-1d) | 7.64d → 7d | 36% → 100% | 48.64d → none | Canalización y Copla de Conduit de Acero Galvanizado 2"Ø, Conduit ANSI C80.1 FF → A4750 | was named Canalización y Copla de Conduit de Acero Galvanizado 1 ½"Ø, Conduit ANSI C80.1; resources SQM-ELÉCTRICO [441 h] → SQM-ELÉCTRICO [205.38 h] |
| A4850 | Canalización y Copla de Conduit Flexible Metálico con Cubierta PVC 6" Ø Trabajo Pesado |  | 2025-12-20 A | 3.27d → 3d | 15% → 100% | 74.86d → none | A4840 SS → A4840 | resources SQM-ELÉCTRICO [50.4 h] → SQM-ELÉCTRICO [10.08 h] |
| A4910 | Canalización y Copla de Conduit Flexible Metálico con Cubierta PVC 1 1/2" Ø Trabajo Pesado |  | 2025-12-25 → 2025-12-24 A (-1d) | 4.36d → 4d | 28% → 100% | 48.64d → none | Canalización y Copla de Conduit Flexible Metálico con Cubierta PVC 2" Ø Trabajo Pesado FF → A4900, A4870 | was named Canalización y Copla de Conduit Flexible Metálico con Cubierta PVC 1 ½" Ø Trabajo Pesado; resources SQM-ELÉCTRICO [75.6 h] → SQM-ELÉCTRICO [30.74 h] |
| A4860 | Canalización y Copla de Conduit de Acero Galvanizado 2 1/2"Ø, Conduit ANSI C80.1 | 2025-12-20 A | 2025-12-24 → 2025-12-23 A (-1d) | 3.27d → 3d | 0% → 100% | 74.86d → none |  | was named Canalización y Copla de Conduit de Acero Galvanizado 2 ½"Ø, Conduit ANSI C80.1; resources SQM-ELÉCTRICO [85.05 h] → SQM-ELÉCTRICO [11.34 h] |
| A4870 | Canalización y Copla de Conduit Flexible Metálico con Cubierta PVC 2 1/2" Ø Trabajo Pesado | 2025-12-23 → 2025-12-22 A (-1d) | 2025-12-24 → 2025-12-23 A (-1d) | 1.09d → 1d | 0% → 100% | 48.64d → none |  | was named Canalización y Copla de Conduit Flexible Metálico con Cubierta PVC 2 ½" Ø Trabajo Pesado; resources SQM-ELÉCTRICO [9.45 h] → SQM-ELÉCTRICO [3.78 h] |
| A4920 | Perno de Ensamble de Malla a Tierra en E.P.C. | 2025-12-23 → 2025-12-22 A (-1d) | 2025-12-25 → 2025-12-24 A (-1d) | 2.18d → 2d | 0% → 100% | 63.83d → none |  |  |
| A4940 | Cable Monoconductor de Cobre con Aislación XLPE, 1C #250 MCM, Clase 1 kV |  | 2026-01-11 → 2026-01-09 A (-2d) | 3.27d → 3d | 4% → 100% | 48.64d → none | A4930 FF → A4930 | resources SQM-ELÉCTRICO [107.44 h] → SQM-ELÉCTRICO [85.95 h] |
| A4990 | Cable Multiconductor de Cobre con Aislación XLPE, 1X4C #2 AWG, Clase 1 kV |  | 2025-12-24 → 2025-12-23 A (-1d) | 2.18d → 2d | 25% → 100% | 63.83d → none |  | resources SQM-ELÉCTRICO [31.6 h] → SQM-ELÉCTRICO [23.38 h] |

| ID | Task | Start | Finish | Duration | Complete | Total float | Predecessors | Other |
| --- | --- | --- | --- | --- | --- | --- | --- | --- |
| A5000 | Cable Multiconductor de Cobre con Aislación de XLPE, 1x5C #12 AWG, Clase 1 kV |  | 2025-12-24 → 2025-12-23 A (-1d) | 2.18d → 2d | 28% → 100% | 63.83d → none | A5010 SS, A4910 SS → A5010, A4910 | resources SQM-ELÉCTRICO [47.49 h] → SQM-ELÉCTRICO [38.36 h] |
| A4970 | Cable Multiconductor de Cobre con Aislación XLPE, 1X3C #4 AWG, Clase 1 kV | 2025-12-24 → 2025-12-23 A (-1d) | 2025-12-27 → 2025-12-26 A (-1d) | 3.27d → 3d | 0% → 100% | 63.83d → none |  | resources SQM-ELÉCTRICO [157.36 h] → SQM-ELÉCTRICO [121.95 h] |
| A4980 | Cable Multiconductor de Cobre con Aislación XLPE, 1X4C #10 AWG, Clase 1 kV | 2025-12-24 → 2025-12-23 A (-1d) | 2025-12-26 → 2025-12-25 A (-1d) | 2.18d → 2d | 0% → 100% | 63.83d → none |  | resources SQM-ELÉCTRICO [10.82 h] → SQM-ELÉCTRICO [9.2 h] |
| A4930 | Cable Monoconductor de Cobre con Aislación XLPE, 1C #500 MCM, Clase 1 kV | 2025-12-25 → 2025-12-24 A (-1d) | 2026-01-11 → 2026-01-09 A (-2d) | 17.45d → 15d | 0% → 100% | 48.64d → none |  | resources SQM-ELÉCTRICO [1737 h] → SQM-ELÉCTRICO [1945.44 h] |
| A4960 | Cable Multiconductor de Cobre con Aislación XLPE, 1X3C #8 AWG, Clase 1 kV | 2025-12-27 → 2025-12-26 A (-1d) | 2026-01-05 → 2026-01-03 A (-2d) | 8.73d → 8d | 0% → 100% | 63.83d → none |  | resources SQM-ELÉCTRICO [384.11 h] → SQM-ELÉCTRICO [305.67 h] |
| A4950 | Cable Multiconductor de Cobre con Aislación XLPE, 1X4C #8 AWG, Clase 1 kV | 2026-01-11 → 2026-01-09 A (-2d) | 2026-01-12 → 2026-01-10 A (-2d) | 1.09d → 1d | 0% → 100% | 48.64d → none |  | resources SQM-ELÉCTRICO [10.82 h] → SQM-ELÉCTRICO [9.2 h] |
| A5010 | Poste de Acero Galvanizado para Iluminación. |  | 2025-12-25 → 2025-12-24 A (-1d) | 4.36d → 4d | 39% → 100% | 63.83d → none | A4920 FF → A4920 |  |
| 4 | **MONTAJE Y CONEXIONADO DE EQUIPOS ELÉCTRICOS TK-6060** | 2025-12-25 → 2025-12-24 (-1d) | 2026-01-18 → 2026-01-15 (-3d) |  |  |  |  |  |
| A5020 | Tablero Partidor de Motores TAG: 5817-TPM-1501 | 2025-12-25 → 2025-12-24 A (-1d) | 2025-12-30 → 2025-12-29 A (-1d) | 5.45d → 3d | 0% → 100% | 61.73d → none | A4910 → A4900 SS |  |
| A5030 | Conexión de Motor TAG: 5817-MTR-6078 a TPM TAG: 5817-TPM-1501. | 2026-01-12 → 2026-01-10 A (-2d) | 2026-01-13 → 2026-01-11 A (-2d) | 1.09d → 1d | 0% → 100% | 48.64d → none |  | resources SQM-ELÉCTRICO [4.12 h] → SQM-ELÉCTRICO [4.13 h] |
| A5040 | Conexión de Motor TAG: 5817-MTR-6070 a TPM TAG: 5817-TPM-1501. | 2026-01-12 → 2026-01-10 A (-2d) | 2026-01-13 → 2026-01-11 A (-2d) | 1.09d → 1d | 0% → 100% | 48.64d → none |  | resources SQM-ELÉCTRICO [4.12 h] → SQM-ELÉCTRICO [4.13 h] |
| A5050 | Conexión de Motor TAG: 5817-MTR-6073 a TPM TAG: 5817-TPM-1501. | 2026-01-13 → 2026-01-11 A (-2d) | 2026-01-14 → 2026-01-12 A (-2d) | 1.09d → 1d | 0% → 100% | 48.64d → none |  | resources SQM-ELÉCTRICO [4.12 h] → SQM-ELÉCTRICO [4.13 h] |
| A5060 | Conexión de Motor TAG: 5817-MTR-6062 a TPM TAG: 5817-TPM-1501. | 2026-01-13 → 2026-01-11 A (-2d) | 2026-01-14 → 2026-01-12 A (-2d) | 1.09d → 1d | 0% → 100% | 48.64d → none |  | resources SQM-ELÉCTRICO [4.12 h] → SQM-ELÉCTRICO [4.13 h] |
| A5070 | Conexión de Motor TAG: 5817-MTR-6076 a TPM TAG: 5817-TPM-1501. | 2026-01-14 → 2026-01-12 A (-2d) | 2026-01-16 → 2026-01-13 A (-3d) | 1.09d → 1d | 0% → 100% | 48.64d → none |  | resources SQM-ELÉCTRICO [4.12 h] → SQM-ELÉCTRICO [4.13 h] |
| A5080 | Conexión de Tablero Partidor de Motores TAG: 5817-TPM-1501 a Sala Eléctrica TAG: SEL-4016. | 2026-01-14 → 2026-01-12 A (-2d) | 2026-01-16 → 2026-01-13 A (-3d) | 1.09d → 1d | 0% → 100% | 48.64d → none |  | resources SQM-ELÉCTRICO [4.12 h] → SQM-ELÉCTRICO [4.13 h] |
| A5090 | Conexión de Luminarias Tipo Pedestal. | 2026-01-16 → 2026-01-13 A (-3d) | 2026-01-18 → 2026-01-15 A (-3d) | 2.18d → 2d | 0% → 100% | 48.64d → none | A5080 → A5080 SS |  |
| A5100 | Conexión de Luminarias Tipo Proyector. | 2026-01-16 → 2026-01-13 A (-3d) | 2026-01-18 → 2026-01-15 A (-3d) | 2.18d → 2d | 0% → 100% | 48.64d → none |  | resources SQM-ELÉCTRICO [37.12 h] → SQM-ELÉCTRICO [37.13 h] |
| 5 | **PRUEBAS DE FUNCIONAMIENTO Y PEM TK-6060** | 2026-01-18 → 2026-01-15 (-3d) | 2026-01-25 → 2026-03-16 (+50d) |  |  |  |  |  |
| A5110 | Pruebas de Funcionamiento y Puesta en Marcha de Motor TAG: 5817-MTR-6078. | 2026-01-18 → 2026-01-15 A (-3d) | 2026-01-19 → 2026-03-16 (+56d) | 1.09d → 1d |  | 48.64d → 27d |  |  |
| A5120 | Pruebas de Funcionamiento y Puesta en Marcha de Motor TAG: 5817-MTR-6070. | 2026-01-19 → 2026-01-16 A (-3d) | 2026-01-20 → 2026-03-16 (+55d) | 1.09d → 1d |  | 48.64d → 27d | A5110 → A5110 SS |  |
| A5130 | Pruebas de Funcionamiento y Puesta en Marcha de Motor TAG: 5817-MTR-6073. | 2026-01-20 → 2026-01-17 A (-3d) | 2026-01-21 → 2026-03-16 (+54d) | 1.09d → 1d |  | 48.64d → 27d | A5120 → A5120 SS |  |
| A5140 | Pruebas de Funcionamiento y Puesta en Marcha de Motor TAG: 5817-MTR-6062. | 2026-01-21 → 2026-01-18 A (-3d) | 2026-01-22 → 2026-03-16 (+53d) | 1.09d → 1d |  | 48.64d → 27d | A5130 → A5130 SS |  |
| A5150 | Pruebas de Funcionamiento y Puesta en Marcha de Motor TAG: 5817-MTR-6076. | 2026-01-22 → 2026-01-19 A (-3d) | 2026-01-23 → 2026-03-16 (+52d) | 1.09d → 1d |  | 48.64d → 27d | A5140 → A5140 SS |  |
| A5160 | Pruebas de Funcionamiento y Puesta de Luminarias Tipo Pedestal. | 2026-01-23 → 2026-01-20 A (-3d) | 2026-01-24 → 2026-03-16 (+51d) | 1.09d → 1d |  | 48.64d → 27d | A5150 → A5150 SS |  |
| A5170 | Pruebas de Funcionamiento y Puesta de Luminarias Tipo Proyector. | 2026-01-24 → 2026-01-21 A (-3d) | 2026-01-25 → 2026-03-16 (+50d) | 1.09d → 1d |  | 48.64d → 13d | A5160 → A5160 SS |  |
| 6 | **OBRAS DE INSTRUMENTACIÓN TK-6060** | 2025-11-20 → 2025-11-22 (+2d) | 2026-02-01 → 2026-03-17 (+44d) |  |  |  |  |  |
| 1 | **MONTAJE DE CANALIZACIÓN Y FERRETERÍA INST. TK-6060** | 2025-11-20 → 2025-11-22 (+2d) | 2026-01-11 → 2026-01-09 (-2d) |  |  |  |  |  |
| A5200 | Canalización y Copla de Conduit de Acero Galvanizado 1"Ø, Conduit ANSI C80.1 |  | 2026-01-06 → 2026-01-04 A (-2d) | 22.91d → 21d | 17% → 100% | 61.89d → none | EPC y Copla Porta Conductores 600x100mm e:2,5 mm, tiras 3m. Incluir tapa dos aguas, eclisas y pernos de unión. SS+2.18d → A4900 SS | resources SQM-INSTRUMENTACIÓN [1890 h] → SQM-INSTRUMENTACIÓN [1179.36 h] |
| A5210 | Canalización y Copla de Conduit Flexible Metálico con Cubierta PVC 1" Ø Trabajo Pesado | 2026-01-06 → 2026-01-04 A (-2d) | 2026-01-11 → 2026-01-09 A (-2d) | 5.45d → 5d | 0% → 100% | 61.89d → none |  | resources SQM-INSTRUMENTACIÓN [189 h] → SQM-INSTRUMENTACIÓN [89.59 h] |
| 2 | **TENDIDO Y CONEXIONADO DE CABLES DE INSTRUMENTACIÓN TK-6060** |  | 2025-12-31 → 2025-12-30 (-1d) |  |  |  |  |  |
| A5220 | Cable Multiconductor de Cobre con Aislación de XLPE, 1x3C #12 AWG, Clase 1 kV |  | 2025-12-31 → 2025-12-30 A (-1d) | 15.27d → 14d | 10% → 100% | 71.53d → none | EPC Curva de 90°, 600x100mm e:2,5mm. Incluir tapa dos aguas, eclisas y pernos de unión. SS → A5200 SS | resources SQM-INSTRUMENTACIÓN [511.47 h] → SQM-INSTRUMENTACIÓN [365.33 h] |
| A5230 | Cable de Instrumentación (Señales Análogas), 1x1 par #16 AWG Apantallado |  | 2025-12-22 A | 5.45d → 5d | 10% → 100% | 71.53d → none | A5220 SS → A5220 | resources SQM-INSTRUMENTACIÓN [68.08 h] → SQM-INSTRUMENTACIÓN [74 h] |
| A5240 | Cable Multiconductor de Cobre Blando 1x3C #12 AWG, Clase 0,3 |  | 2025-12-21 A | 4.36d → 4d | 10% → 100% | 71.53d → none |  | resources SQM-INSTRUMENTACIÓN [219.2 h] → SQM-INSTRUMENTACIÓN [299.21 h] |
| A5250 | Cable Multiconductor de Cobre Blando 1x5C #12 AWG, Clase 0,3 | 2025-12-21 A | 2025-12-26 → 2025-12-25 A (-1d) | 4.36d → 4d | 0% → 100% | 71.53d → none |  | resources SQM-INSTRUMENTACIÓN [219.2 h] → SQM-INSTRUMENTACIÓN [300.3 h] |
| A5260 | Conductor Fibra Óptica Multimodo 12 Hilos | 2025-12-26 → 2025-12-25 A (-1d) | 2025-12-29 → 2025-12-28 A (-1d) | 3.27d → 10d | 0% → 100% | 71.53d → none | A5250 → A5250 SS | resources SQM-INSTRUMENTACIÓN [406.3 h] → SQM-INSTRUMENTACIÓN [315.48 h] |
| 3 | **MONTAJE Y CONEXIONADO DE EQUIPOS E INSTRUMENTOS TK-6060** |  | 2026-01-02 → 2026-03-16 (+73d) |  |  |  |  |  |
| A5290 | Instrumento TAG: FIT-6207 a Panel de Señales Remotas TAG: 5817-RIO-1501. |  | 2025-12-24 → 2025-12-23 A (-1d) | 1.09d → 1d | 10% → 100% | 74.7d → none | A5280 FF → A5280 SS | was named Instrumento TAG: FIT-6207 a Panel de señales Remotas TAG: 5817-RIO-1501. |
| A5300 | Instrumento TAG: FIT-6209 a Panel de Señales Remotas TAG: 5817-RIO-1501. |  | 2025-12-24 → 2025-12-23 A (-1d) | 1.09d → 1d | 10% → 100% | 74.7d → none |  | was named Instrumento TAG: FIT-6209 a Panel de señales Remotas TAG: 5817-RIO-1501. |
| A5310 | Instrumento TAG: FIT-6260 a Panel de Señales Remotas TAG: 5817-RIO-1501. |  | 2025-12-24 → 2025-12-23 A (-1d) | 1.09d → 1d | 10% → 100% | 74.7d → none |  | was named Instrumento TAG: FIT-6260 a Panel de señales Remotas TAG: 5817-RIO-1501. |
| A5320 | Instrumento TAG: FIT-6261 a Panel de Señales Remotas TAG: 5817-RIO-1501. |  | 2025-12-24 → 2025-12-23 A (-1d) | 1.09d → 1d | 10% → 100% | 74.7d → none |  | was named Instrumento TAG: FIT-6261 a Panel de señales Remotas TAG: 5817-RIO-1501. |
| A5340 | Instrumento TAG: PIT-6226 a Panel de Señales Remotas TAG: 5817-RIO-1501. |  | 2025-12-24 → 2025-12-23 A (-1d) | 1.09d → 1d | 10% → 100% | 74.7d → none | A5330 FF → A5330 SS | was named Instrumento TAG: PIT-6226 a Panel de señales Remotas TAG: 5817-RIO-1501. |
| A5350 | Instrumento TAG: PIT-6236 a Panel de Señales Remotas TAG: 5817-RIO-1501. |  | 2025-12-24 → 2025-12-23 A (-1d) | 1.09d → 1d | 10% → 100% | 74.7d → none |  | was named Instrumento TAG: PIT-6236 a Panel de señales Remotas TAG: 5817-RIO-1501. |
| A5360 | Instrumento TAG: PIT-6222 a Panel de Señales Remotas TAG: 5817-RIO-1501. |  | 2025-12-24 → 2025-12-23 A (-1d) | 1.09d → 1d | 10% → 100% | 74.7d → none |  | was named Instrumento TAG: PIT-6222 a Panel de señales Remotas TAG: 5817-RIO-1501. |
| A5280 | Conexión de Fibra Óptica en RIO y Sala Eléctrica TAG: SEL-4016. | 2025-12-22 A | 2025-12-24 → 2025-12-23 A (-1d) | 1.09d → 1d | 0% → 100% | 74.7d → none | A5270 SS → A5270 SS, A5260 | resources SQM-INSTRUMENTACIÓN [4.12 h] → SQM-INSTRUMENTACIÓN [4.13 h] |
| A5330 | Instrumento TAG: DIT-6279 a Panel de Señales Remotas TAG: 5817-RIO-1501. | 2025-12-23 → 2025-12-22 A (-1d) | 2025-12-24 → 2025-12-23 A (-1d) | 1.09d → 1d | 0% → 100% | 74.7d → none |  | was named Instrumento TAG: DIT-6279 a Panel de señales Remotas TAG: 5817-RIO-1501. |
| A5370 | Instrumento TAG: FV-6208 a Panel de Señales Remotas TAG: 5817-RIO-1501. | 2025-12-23 → 2025-12-22 A (-1d) | 2025-12-24 → 2025-12-23 A (-1d) | 1.09d → 1d | 0% → 100% | 74.7d → none |  | was named Instrumento TAG: FV-6208 a Panel de señales Remotas TAG: 5817-RIO-1501. |
| A5380 | Instrumento TAG: FV-6217 a Panel de Señales Remotas TAG: 5817-RIO-1501. | 2025-12-24 → 2025-12-23 A (-1d) | 2025-12-25 → 2025-12-24 A (-1d) | 1.09d → 1d | 0% → 100% | 74.7d → none |  | was named Instrumento TAG: FV-6217 a Panel de señales Remotas TAG: 5817-RIO-1501. |
| A5390 | Instrumento TAG: XV-1178 a Panel de Señales Remotas TAG: 5817-RIO-1501. | 2025-12-24 → 2025-12-23 A (-1d) | 2025-12-25 → 2025-12-24 A (-1d) | 1.09d → 1d | 0% → 100% | 74.7d → none |  | was named Instrumento TAG: XV-1178 a Panel de señales Remotas TAG: 5817-RIO-1501. |
| A5400 | Instrumento TAG: XV-1179 a Panel de Señales Remotas TAG: 5817-RIO-1501. | 2025-12-24 → 2025-12-23 A (-1d) | 2025-12-25 → 2025-12-24 A (-1d) | 1.09d → 1d | 0% → 100% | 74.7d → none |  | was named Instrumento TAG: XV-1179 a Panel de señales Remotas TAG: 5817-RIO-1501. |
| A5410 | Instrumento TAG: XV-1180 a Panel de Señales Remotas TAG: 5817-RIO-1501. | 2025-12-24 → 2025-12-23 A (-1d) | 2025-12-25 → 2025-12-24 A (-1d) | 1.09d → 1d | 0% → 100% | 74.7d → none |  | was named Instrumento TAG: XV-1180 a Panel de señales Remotas TAG: 5817-RIO-1501. |
| A5420 | Instrumento TAG: XV-1181 a Panel de Señales Remotas TAG: 5817-RIO-1501. | 2025-12-25 → 2025-12-24 A (-1d) | 2025-12-26 → 2025-12-25 A (-1d) | 1.09d → 1d | 0% → 100% | 74.7d → none | A5410 → A5410 SS | was named Instrumento TAG: XV-1181 a Panel de señales Remotas TAG: 5817-RIO-1501. |
| A5430 | Instrumento TAG: XV-1182 a Panel de Señales Remotas TAG: 5817-RIO-1501. | 2025-12-25 → 2025-12-24 A (-1d) | 2025-12-26 → 2025-12-25 A (-1d) | 1.09d → 1d | 0% → 100% | 74.7d → none |  | was named Instrumento TAG: XV-1182 a Panel de señales Remotas TAG: 5817-RIO-1501. |
| A5440 | Instrumento TAG: XV-6206 a Panel de Señales Remotas TAG: 5817-RIO-1501. | 2025-12-25 → 2025-12-24 A (-1d) | 2025-12-26 → 2025-12-25 A (-1d) | 1.09d → 1d | 0% → 100% | 74.7d → none |  | was named Instrumento TAG: XV-6206 a Panel de señales Remotas TAG: 5817-RIO-1501. |
| A5450 | Instrumento TAG: XV-6209 a Panel de Señales Remotas TAG: 5817-RIO-1501. | 2025-12-25 → 2025-12-24 A (-1d) | 2025-12-26 → 2025-12-25 A (-1d) | 1.09d → 1d | 0% → 100% | 74.7d → none |  | was named Instrumento TAG: XV-6209 a Panel de señales Remotas TAG: 5817-RIO-1501. |
| A5460 | Instrumento TAG: XV-6216 a Panel de Señales Remotas TAG: 5817-RIO-1501. | 2025-12-29 → 2025-12-28 A (-1d) | 2025-12-30 → 2025-12-29 A (-1d) | 1.09d → 1d | 0% → 100% | 71.53d → none | A5450, A5260 → A5450 SS | was named Instrumento TAG: XV-6216 a Panel de señales Remotas TAG: 5817-RIO-1501. |
| A5470 | Instrumento TAG: XV-6219 a Panel de Señales Remotas TAG: 5817-RIO-1501. | 2025-12-29 → 2025-12-28 A (-1d) | 2025-12-30 → 2025-12-29 A (-1d) | 1.09d → 1d | 0% → 100% | 71.53d → none |  | was named Instrumento TAG: XV-6219 a Panel de señales Remotas TAG: 5817-RIO-1501. |
| A5490 | Instrumento TAG: XV-6223 a Panel de Señales Remotas TAG: 5817-RIO-1501. | 2025-12-29 → 2025-12-28 A (-1d) | 2025-12-30 → 2025-12-29 A (-1d) | 1.09d → 1d | 0% → 100% | 71.53d → none |  | was named Instrumento TAG: XV-6223 a Panel de señales Remotas TAG: 5817-RIO-1501. |
| A5500 | Instrumento TAG: XV-6224 a Panel de Señales Remotas TAG: 5817-RIO-1501. | 2025-12-30 → 2025-12-29 A (-1d) | 2025-12-31 → 2025-12-30 A (-1d) | 1.09d → 1d | 0% → 100% | 71.53d → none |  | was named Instrumento TAG: XV-6224 a Panel de señales Remotas TAG: 5817-RIO-1501. |
| A5510 | Instrumento TAG: XV-6225 a Panel de Señales Remotas TAG: 5817-RIO-1501. | 2025-12-30 → 2025-12-29 A (-1d) | 2025-12-31 → 2025-12-30 A (-1d) | 1.09d → 1d | 0% → 100% | 71.53d → none |  | was named Instrumento TAG: XV-6225 a Panel de señales Remotas TAG: 5817-RIO-1501. |
| A5520 | Instrumento TAG: XV-6226 a Panel de Señales Remotas TAG: 5817-RIO-1501. | 2025-12-30 → 2025-12-29 A (-1d) | 2025-12-31 → 2025-12-30 A (-1d) | 1.09d → 1d | 0% → 100% | 71.53d → none |  | was named Instrumento TAG: XV-6226 a Panel de señales Remotas TAG: 5817-RIO-1501. |
| A5530 | Instrumento TAG: XV-6227 a Panel de Señales Remotas TAG: 5817-RIO-1501. | 2025-12-30 → 2025-12-29 A (-1d) | 2025-12-31 → 2025-12-30 A (-1d) | 1.09d → 1d | 0% → 100% | 71.53d → none |  | was named Instrumento TAG: XV-6227 a Panel de señales Remotas TAG: 5817-RIO-1501. |
| A5540 | Instrumento TAG: XV-6228 a Panel de Señales Remotas TAG: 5817-RIO-1501. | 2025-12-31 → 2025-12-30 A (-1d) | 2026-01-01 → 2025-12-31 A (-1d) | 1.09d → 1d | 0% → 100% | 71.53d → none | A5530 → A5530 SS | was named Instrumento TAG: XV-6228 a Panel de señales Remotas TAG: 5817-RIO-1501. |
| A5550 | Instrumento TAG: XV-6233 a Panel de Señales Remotas TAG: 5817-RIO-1501. | 2025-12-31 → 2025-12-30 A (-1d) | 2026-01-01 → 2025-12-31 A (-1d) | 1.09d → 1d | 0% → 100% | 71.53d → none |  | was named Instrumento TAG: XV-6233 a Panel de señales Remotas TAG: 5817-RIO-1501. |
| A5560 | Instrumento TAG: XV-6234 a Panel de Señales Remotas TAG: 5817-RIO-1501. | 2025-12-31 → 2025-12-30 A (-1d) | 2026-01-01 → 2025-12-31 A (-1d) | 1.09d → 1d | 0% → 100% | 71.53d → none |  | was named Instrumento TAG: XV-6234 a Panel de señales Remotas TAG: 5817-RIO-1501. |
| A5570 | Instrumento TAG: XV-6237 a Panel de Señales Remotas TAG: 5817-RIO-1501. | 2025-12-31 → 2025-12-30 A (-1d) | 2026-01-01 → 2025-12-31 A (-1d) | 1.09d → 1d | 0% → 100% | 71.53d → none |  | was named Instrumento TAG: XV-6237 a Panel de señales Remotas TAG: 5817-RIO-1501. |
| A5580 | Instrumento TAG: XV-6238 a Panel de Señales Remotas TAG: 5817-RIO-1501. | 2026-01-01 → 2025-12-31 A (-1d) | 2026-01-02 → 2026-01-01 A (-1d) | 1.09d → 1d | 0% → 100% | 71.53d → none | A5570 → A5570 SS | was named Instrumento TAG: XV-6238 a Panel de señales Remotas TAG: 5817-RIO-1501. |
| A5590 | Instrumento TAG: XV-6243 a Panel de Señales Remotas TAG: 5817-RIO-1501. | 2026-01-01 → 2025-12-31 A (-1d) | 2026-01-02 → 2026-01-01 A (-1d) | 1.09d → 1d | 0% → 100% | 71.53d → none |  | was named Instrumento TAG: XV-6243 a Panel de señales Remotas TAG: 5817-RIO-1501. |
| A5600 | Instrumento TAG: XV-6259 a Panel de Señales Remotas TAG: 5817-RIO-1501. | 2026-01-01 → 2025-12-31 A (-1d) | 2026-01-02 → 2026-01-01 A (-1d) | 1.09d → 1d | 0% → 100% | 71.53d → none |  | was named Instrumento TAG: XV-6259 a Panel de señales Remotas TAG: 5817-RIO-1501. |
| A5610 | Instrumento TAG: XV-6263 a Panel de Señales Remotas TAG: 5817-RIO-1501. | 2026-01-01 → 2025-12-31 A (-1d) | 2026-01-02 → 2026-01-01 A (-1d) | 1.09d → 1d | 0% → 100% | 71.53d → none |  | was named Instrumento TAG: XV-6263 a Panel de señales Remotas TAG: 5817-RIO-1501. |
| A5270 | Pruebas de Funcionamiento y Puesta en Marcha de TAG: 5817-RIO-1501. | 2025-12-22 → 2026-03-16 (+84d) | 2025-12-24 → 2026-03-16 (+82d) | 1.09d → 1d |  | 74.7d → 27d | A5230 → A5020 |  |

| ID | Task | Start | Finish | Duration | Complete | Total float | Predecessors | Other |
| --- | --- | --- | --- | --- | --- | --- | --- | --- |
| A5480 | Instrumento TAG: XV-6223 a Panel de Señales Remotas TAG: 5817-RIO-1501. | 2025-12-29 → 2026-03-16 (+77d) | 2025-12-30 → 2026-03-16 (+76d) | 1.09d → 1d |  | 71.53d → 27d |  | was named Instrumento TAG: XV-6223 a Panel de señales Remotas TAG: 5817-RIO-1501. |
| 4 | **PRUEBAS DE FUNCIONAMIENTO Y PEM INST. TK-6060** | 2025-12-30 → 2025-12-31 (+1d) | 2026-02-01 → 2026-03-17 (+44d) |  |  |  |  |  |
| A5630 | Pruebas de Operación y Puesta en Marcha de Instrumento TAG: FIT-6207 | 2026-01-01 → 2025-12-31 A (-1d) | 2026-01-02 → 2026-03-16 (+73d) | 1.09d → 1d |  | 71.53d → 27d | A5620 FF → A5620 SS |  |
| A5640 | Pruebas de Operación y Puesta en Marcha de Instrumento TAG: FIT-6209 | 2026-01-01 → 2025-12-31 A (-1d) | 2026-01-02 → 2026-03-16 (+73d) | 1.09d → 1d |  | 71.53d → 27d |  |  |
| A5650 | Pruebas de Operación y Puesta en Marcha de Instrumento TAG: FIT-6260 | 2026-01-01 → 2025-12-31 A (-1d) | 2026-01-02 → 2026-03-16 (+73d) | 1.09d → 1d |  | 71.53d → 27d |  |  |
| A5660 | Pruebas de Operación y Puesta en Marcha de Instrumento TAG: FIT-6261 | 2026-01-01 → 2025-12-31 A (-1d) | 2026-01-02 → 2026-03-16 (+73d) | 1.09d → 1d |  | 71.53d → 27d |  |  |
| A5670 | Pruebas de Operación y Puesta en Marcha de Instrumento TAG: DIT-6279 | 2026-01-01 → 2025-12-31 A (-1d) | 2026-01-02 → 2026-03-16 (+73d) | 1.09d → 1d |  | 71.53d → 27d |  |  |
| A5680 | Pruebas de Operación y Puesta en Marcha de Instrumento TAG: PIT-6226 | 2026-01-01 → 2025-12-31 A (-1d) | 2026-01-02 → 2026-03-16 (+73d) | 1.09d → 1d |  | 71.53d → 27d | A5670 FF → A5670 SS |  |
| A5690 | Pruebas de Operación y Puesta en Marcha de Instrumento TAG: PIT-6236 | 2026-01-01 → 2025-12-31 A (-1d) | 2026-01-02 → 2026-03-16 (+73d) | 1.09d → 1d |  | 71.53d → 27d |  |  |
| A5700 | Pruebas de Operación y Puesta en Marcha de Instrumento TAG: PIT-6222 | 2026-01-01 → 2025-12-31 A (-1d) | 2026-01-02 → 2026-03-16 (+73d) | 1.09d → 1d |  | 71.53d → 27d |  |  |
| A5710 | Pruebas de Operación y Puesta en Marcha de Instrumento TAG: FV-6208 | 2026-01-01 → 2025-12-31 A (-1d) | 2026-01-02 → 2026-03-16 (+73d) | 1.09d → 1d |  | 71.53d → 27d |  |  |
| A5720 | Pruebas de Operación y Puesta en Marcha de Instrumento TAG: FV-6217 | 2026-01-01 → 2025-12-31 A (-1d) | 2026-01-02 → 2026-03-16 (+73d) | 1.09d → 1d |  | 71.53d → 27d |  |  |
| A5730 | Pruebas de Operación y Puesta en Marcha de Instrumento TAG: XV-1178 | 2026-01-01 → 2025-12-31 A (-1d) | 2026-01-02 → 2026-03-16 (+73d) | 1.09d → 1d |  | 71.53d → 27d | A5720 FF → A5720 SS |  |
| A5740 | Pruebas de Operación y Puesta en Marcha de Instrumento TAG: XV-1179 | 2026-01-01 → 2025-12-31 A (-1d) | 2026-01-02 → 2026-03-16 (+73d) | 1.09d → 1d |  | 71.53d → 27d |  |  |
| A5750 | Pruebas de Operación y Puesta en Marcha de Instrumento TAG: XV-1180 | 2026-01-01 → 2025-12-31 A (-1d) | 2026-01-02 → 2026-03-16 (+73d) | 1.09d → 1d |  | 71.53d → 27d |  |  |
| A5760 | Pruebas de Operación y Puesta en Marcha de Instrumento TAG: XV-1181 | 2026-01-01 → 2025-12-31 A (-1d) | 2026-01-02 → 2026-03-16 (+73d) | 1.09d → 1d |  | 71.53d → 27d |  |  |
| A5770 | Pruebas de Operación y Puesta en Marcha de Instrumento TAG: XV-1182 | 2026-01-01 → 2025-12-31 A (-1d) | 2026-01-02 → 2026-03-16 (+73d) | 1.09d → 1d |  | 71.53d → 27d |  |  |
| A5780 | Pruebas de Operación y Puesta en Marcha de Instrumento TAG: XV-6206 | 2026-01-01 → 2025-12-31 A (-1d) | 2026-01-02 → 2026-03-16 (+73d) | 1.09d → 1d |  | 71.53d → 27d | A5770 FF → A5770 SS |  |
| A5790 | Pruebas de Operación y Puesta en Marcha de Instrumento TAG: XV-6209 | 2026-01-01 → 2025-12-31 A (-1d) | 2026-01-02 → 2026-03-16 (+73d) | 1.09d → 1d |  | 71.53d → 27d |  |  |
| A5800 | Pruebas de Operación y Puesta en Marcha de Instrumento TAG: XV-6216 | 2026-01-01 → 2025-12-31 A (-1d) | 2026-01-02 → 2026-03-16 (+73d) | 1.09d → 1d |  | 71.53d → 27d |  |  |
| A5810 | Pruebas de Operación y Puesta en Marcha de Instrumento TAG: XV-6219 | 2026-01-01 → 2025-12-31 A (-1d) | 2026-01-02 → 2026-03-16 (+73d) | 1.09d → 1d |  | 71.53d → 27d |  |  |
| A5820 | Pruebas de Operación y Puesta en Marcha de Instrumento TAG: XV-6223 | 2026-01-01 → 2025-12-31 A (-1d) | 2026-01-02 → 2026-03-16 (+73d) | 1.09d → 1d |  | 71.53d → 27d |  |  |
| A5830 | Pruebas de Operación y Puesta en Marcha de Instrumento TAG: XV-6223 | 2026-01-01 → 2025-12-31 A (-1d) | 2026-01-02 → 2026-03-16 (+73d) | 1.09d → 1d |  | 71.53d → 27d | A5820 FF → A5820 SS |  |
| A5840 | Pruebas de Operación y Puesta en Marcha de Instrumento TAG: XV-6224 | 2026-01-01 → 2025-12-31 A (-1d) | 2026-01-02 → 2026-03-16 (+73d) | 1.09d → 1d |  | 71.53d → 27d |  |  |
| A5850 | Pruebas de Operación y Puesta en Marcha de Instrumento TAG: XV-6225 | 2026-01-01 → 2025-12-31 A (-1d) | 2026-01-02 → 2026-03-16 (+73d) | 1.09d → 1d |  | 71.53d → 27d |  |  |
| A5860 | Pruebas de Operación y Puesta en Marcha de Instrumento TAG: XV-6226 | 2026-01-01 → 2025-12-31 A (-1d) | 2026-01-02 → 2026-03-16 (+73d) | 1.09d → 1d |  | 71.53d → 27d |  |  |
| A5880 | Pruebas de Operación y Puesta en Marcha de Instrumento TAG: XV-6228 | 2026-01-01 → 2025-12-31 A (-1d) | 2026-01-02 → 2026-03-16 (+73d) | 1.09d → 1d |  | 71.53d → 27d | A5870 FF → A5870 SS | resources SQM-INSTRUMENTACIÓN [12 h] → SQM-INSTRUMENTACIÓN [24 h] |
| A5890 | Pruebas de Operación y Puesta en Marcha de Instrumento TAG: XV-6233 | 2026-01-01 → 2025-12-31 A (-1d) | 2026-01-02 → 2026-03-16 (+73d) | 1.09d → 1d |  | 71.53d → 27d |  |  |
| A5900 | Pruebas de Operación y Puesta en Marcha de Instrumento TAG: XV-6234 | 2026-01-01 → 2025-12-31 A (-1d) | 2026-01-02 → 2026-03-16 (+73d) | 1.09d → 1d |  | 71.53d → 27d |  |  |
| A5910 | Pruebas de Operación y Puesta en Marcha de Instrumento TAG: XV-6237 | 2026-01-01 → 2025-12-31 A (-1d) | 2026-01-02 → 2026-03-16 (+73d) | 1.09d → 1d |  | 71.53d → 27d |  |  |
| A5920 | Pruebas de Operación y Puesta en Marcha de Instrumento TAG: XV-6238 | 2026-01-01 → 2025-12-31 A (-1d) | 2026-01-02 → 2026-03-16 (+73d) | 1.09d → 1d |  | 71.53d → 27d |  |  |
| A5930 | Pruebas de Operación y Puesta en Marcha de Instrumento TAG: XV-6243 | 2026-01-01 → 2025-12-31 A (-1d) | 2026-01-02 → 2026-03-16 (+73d) | 1.09d → 1d |  | 71.53d → 27d | A5920 FF → A5920 SS |  |
| A5940 | Pruebas de Operación y Puesta en Marcha de Instrumento TAG: XV-6259 | 2026-01-01 → 2025-12-31 A (-1d) | 2026-01-02 → 2026-03-16 (+73d) | 1.09d → 1d |  | 71.53d → 27d |  |  |
| A5950 | Pruebas de Operación y Puesta en Marcha de Instrumento TAG: XV-6263 | 2026-01-31 → 2026-01-27 A (-4d) | 2026-02-01 → 2026-03-16 (+43d) | 1.09d → 1d |  | 42.14d → 13d | A5940 SS, A5210, A4810 → A5940 SS, A5210, A4810 SS |  |
| A5620 | Pruebas de Funcionamiento y Puesta en Marcha de TAG: 5817-RIO-1501. | 2025-12-30 → 2026-03-16 (+76d) | 2026-01-02 → 2026-03-17 (+74d) | 3.27d → 2d |  | 71.53d → 26d | A5610 FF → A5610 |  |
| A5870 | Pruebas de Operación y Puesta en Marcha de Instrumento TAG: XV-6227 | 2026-01-01 → 2026-03-16 (+74d) | 2026-01-02 → 2026-03-16 (+73d) | 1.09d → 1d |  | 71.53d → 27d |  | resources SQM-INSTRUMENTACIÓN [12 h] → SQM-INSTRUMENTACIÓN |
| 2 | **ÁREA 5772 - SECTOR TK-800** |  | 2026-01-24 → 2026-03-16 (+51d) |  |  |  |  |  |
| A5970 | Nivelación Pedestal |  |  | 3.27d → 3d |  |  | A4220 SS → A3920 |  |
| A5980 | Armadura de Refuerzo A630-420H para Estructura Monorriel |  | 2025-12-15 A | 3.27d → 3d | 95% → 100% | 49.98d → none |  |  |
| A5960 | Ampliación Pedestal (TAG: 5772-BBA-1601 y TAG: 5772-BBA-1604) |  | 2025-12-15 A | 3.27d → 3d |  | 49.98d → none | A5980 SS → A5980 | resources SQM-OOCC [8.06 h] → SQM-OOCC [13.44 h] |
| A6000 | Emplantillado Estructura Monorriel |  |  | 3.27d → 3d |  |  | A5960 SS → A5960 |  |
| A5990 | Estructura Monorriel |  | 2025-12-15 A | 3.27d → 3d | 95% → 100% | 49.98d → none |  |  |
| A6010 | Bomba Centrífuga y Motor TAG: 5772-BBA-1601; 5772-MTR-1602 |  | 2025-12-16 A | 4.36d → 4d | 59% → 100% | 57.65d → none | A5960 SS → A5960, A5990 |  |
| A6020 | Bomba Centrífuga y Motor TAG: 5772-BBA-1604; 5772-MTR-1605 |  | 2025-12-16 A | 4.36d → 4d | 65% → 100% | 57.65d → none | A6010 SS → A6010 |  |
| A6030 | Tecle Mantenimiento de Bombas TAG: 5772-TEC-1607 |  | 2025-12-17 A | 3.27d → 3d | 32% → 100% | 57.65d → none | A5990 SS, A6020 SS → A5990, A6020 |  |
| 3 | **OBRAS PIPING TK-800** |  | 2026-01-24 → 2026-03-16 (+51d) |  |  |  |  |  |
| 1 | **FABRICACIÓN Y MONTAJE DE CAÑERÍAS ÁREA TK-800** |  | 2026-01-23 → 2026-03-16 (+52d) |  |  |  |  |  |
| A6040 | Ø 200 mm - Cañería HDPE, PE 100, PN20 (8") - Fabricación |  | 2025-12-25 → 2025-12-24 A (-1d) | 30.55d → 18d | 64% → 100% | 40.33d → none | A1070 SS → A1070, A5970 | resources SQM-PIPING [227.5 h] → SQM-PIPING [199.5 h] |
| A6060 | Ø 6" - Cañería Acero Inoxidable - Fabricación |  |  | 7.64d → 7d |  |  | A6040 SS → A6050 | resources SQM-PIPING [481 h] → SQM-PIPING [546 h] |
| A6110 | Ø 200 mm - Cañería HDPE, PE 100, PN20 (8") - Montaje |  | 2025-12-15 A | 45.82d → 28d |  | 59.96d → none | A6040 SS → A6040 SS+3d | resources SQM-PIPING [439.84 h] → SQM-PIPING [478.8 h] |
| A6130 | Ø 6" - Cañería Acero Inoxidable - Montaje |  |  | 7.64d → 7d |  |  | A6110 SS → A6120 | resources SQM-PIPING [13.74 h] → SQM-PIPING [28.73 h] |
| A6160 | Ø 2" - Cañería Acero Inoxidable - Montaje | 2026-01-18 → 2025-12-13 A (-36d) | 2026-01-22 → 2026-03-16 (+53d) | 3.27d → 3d | 0% → 97% | 40.33d → 27.9d | A6150 SS, A6180 SS, A6179 SS → A6150, A6180 FF, A6179 FF, A6170 | resources SQM-PIPING [8.69 h] → SQM-PIPING [11.17 h] |
| A6050 | Ø 8" - Cañería Acero Inoxidable - Fabricación | 2025-12-15 A | 2025-12-20 → 2025-12-19 A (-1d) | 5.45d → 5d | 0% → 100% | 50.14d → none | A6040 SS → A6040 | resources SQM-PIPING [59.2 h] → SQM-PIPING [29.6 h] |
| A6070 | Ø 4" - Cañería Acero Inoxidable - Fabricación | 2025-12-15 A | 2025-12-30 → 2025-12-28 A (-2d) | 15.27d → 14d | 0% → 100% | 40.33d → none | A6060 SS → A6060 | resources SQM-PIPING [600.4 h] → SQM-PIPING [494 h] |
| A6080 | Ø 3" - Cañería Acero Inoxidable - Fabricación | 2025-12-30 → 2025-12-29 A (-1d) | 2026-01-01 → 2025-12-30 A (-2d) | 2.18d → 2d | 0% → 100% | 40.33d → none | A6070, A6050 → A6070 | resources SQM-PIPING [22.4 h] → SQM-PIPING [28 h] |
| A6120 | Ø 8" - Cañería Acero Inoxidable - Montaje | 2025-12-30 → 2025-12-29 A (-1d) | 2026-01-04 → 2026-01-02 A (-2d) | 5.45d → 5d | 0% → 100% | 54.51d → none | A6070 → A6070, A6100, A6110 |  |
| A6090 | Ø 2" - Cañería Acero Inoxidable - Fabricación | 2026-01-01 → 2025-12-31 A (-1d) | 2026-01-05 → 2026-01-03 A (-2d) | 4.36d → 4d | 0% → 100% | 40.33d → none |  | resources SQM-PIPING [49.27 h] → SQM-PIPING [73.9 h] |
| A6100 | Ø 1" - Cañería Acero Inoxidable - Fabricación | 2026-01-01 → 2025-12-31 A (-1d) | 2026-01-03 → 2026-01-01 A (-2d) | 2.18d → 2d | 0% → 100% | 40.33d → none | A6090 SS → A6090 |  |
| A6140 | Ø 4" - Cañería Acero Inoxidable - Montaje | 2026-01-03 → 2026-01-02 A (-1d) | 2026-01-18 → 2026-01-15 A (-3d) | 15.27d → 14d | 0% → 100% | 40.33d → none |  | resources SQM-PIPING [48.55 h] → SQM-PIPING [77.85 h] |
| A6150 | Ø 3" - Cañería Acero Inoxidable - Montaje | 2026-01-18 → 2026-01-16 A (-2d) | 2026-01-23 → 2026-01-19 A (-4d) | 4.36d → 4d | 0% → 100% | 40.33d → none | A6140, A6120 → A6140 |  |
| 2 | **MONTAJE DE VÁLVULAS Y FITTING SECTOR TK-800** |  | 2026-01-07 → 2026-01-05 (-2d) |  |  |  |  |  |
| A6180 | Válvulas Sector TK-800 (Global) |  | 2026-01-07 → 2026-01-05 A (-2d) | 32.73d → 80d | 29% → 100% | 67.38d → none | A6040 SS → A6040 SS, A6179 SS | resources SQM-PIPING [251.25 h] → SQM-PIPING [266.25 h] |
| A6179 | Fitting Sector TK-800 (Global) | 2025-09-11 A → 2025-12-10 A (+90d) | 2026-01-07 → 2025-12-17 A (-21d) | 32.73d → 80d | 29% → 100% | 67.38d → none | A6040 SS → A6040 SS+3d, A6110 SS+3d | resources SQM-PIPING [1666.71 h] → SQM-PIPING [1443.59 h] |
| 3 | **TIE IN LÍNEAS ASOCIADAS A TK-800** | 2026-01-22 → 2026-01-19 (-3d) | 2026-01-24 → 2026-01-20 (-4d) |  |  |  |  |  |
| A6190 | TIE-IN N° 1431 - 5772-EST-800 FRP a Línea Proyectada 150-TW-5772-I1-1661 | 2026-01-22 → 2026-01-19 A (-3d) | 2026-01-24 → 2026-01-20 A (-4d) | 2.18d → 2d | 0% → 100% | 40.33d → none |  |  |
| A6200 | TIE-IN N° 1432 - 5772-EST-800 FRP a Línea Proyectada 150-TW-5772-I1-1663 | 2026-01-22 → 2026-01-19 A (-3d) | 2026-01-24 → 2026-01-20 A (-4d) | 2.18d → 2d | 0% → 100% | 40.33d → none | A6190 SS → A6190 |  |
| 4 | **FABRICACIÓN Y MONTAJE DE SOPORTES TK-800** | 2025-12-15 → 2025-09-11 (-95d) | 2025-12-19 → 2026-03-16 (+87d) |  |  |  |  |  |
| A6220 | Soporte N°001 - Pedestal Tipo TEE, Acero Estructural para Tuberías Diámetros Pequeños | 2025-12-15 A | 2025-12-19 → 2025-12-18 A (-1d) | 4.36d → 4d | 0% → 100% | 75.23d → none | A6110 FF → A6110 |  |
| A6230 | Soporte N°002B - Pedestal con Repisa de Acero Estructural para Tuberías Diámetros Pequeños | 2025-12-15 A | 2025-12-19 → 2025-12-18 A (-1d) | 4.36d → 4d | 0% → 100% | 75.23d → none | A6220 SS → A6220 |  |
| A6250 | Soporte Primario Tipo "U" (Para Uso General) | 2025-12-15 A | 2025-12-18 → 2025-12-17 A (-1d) | 3.27d → 3d | 0% → 100% | 75.23d → none | A6240 SS → A6240 | resources SQM-PIPING [1 h] → SQM-PIPING [12.5 h] |

| ID | Task | Start | Finish | Duration | Complete | Total float | Predecessors | Other |
| --- | --- | --- | --- | --- | --- | --- | --- | --- |
| A6240 | Soporte N°003 - Tirángulo Tipo Repisa (Existente), Acero Estructural (NOTA 4) | 2025-12-15 → 2026-03-16 (+91d) | 2025-12-15 → 2026-03-16 (+91d) | 0.91d → 1d |  | 75.23d → 27d | A6230 SS → A6230 |  |
| 4 | **OBRAS ELÉCTRICAS TK-800** |  | 2025-12-24 → 2026-03-16 (+82d) |  |  |  |  |  |
| 1 | **MONTAJE DE CANALIZACIÓN Y FERRETERÍA TK-800** |  | 2025-12-24 → 2025-12-23 (-1d) |  |  |  |  |  |
| A6260 | Canalización y Copla de Conduit de Acero Galvanizado 6"Ø, Conduit ANSI C80.1 |  | 2025-12-24 → 2025-12-23 A (-1d) | 10.91d → 10d | 12% → 100% | 57.65d → none | A6030 SS → A6030, A6170 | resources SQM-ELÉCTRICO [521.43 h] → SQM-ELÉCTRICO [64.18 h] |
| A6270 | Canalización y Copla de Conduit Flexible Metálico con Cubierta PVC 6" Ø Trabajo Pesado |  | 2025-12-16 A | 2.18d → 2d | 30% → 100% | 57.65d → none | A6260 SS → A6260 | resources SQM-ELÉCTRICO [33.6 h] → SQM-ELÉCTRICO [6.72 h] |
| A6280 | Canalización y Copla de Conduit de Acero Galvanizado 1 Ø"Ø, Conduit ANSI C80.1 |  | 2025-12-18 A | 4.36d → 4d | 22% → 100% | 57.65d → none | A6270 SS → A6270 | was named Canalización y Copla de Conduit de Acero Galvanizado 1 ½"Ø, Conduit ANSI C80.1; resources SQM-ELÉCTRICO [126 h] → SQM-ELÉCTRICO [7.56 h] |
| A6290 | Canalización y Copla de Conduit Flexible Metálico con Cubierta PVC 1 Ø" Ø Trabajo Pesado |  | 2025-12-16 A | 2.18d → 2d | 40% → 100% | 57.65d → none | A6280 SS → A6280 | was named Canalización y Copla de Conduit Flexible Metálico con Cubierta PVC 1 ½" Ø Trabajo Pesado; resources SQM-ELÉCTRICO [6.3 h] → SQM-ELÉCTRICO [2.52 h] |
| 2 | **TENDIDO Y CONEXIONADO DE CABLES DE ALIMENTACIÓN TK-800** |  | 2025-12-16 → 2026-03-16 (+90d) |  |  |  |  |  |
| A6300 | Cable Monoconductor de Cobre con Aislación XLPE, 1C #350 MCM, Clase 1 kV |  | 2025-12-16 → 2026-03-16 (+90d) | 15.27d → 14d | 89% → 98% | 68.88d → 27.78d | A6290 SS, A6280 SS → A6290, A6280 | resources SQM-ELÉCTRICO [1930 h] → SQM-ELÉCTRICO [710.24 h] |
| A6310 | Cable Multiconductor de Cobre con Aislación de XLPE, 1x5C #12 AWG, Clase 1 kV |  | 2025-12-16 A | 5.45d → 5d | 99% → 100% | 68.88d → none |  | resources SQM-ELÉCTRICO [182.67 h] → SQM-ELÉCTRICO [63.57 h] |
| A6320 | Variador de Frecuencia TAG: 5772-VSD-1603 en SEL-403. |  |  | 2.18d → 2d |  |  | A6310 SS → A6310 |  |
| A6330 | Variador de Frecuencia TAG: 5772-VSD-1605 en SEL-403. |  |  | 2.18d → 2d |  |  |  |  |
| A6340 | Modificación de Cubiculo Existente en TAG: 5770-CCM-488, para Suministro de Energía de TAG: 5772-VSD-1603. |  |  | 2.18d → 2d |  |  |  |  |
| A6350 | Modificación de Cubiculo Existente en TAG: 5770-CCM-488, para Suministro de Energía de TAG: 5772-VSD-1605. |  |  | 2.18d → 2d |  |  |  |  |
| A6360 | Conexión de entre CCM TAG: 5770-CCM-488 y VDF TAG: 5772-VSD-1603. |  | 2025-12-16 A | 1.09d → 1d |  | 87.77d → none |  | resources SQM-ELÉCTRICO [4.12 h] → SQM-ELÉCTRICO [4.13 h] |
| A6370 | Conexión de entre CCM TAG: 5770-CCM-488 y VDF TAG: 5772-VSD-1605. |  | 2025-12-16 A | 1.09d → 1d |  | 87.77d → none |  | resources SQM-ELÉCTRICO [4.12 h] → SQM-ELÉCTRICO [4.13 h] |
| A6380 | Conexión de entre VDF TAG: 5772-VSD-1603 y Motor TAG: 5772-MTR-1602. |  | 2025-12-16 A | 1.09d → 1d |  | 87.77d → none |  | resources SQM-ELÉCTRICO [4.12 h] → SQM-ELÉCTRICO [4.13 h] |
| A6390 | Conexión de entre VDF TAG: 5772-VSD-1605 y Motor TAG: 5772-MTR-1604. |  | 2025-12-16 A | 1.09d → 1d |  | 87.77d → none |  | resources SQM-ELÉCTRICO [4.12 h] → SQM-ELÉCTRICO [4.13 h] |
| A6400 | Pruebas de Funcionamiento y Puesta en Marcha de Motor TAG: 5772-MTR-1602. |  |  | 1.09d → 1d |  |  | A6390 SS → A6390 |  |
| A6410 | Pruebas de Funcionamiento y Puesta en Marcha de Motor TAG: 5772-MTR-1604. |  |  | 1.09d → 1d |  |  | A6400 FF → A6400, A6250 |  |
| 5 | **OBRAS DE INSTRUMENTACIÓN TK-800** |  | 2026-01-08 → 2026-03-16 (+67d) |  |  |  |  |  |
| 1 | **MONTAJE DE CANALIZACIÓN Y FERRETERÍA INST. TK-800** |  | 2025-12-26 → 2025-12-25 (-1d) |  |  |  |  |  |
| A6420 | Canalización y Copla de Conduit de Acero Galvanizado 1"Ø, Conduit ANSI C80.1 | 2025-12-16 A | 2025-12-23 A | 7.64d → 7d | 0% → 100% | 57.65d → none | A6290 → A6290, A6300 | resources SQM-INSTRUMENTACIÓN [151.2 h] → SQM-INSTRUMENTACIÓN [16.38 h] |
| A6430 | Canalización y Copla de Conduit Flexible Metálico con Cubierta PVC 1" Ø Trabajo Pesado | 2025-12-23 A | 2025-12-26 → 2025-12-25 A (-1d) | 2.18d → 2d | 0% → 100% | 57.65d → none |  | resources SQM-INSTRUMENTACIÓN [12.6 h] → SQM-INSTRUMENTACIÓN [5.04 h] |
| 2 | **TENDIDO Y CONEXIONADO DE CABLES INSTRUMENTACIÓN TK-800** | 2025-12-26 → 2025-12-25 (-1d) | 2026-01-08 → 2026-01-07 (-1d) |  |  |  |  |  |
| A6440 | Cable Multiconductor de Cobre con Aislación de XLPE, 1x3C #12 AWG, Clase 1 kV | 2025-12-26 → 2025-12-25 A (-1d) | 2025-12-29 → 2025-12-28 A (-1d) |  | 0% → 100% | 57.65d → none |  | resources SQM-INSTRUMENTACIÓN → SQM-INSTRUMENTACIÓN [54.8 h] |
| A6450 | Cable de Instrumentación (Señales Análogas), 1x1 par #16 AWG Apantallado | 2025-12-29 → 2025-12-28 A (-1d) | 2026-01-08 → 2026-01-07 A (-1d) |  | 0% → 100% | 57.65d → none |  | resources SQM-INSTRUMENTACIÓN → SQM-INSTRUMENTACIÓN [88.8 h] |
| A6460 | Instrumento TAG: PIT-1151 |  | 2025-12-15 A | 1.09d → 1d | 90% → 100% | 87.81d → none | A6260 SS → A6450 |  |
| A6470 | Instrumento TAG: FIT-1152 |  | 2025-12-15 A | 1.09d → 1d | 52% → 100% | 87.81d → none | A6460 SS → A6460 |  |
| 4 | **PRUEBAS DE FUNCIONAMIENTO Y PEM INST. TK-800** |  | 2025-12-17 → 2026-03-16 (+89d) |  |  |  |  |  |
| A6480 | Pruebas de Operación y Puesta en Marcha de Instrumento TAG: PIT-1151 | 2025-12-15 A | 2025-12-16 → 2026-03-16 (+90d) | 1.09d → 1d |  | 87.81d → 27d |  |  |
| A6490 | Pruebas de Operación y Puesta en Marcha de Instrumento TAG: FIT-1152 | 2025-12-16 A | 2025-12-17 → 2026-03-16 (+89d) | 1.09d → 1d |  | 87.77d → 13d | A6480, A6410 → A6480 SS, A6410 |  |
| 3 | **ÁREA 5728 - SECTOR TK-3000** | 2025-10-27 → 2025-11-15 (+19d) | 2026-02-03 → 2026-03-21 (+46d) |  |  |  |  |  |
| 1 | **OBRAS CIVILES TK-3000** | 2025-10-27 → 2025-12-17 (+51d) |  |  |  |  |  |  |
| 2 | **FABRICACIÓN Y MONTAJE DE ESTRUCTURA MONORRIEL TK-3000** | 2025-10-27 → 2025-12-17 (+51d) |  |  |  |  |  |  |
| A6550 | Armadura de refuerzo A630-420H Fundaciones TK-3000 | 2025-12-17 A | 2025-12-20 A | 3.27d → 3d | 0% → 100% | 49.98d → none | Extracción de Ducha → A5960 |  |
| A6540 | Hormigón G30 Pedestal PD-1 (TAG: 5728-BBA-6066 y TAG: 5728-BBA-6063) | 2025-12-20 A | 2025-12-22 A | 2.18d → 2d | 0% → 100% | 49.98d → none |  |  |
| 2 | **OBRAS MECÁNICAS TK-3000** |  | 2025-12-26 → 2025-12-25 (-1d) |  |  |  |  |  |
| 1 | **MONTAJE Y PRUEBAS DE EQUIPOS MECÁNICOS TK-3000** |  | 2025-12-26 → 2025-12-25 (-1d) |  |  |  |  |  |
| A6580 | Bomba Centrífuga y Motor TAG: 5728-BBA-6063; 5728-MTR-6064 |  | 2025-12-26 → 2025-12-25 A (-1d) | 4.36d → 4d | 12% → 100% | 56.7d → none | A8370 SS → A8370 |  |
| A6590 | Bomba Centrífuga y Motor TAG: 5728-BBA-6066; 5728-MTR-6067 |  | 2025-12-26 → 2025-12-25 A (-1d) | 4.36d → 4d | 12% → 100% | 56.7d → none |  |  |
| 4 | **OBRAS PIPING TK-3000** |  | 2026-02-03 → 2026-03-21 (+46d) |  |  |  |  |  |
| 1 | **FABRICACIÓN Y MONTAJE DE CAÑERÍAS ÁREA TK-3000** |  | 2026-02-03 → 2026-01-29 (-5d) |  |  |  |  |  |
| A6610 | Ø 6" - Cañería Acero Inoxidable - Fabricación |  | 2025-12-22 A | 32.73d → 30d | 76% → 100% | 66.22d → none | A4380 SS → A6550 SS+4d, A4380 | resources SQM-PIPING [7189 h] → SQM-PIPING [5616 h] |
| A6660 | Ø 6" - Cañería Acero Inoxidable - Montaje |  | 2025-12-24 → 2025-12-23 A (-1d) | 32.73d → 30d | 72% → 100% | 66.23d → none | A6610 SS+2.18d, A6700 FF, A6710 FF, A4490 SS → A6610 SS+4d, A6700 SS, A6710 SS, A4490 SS | resources SQM-PIPING [3873.6 h] → SQM-PIPING [3765.89 h] |
| A6640 | Ø 2" - Cañería Acero Inoxidable - Fabricación | 2025-12-15 A | 2025-12-30 → 2025-12-28 A (-2d) | 15.27d → 14d | 0% → 100% | 75.23d → none | A6630 FF → A6630 |  |
| A6620 | Ø 4" - Cañería Acero Inoxidable - Fabricación | 2025-12-22 A | 2025-12-27 → 2025-12-26 A (-1d) | 4.36d → 4d | 0% → 100% | 66.22d → none |  | resources SQM-PIPING [60.8 h] → SQM-PIPING [45.6 h] |
| A6630 | Ø 3" - Cañería Acero Inoxidable - Fabricación | 2025-12-24 → 2025-12-23 A (-1d) | 2025-12-27 → 2025-12-26 A (-1d) | 3.27d → 3d | 0% → 100% | 78.22d → none |  |  |
| A6650 | Ø 1" - Cañería Acero Inoxidable - Fabricación | 2025-12-27 → 2025-12-26 A (-1d) | 2025-12-30 → 2025-12-28 A (-2d) | 3.27d → 3d | 0% → 100% | 75.23d → none |  |  |
| A6670 | Ø 4" - Cañería Acero Inoxidable - Montaje | 2026-01-22 → 2026-01-19 A (-3d) | 2026-01-24 → 2026-01-20 A (-4d) | 2.18d → 2d | 0% → 100% | 40.33d → none | A6620, Perforación de Estanque Existente TK-800 para TIE-IN N°1431 y 1432. SS → A6620 |  |
| A6680 | Ø 3" - Cañería Acero Inoxidable - Montaje | 2026-01-23 → 2026-01-20 A (-3d) | 2026-01-26 → 2026-01-22 A (-4d) | 3.27d → 3d | 0% → 100% | 40.33d → none | A6670 SS+1.09d → A6670 FF |  |
| A6690 | Ø 2" - Cañería Acero Inoxidable - Montaje | 2026-01-23 → 2026-01-20 A (-3d) | 2026-02-03 → 2026-01-29 A (-5d) | 10.91d → 13d | 0% → 100% | 40.33d → none | A6680 SS, A6640 SS → A6680, A6640 FF, A6640 | resources SQM-PIPING [273.65 h] → SQM-PIPING [362.92 h] |
| 2 | **MONTAJE DE VÁLVULAS Y FITTING SECTOR TK-3000** |  | 2025-12-17 → 2026-03-21 (+94d) |  |  |  |  |  |
| A6700 | Fitting Sector TK-3000 (Global) | 2025-12-15 A | 2025-12-17 → 2025-12-16 A (-1d) | 2.18d → 72d | 0% → 100% | 73.05d → none |  | resources SQM-PIPING [4812.47 h] → SQM-PIPING [5983.57 h] |
| A6710 | Válvulas Sector TK-3000 (Global) | 2025-12-15 A | 2025-12-17 → 2026-03-21 (+94d) | 2.18d → 72d | 0% → 92% | 73.05d → 22.5d |  | resources SQM-PIPING [591 h] → SQM-PIPING [607.5 h] |
| 3 | **TIE IN LÍNEAS ASOCIADAS A TK-3000** | 2026-01-28 → 2026-01-25 (-3d) | 2026-02-03 → 2026-01-29 (-5d) |  |  |  |  |  |
| A6720 | Perforación de Estanque Existente TK-001 para TIE-IN N°6451, 6452 y 6453. | 2026-01-28 → 2026-01-25 A (-3d) | 2026-02-03 → 2026-01-29 A (-5d) | 5.45d → 5d | 0% → 100% | 40.33d → none | A6690 FF, Diagonales Nuevas de Refuerzo Estructura Monorriel → A6690 FF | resources SQM-PIPING [152 h] → SQM-PIPING [50.67 h] |
| A6730 | TIE-IN N° 6451 - 5728-EST-001 FRP a Línea Proyectada 150-LC-5728-I1-6633-A | 2026-01-28 → 2026-01-25 A (-3d) | 2026-01-29 → 2026-01-25 A (-4d) | 1.09d → 1d | 0% → 100% | 44.69d → none | A6720 SS → A6720 FF |  |
| A6740 | TIE-IN N° 6452 - 5728-EST-001 FRP a Línea Proyectada 150-LC-5728-I1-6605-A | 2026-01-28 → 2026-01-25 A (-3d) | 2026-01-29 → 2026-01-25 A (-4d) | 1.09d → 1d | 0% → 100% | 44.69d → none | A6730 SS → A6730 FF |  |
| A6750 | TIE-IN N° 6453 - 5728-EST-001 FRP a Línea Proyectada 150-LC-5817-I1-6604-A | 2026-01-28 → 2026-01-25 A (-3d) | 2026-01-29 → 2026-01-25 A (-4d) | 1.09d → 1d | 0% → 100% | 44.69d → none | A6740 SS, A6650 FF → A6740 FF, A6650 |  |
| 4 | **AISLACIÓN LÍNEAS TK-3000** |  | 2026-01-26 → 2026-01-22 (-4d) |  |  |  |  |  |
| A6760 | Ø 6" - Aislación de Lana Mineral de 1,5" de espesor | 2025-12-15 A | 2026-01-16 → 2026-01-13 A (-3d) | 32.73d → 30d | 0% → 100% | 51.23d → none | A6660 FF+8.73d → A6660 FF+8d, A6660 | resources SQM-PIPING [6114.66 h] → SQM-PIPING [5940.48 h] |
| A6770 | Ø 4" - Aislación de Lana Mineral de 1,5" de espesor | 2026-01-22 → 2026-01-19 A (-3d) | 2026-01-25 → 2026-01-21 A (-4d) | 3.27d → 3d | 0% → 100% | 46.87d → none | A6670 SS → A6670, A6760 |  |
| A6780 | Ø 3" - Aislación de Lana Mineral de 1,5" de espesor | 2026-01-23 → 2026-01-20 A (-3d) | 2026-01-26 → 2026-01-22 A (-4d) | 3.27d → 3d | 0% → 100% | 45.78d → none | A6680 SS, A6770 SS → A6680, A6770 |  |
| 6 | **FABRICACIÓN Y MONTAJE DE SOPORTES TK-3000** | 2026-01-18 → 2026-01-16 (-2d) | 2026-02-03 → 2026-03-19 (+44d) |  |  |  |  |  |
| A6820 | Soporte N°001 - Pedestal Tipo TEE, Acero Estructural para Tuberías Diámetros Pequeños | 2026-01-18 → 2026-01-16 A (-2d) | 2026-01-25 → 2026-01-21 A (-4d) | 6.55d → 6d | 0% → 100% | 40.33d → none | A6660 SS, A4630 → A6660 SS, A4630 SS |  |
| A6830 | Soporte N°002 - Pedestal con Repisa de Acero Estructural para Tuberías Diámetros Pequeños | 2026-01-25 → 2026-01-22 A (-3d) | 2026-01-29 → 2026-01-25 A (-4d) | 4.36d → 4d | 0% → 100% | 40.33d → none | A6820 → A6820 SS |  |
| A6870 | Soporte Primario Tipo "U" (Para Uso General) | 2026-01-27 → 2026-01-24 A (-3d) | 2026-02-03 → 2026-01-29 A (-5d) | 6.55d → 6d | 0% → 100% | 40.33d → none | A6860 FF → A6860 SS | resources SQM-PIPING [3.66 h] → SQM-PIPING [69.3 h] |
| A6840 | Soporte N°003 - Pedestal, Acero Estructural para Tuberías Diámetros Pequeños | 2026-01-29 → 2026-01-26 A (-3d) | 2026-02-03 → 2026-01-29 A (-5d) | 4.36d → 4d | 0% → 100% | 40.33d → none | A6830 → A6830 SS |  |
| A6850 | Soporte N°004 - Pedestal y Voladizo Tipo Simple, Acero Estructural para Tuberías Diámetros Pequeños | 2026-01-29 → 2026-01-26 A (-3d) | 2026-02-03 → 2026-01-29 A (-5d) | 4.36d → 4d | 0% → 100% | 40.33d → none | A6840 FF → A6840 SS |  |

| ID | Task | Start | Finish | Duration | Complete | Total float | Predecessors | Other |
| --- | --- | --- | --- | --- | --- | --- | --- | --- |
| A6860 | Soporte N°005 - Arco Tipo Colgante, Acero Estructural para Tuberías Diámetros Pequeños | 2026-01-29 → 2026-03-16 (+46d) | 2026-02-03 → 2026-03-19 (+44d) | 4.36d → 4d |  | 40.33d → 24d | A6850 FF → A6850 SS | resources SQM-PIPING [4.25 h] → SQM-PIPING |
| 5 | **OBRAS ELÉCTRICAS TK-3000** |  | 2026-01-14 → 2026-03-16 (+61d) |  |  |  |  |  |
| 1 | **MONTAJE DE CANALIZACIÓN Y FERRETERÍA TK-3000** |  | 2025-12-27 → 2025-12-26 (-1d) |  |  |  |  |  |
| A6880 | Canalización y Copla de Conduit de Acero Galvanizado 6"Ø, Conduit ANSI C80.1 |  | 2025-12-26 → 2025-12-25 A (-1d) | 4.36d → 4d | 19% → 100% | 56.7d → none | A6590 SS, A6260 SS → A6590, A6260 SS | resources SQM-ELÉCTRICO [802.2 h] → SQM-ELÉCTRICO [40.11 h] |
| A6890 | Canalización y Copla de Conduit Flexible Metálico con Cubierta PVC 6" Ø Trabajo Pesado. |  | 2025-12-23 A | 2.18d → 2d | 48% → 100% | 56.7d → none |  | resources SQM-ELÉCTRICO [33.6 h] → SQM-ELÉCTRICO [6.72 h] |
| A6900 | Canalización y Copla de Conduit de Acero Galvanizado 1 Ø"Ø, Conduit ANSI C80.1 |  | 2025-12-27 → 2025-12-26 A (-1d) | 5.45d → 5d | 20% → 100% | 56.7d → none | A6890 SS → A6890 | was named Canalización y Copla de Conduit de Acero Galvanizado 1 ½"Ø, Conduit ANSI C80.1; resources SQM-ELÉCTRICO [214.2 h] → SQM-ELÉCTRICO [10.08 h] |
| A6910 | Canalización y Copla de Conduit Flexible Metálico con Cubierta PVC 1 Ø" Ø Trabajo Pesado. |  | 2025-12-23 → 2025-12-22 A (-1d) | 2.18d → 2d | 80% → 100% | 56.7d → none |  | was named Canalización y Copla de Conduit Flexible Metálico con Cubierta PVC 1 ½" Ø Trabajo Pesado.; resources SQM-ELÉCTRICO [6.3 h] → SQM-ELÉCTRICO [2.52 h] |
| 2 | **TENDIDO Y CONEXIONADO DE CABLES DE ALIMENTACIÓN TK-3000** |  | 2025-12-25 → 2025-12-24 (-1d) |  |  |  |  |  |
| A6930 | Cable Multiconductor de Cobre con Aislación de XLPE, 1x5C #12 AWG, Clase 1 kV |  | 2025-12-25 → 2025-12-24 A (-1d) | 5.45d → 5d | 99% → 100% | 70.99d → none |  | resources SQM-ELÉCTRICO [184.5 h] → SQM-ELÉCTRICO [226.32 h] |
| A6920 | Cable Monoconductor de Cobre con Aislación XLPE, 1C #350 MCM, Clase 1 kV |  | 2025-12-25 → 2025-12-24 A (-1d) | 16.36d → 15d | 81% → 100% | 70.99d → none |  | resources SQM-ELÉCTRICO [1544 h] → SQM-ELÉCTRICO [1791.04 h] |
| 3 | **MONTAJE Y CONEXIONADO DE EQUIPOS ELÉCTRICOS TK-3000** |  | 2026-01-10 → 2026-01-09 (-1d) |  |  |  |  |  |
| A6940 | Variador de Frecuencia TAG: 5728-VSD-6065 en SEL-401. |  | 2025-12-26 → 2025-12-25 A (-1d) | 2.18d → 2d | 90% → 100% | 70.99d → none | A6920 SS, A6930 SS → A6920, A6930 |  |
| A6950 | Variador de Frecuencia TAG: 5728-VSD-6068 en SEL-401. |  | 2025-12-26 → 2025-12-25 A (-1d) | 2.18d → 2d | 90% → 100% | 70.99d → none | A6940 SS → A6940 |  |
| A6960 | Modificación de Cubiculo Existente en TAG: 5770-CCM-431, para Suministro de Energía de TAG: 5728-VSD-6065. |  |  | 2.18d → 2d |  |  | A6950 SS → A6950 |  |
| A6970 | Modificación de Cubiculo Existente en TAG: 5770-CCM-431, para Suministro de Energía de TAG: 5728-VSD-6068. |  |  | 2.18d → 2d |  |  |  |  |
| A6980 | Conexión de entre CCM TAG: 5770-CCM-431 y VDF TAG: 5728-VSD-6065. |  | 2025-12-25 → 2025-12-24 A (-1d) | 1.09d → 1d | 50% → 100% | 70.99d → none |  | resources SQM-ELÉCTRICO [4.12 h] → SQM-ELÉCTRICO [4.13 h] |
| A6990 | Conexión de entre CCM TAG: 5770-CCM-431 y VDF TAG: 5728-VSD-6068. |  | 2025-12-25 → 2025-12-24 A (-1d) | 1.09d → 1d | 50% → 100% | 70.99d → none | A6980 SS → A6980 | resources SQM-ELÉCTRICO [4.12 h] → SQM-ELÉCTRICO [4.13 h] |
| A7000 | Conexión de entre VDF TAG: 5728-VSD-6065 y Motor TAG: 5728-MTR-6064. | 2026-01-08 → 2026-01-07 A (-1d) | 2026-01-09 → 2026-01-08 A (-1d) | 1.09d → 1d | 0% → 100% | 57.65d → none | A6990, A6450 → A6990 | resources SQM-ELÉCTRICO [4.12 h] → SQM-ELÉCTRICO [4.13 h] |
| A7010 | Conexión de entre VDF TAG: 5728-VSD-6068 y Motor TAG: 5728-MTR-6067. | 2026-01-09 → 2026-01-08 A (-1d) | 2026-01-10 → 2026-01-09 A (-1d) | 1.09d → 1d | 0% → 100% | 57.65d → none |  | resources SQM-ELÉCTRICO [4.12 h] → SQM-ELÉCTRICO [4.13 h] |
| 4 | **PRUEBAS DE FUNCIONAMIENTO Y PEM TK-3000** | 2026-01-10 → 2026-01-09 (-1d) | 2026-01-14 → 2026-03-16 (+61d) |  |  |  |  |  |
| A7020 | Pruebas de Funcionamiento y Puesta en Marcha de Motor TAG: 5728-MTR-6065. | 2026-01-10 → 2026-01-09 A (-1d) | 2026-01-12 → 2026-03-16 (+63d) | 2.18d → 2d | 0% → 78% | 57.65d → 27.55d | A7010 → A7010, A6690 |  |
| A7030 | Pruebas de Funcionamiento y Puesta en Marcha de Motor TAG: 5728-MTR-6067. | 2026-01-12 → 2026-01-11 A (-1d) | 2026-01-14 → 2026-03-16 (+61d) | 2.18d → 2d | 0% → 78% | 57.65d → 27.55d | A7020 → A7020 SS |  |
| 6 | **OBRAS DE INSTRUMENTACIÓN TK-3000** |  | 2026-02-03 → 2026-03-16 (+41d) |  |  |  |  |  |
| 1 | **MONTAJE DE CANALIZACIÓN Y FERRETERÍA INST. TK-3000** |  | 2026-01-09 → 2026-01-07 (-2d) |  |  |  |  |  |
| A7040 | EPC y Copla Porta Conductores 600x100mm e:2,5 mm, tiras 3m. Incluir tapa dos aguas, eclisas y pernos de Unión. |  | 2025-12-25 → 2025-12-24 A (-1d) | 3.27d → 3d | 10% → 100% | 56.7d → none |  | was named EPC y Copla Porta Conductores 600x100mm e:2,5 mm, tiras 3m. Incluir tapa dos aguas, eclisas y pernos de unión.; resources SQM-INSTRUMENTACIÓN [168 h] → SQM-INSTRUMENTACIÓN [140 h] |
| A7050 | EPC Curva Tipo "T", 600x100x2,5mm. Incluir tapa dos aguas, eclisas y pernos de Unión. |  | 2025-12-25 → 2025-12-24 A (-1d) | 3.27d → 3d | 10% → 100% | 56.7d → none |  | was named EPC Curva Tipo "T", 600x100x2,5mm. Incluir tapa dos aguas, eclisas y pernos de unión. |
| A7060 | Canalización y Copla de Conduit de Acero Galvanizado 1"Ø, Conduit ANSI C80.1 | 2025-12-22 A | 2026-01-04 → 2026-01-03 A (-1d) | 13.09d → 12d | 0% → 100% | 56.7d → none |  | resources SQM-INSTRUMENTACIÓN [907.2 h] → SQM-INSTRUMENTACIÓN [368.55 h] |
| A7070 | Canalización y Copla de Conduit Flexible Metálico con Cubierta PVC 1" Ø Trabajo Pesado | 2026-01-04 → 2026-01-03 A (-1d) | 2026-01-09 → 2026-01-07 A (-2d) | 4.36d → 4d | 0% → 100% | 65.25d → none |  | resources SQM-INSTRUMENTACIÓN [100.8 h] → SQM-INSTRUMENTACIÓN [44.35 h] |
| 2 | **TENDIDO Y CONEXIONADO DE CABLES INSTRUMENTACIÓN TK-3000** |  | 2026-01-08 → 2026-03-16 (+67d) |  |  |  |  |  |
| A7100 | Cable Multiconductor de Cobre Blando 1x3C #12 AWG, Clase 0,3 |  | 2026-01-07 → 2026-03-16 (+68d) | 15.27d → 14d | 10% → 97% | 56.7d → 27.52d | A7090 SS → A7090 | resources SQM-INSTRUMENTACIÓN [774.51 h] → SQM-INSTRUMENTACIÓN [617.41 h] |
| A7090 | Cable de Instrumentación (Señales Análogas), 1x1 par #16 AWG Apantallado |  | 2025-12-28 → 2025-12-27 A (-1d) | 8.73d → 8d | 58% → 100% | 56.7d → none | A7080 FF → A7080 SS | resources SQM-INSTRUMENTACIÓN [192.4 h] → SQM-INSTRUMENTACIÓN [153.92 h] |
| A7080 | Cable Multiconductor de Cobre con Aislación de XLPE, 1x3C #12 AWG, Clase 1 kV | 2025-12-22 A | 2025-12-28 → 2025-12-27 A (-1d) | 5.45d → 5d | 0% → 100% | 56.7d → none |  | resources SQM-INSTRUMENTACIÓN [120.56 h] → SQM-INSTRUMENTACIÓN [94.99 h] |
| A7110 | Cable Multiconductor de Cobre Blando 1x5C #12 AWG, Clase 0,3 | 2025-12-24 → 2025-12-23 A (-1d) | 2026-01-08 → 2026-03-16 (+67d) | 15.27d → 14d | 0% → 97% | 56.7d → 27.64d |  | resources SQM-INSTRUMENTACIÓN [774.51 h] → SQM-INSTRUMENTACIÓN [617.41 h] |
| 3 | **MONTAJE Y CONEXIONADO DE EQUIPOS E INSTRUMENTOSTK-3000** |  | 2026-01-15 → 2026-03-16 (+60d) |  |  |  |  |  |
| A7120 | Instrumento TAG: PIT-6204 |  | 2026-01-08 → 2026-01-06 A (-2d) | 2.18d → 2d | 10% → 100% | 56.7d → none | A7110 FF → A6660, A7110 |  |
| A7130 | Instrumento TAG: PIT-6214 |  | 2026-01-08 → 2026-01-06 A (-2d) | 2.18d → 2d | 10% → 100% | 56.7d → none |  |  |
| A7140 | Instrumento TAG: UIT-6218 | 2026-01-06 → 2026-01-04 A (-2d) | 2026-01-09 → 2026-01-06 A (-3d) | 2.18d → 2d | 0% → 100% | 56.7d → none |  |  |
| A7150 | Instrumento TAG: UIT-6220 | 2026-01-06 → 2026-01-04 A (-2d) | 2026-01-09 → 2026-01-06 A (-3d) | 2.18d → 2d | 0% → 100% | 56.7d → none |  |  |
| A7160 | Instrumento TAG: XV-1153 | 2026-01-06 → 2026-01-04 A (-2d) | 2026-01-09 → 2026-03-16 (+66d) | 2.18d → 2d | 0% → 59% | 56.7d → 27.18d |  |  |
| A7170 | Instrumento TAG: XV-1154 | 2026-01-09 → 2026-01-06 A (-3d) | 2026-01-11 → 2026-03-16 (+64d) | 2.18d → 2d | 0% → 59% | 56.7d → 27.18d | A7160 → A7160 SS |  |
| A7180 | Instrumento TAG: XV-1155 | 2026-01-09 → 2026-01-06 A (-3d) | 2026-01-11 → 2026-03-16 (+64d) | 2.18d → 2d | 0% → 59% | 56.7d → 27.18d |  |  |
| A7190 | Instrumento TAG: XV-1156 | 2026-01-09 → 2026-01-06 A (-3d) | 2026-01-11 → 2026-03-16 (+64d) | 2.18d → 2d | 0% → 59% | 56.7d → 27.18d |  |  |
| A7200 | Instrumento TAG: XV-1157 | 2026-01-09 → 2026-01-06 A (-3d) | 2026-01-11 → 2026-03-16 (+64d) | 2.18d → 2d | 0% → 98% | 56.7d → 27.95d |  |  |
| A7210 | Instrumento TAG: XV-6201 | 2026-01-09 → 2026-01-06 A (-3d) | 2026-01-11 → 2026-03-16 (+64d) | 2.18d → 2d | 0% → 59% | 56.7d → 27.18d |  |  |
| A7220 | Instrumento TAG: XV-6204 | 2026-01-11 → 2026-01-08 A (-3d) | 2026-01-13 → 2026-01-10 A (-3d) | 2.18d → 2d | 0% → 100% | 56.7d → none |  |  |
| A7230 | Instrumento TAG: XV-6205 | 2026-01-11 → 2026-01-08 A (-3d) | 2026-01-13 → 2026-01-10 A (-3d) | 2.18d → 2d | 0% → 100% | 56.7d → none |  |  |
| A7240 | Instrumento TAG: XV-6210 | 2026-01-11 → 2026-01-08 A (-3d) | 2026-01-13 → 2026-01-10 A (-3d) | 2.18d → 2d | 0% → 100% | 56.7d → none |  |  |
| A7250 | Instrumento TAG: XV-6211 | 2026-01-11 → 2026-01-08 A (-3d) | 2026-01-13 → 2026-01-10 A (-3d) | 2.18d → 2d | 0% → 100% | 56.7d → none |  |  |
| A7260 | Instrumento TAG: XV-6214 | 2026-01-11 → 2026-01-08 A (-3d) | 2026-01-13 → 2026-01-10 A (-3d) | 2.18d → 2d | 0% → 100% | 56.7d → none |  |  |
| A7270 | Instrumento TAG: XV-6215 | 2026-01-13 → 2026-01-10 A (-3d) | 2026-01-15 → 2026-01-12 A (-3d) | 2.18d → 2d | 0% → 100% | 56.7d → none |  |  |
| A7280 | Instrumento TAG: XV-6221 | 2026-01-13 → 2026-01-10 A (-3d) | 2026-01-15 → 2026-03-16 (+60d) | 2.18d → 2d | 0% → 59% | 56.7d → 27.18d |  |  |
| 4 | **PRUEBAS DE FUNCIONAMIENTO Y PEM INST. TK-3000** | 2026-01-11 → 2026-01-08 (-3d) | 2026-02-03 → 2026-03-16 (+41d) |  |  |  |  |  |
| A7290 | Pruebas de Operación y Puesta en Marcha de Instrumento TAG: PIT-6204 | 2026-01-11 → 2026-01-08 A (-3d) | 2026-01-13 → 2026-03-16 (+62d) | 2.18d → 2d | 0% → 86% | 56.7d → 27.72d | A7210 → A7210 SS |  |
| A7300 | Pruebas de Operación y Puesta en Marcha de Instrumento TAG: PIT-6214 | 2026-01-11 → 2026-01-08 A (-3d) | 2026-01-13 → 2026-03-16 (+62d) | 2.18d → 2d | 0% → 86% | 56.7d → 27.72d |  |  |
| A7310 | Pruebas de Operación y Puesta en Marcha de Instrumento TAG: UIT-6218 | 2026-01-11 → 2026-01-08 A (-3d) | 2026-01-13 → 2026-03-16 (+62d) | 2.18d → 2d | 0% → 86% | 56.7d → 27.72d |  |  |
| A7320 | Pruebas de Operación y Puesta en Marcha de Instrumento TAG: UIT-6220 | 2026-01-11 → 2026-01-08 A (-3d) | 2026-01-13 → 2026-03-16 (+62d) | 2.18d → 2d | 0% → 86% | 56.7d → 27.72d |  |  |
| A7330 | Pruebas de Operación y Puesta en Marcha de Instrumento TAG: XV-1153 | 2026-01-11 → 2026-01-08 A (-3d) | 2026-01-13 → 2026-03-16 (+62d) | 2.18d → 2d | 0% → 86% | 56.7d → 27.72d |  |  |
| A7340 | Pruebas de Operación y Puesta en Marcha de Instrumento TAG: XV-1154 | 2026-01-13 → 2026-01-10 A (-3d) | 2026-01-15 → 2026-03-16 (+60d) | 2.18d → 2d | 0% → 86% | 56.7d → 27.72d | A7260, A7330 → A7260, A7330 SS |  |
| A7350 | Pruebas de Operación y Puesta en Marcha de Instrumento TAG: XV-1155 | 2026-01-13 → 2026-01-10 A (-3d) | 2026-01-15 → 2026-03-16 (+60d) | 2.18d → 2d | 0% → 86% | 56.7d → 27.72d |  |  |
| A7360 | Pruebas de Operación y Puesta en Marcha de Instrumento TAG: XV-1156 | 2026-01-13 → 2026-01-10 A (-3d) | 2026-01-15 → 2026-03-16 (+60d) | 2.18d → 2d | 0% → 86% | 56.7d → 27.72d |  |  |
| A7370 | Pruebas de Operación y Puesta en Marcha de Instrumento TAG: XV-1157 | 2026-01-13 → 2026-01-10 A (-3d) | 2026-01-15 → 2026-03-16 (+60d) | 2.18d → 2d | 0% → 86% | 56.7d → 27.72d |  |  |
| A7380 | Pruebas de Operación y Puesta en Marcha de Instrumento TAG: XV-6201 | 2026-01-13 → 2026-01-10 A (-3d) | 2026-01-15 → 2026-03-16 (+60d) | 2.18d → 2d | 0% → 86% | 56.7d → 27.72d |  |  |
| A7390 | Pruebas de Operación y Puesta en Marcha de Instrumento TAG: XV-6204 | 2026-01-15 → 2026-01-13 A (-2d) | 2026-01-17 → 2026-03-16 (+58d) | 2.18d → 2d | 0% → 86% | 56.7d → 27.72d | A7280, A7380, A7030 → A7280 SS, A7380 SS, A7030 SS |  |
| A7400 | Pruebas de Operación y Puesta en Marcha de Instrumento TAG: XV-6205 | 2026-01-15 → 2026-01-13 A (-2d) | 2026-01-17 → 2026-03-16 (+58d) | 2.18d → 2d | 0% → 86% | 56.7d → 27.72d |  |  |
| A7410 | Pruebas de Operación y Puesta en Marcha de Instrumento TAG: XV-6210 | 2026-01-15 → 2026-01-13 A (-2d) | 2026-01-17 → 2026-03-16 (+58d) | 2.18d → 2d | 0% → 86% | 56.7d → 27.72d |  |  |
| A7420 | Pruebas de Operación y Puesta en Marcha de Instrumento TAG: XV-6211 | 2026-01-15 → 2026-01-13 A (-2d) | 2026-01-17 → 2026-03-16 (+58d) | 2.18d → 2d | 0% → 86% | 56.7d → 27.72d |  |  |
| A7430 | Pruebas de Operación y Puesta en Marcha de Instrumento TAG: XV-6214 | 2026-01-15 → 2026-01-13 A (-2d) | 2026-01-17 → 2026-03-16 (+58d) | 2.18d → 2d | 0% → 86% | 56.7d → 27.72d |  |  |
| A7440 | Pruebas de Operación y Puesta en Marcha de Instrumento TAG: XV-6215 | 2026-02-01 → 2026-01-28 A (-4d) | 2026-02-03 → 2026-03-16 (+41d) | 2.18d → 2d | 0% → 50% | 40.33d → 13d | A7430 SS, Corte y Retiro de Columna Estructural Existente y Reforzamiento de Viga Voladizo. FF → A7430 SS |  |
| 4 | **ÁREA 5827 - SECTOR ESTANQUES L5 LiOH (TK-6100)** |  | 2026-02-03 → 2026-03-29 (+54d) |  |  |  |  |  |
| 1 | **OBRAS PIPING SECTOR ESTANQUES L5 LiOH (TK-6100)** |  | 2026-02-03 → 2026-03-29 (+54d) |  |  |  |  |  |

| ID | Task | Start | Finish | Duration | Complete | Total float | Predecessors | Other |
| --- | --- | --- | --- | --- | --- | --- | --- | --- |
| 1 | **FABRICACIÓN Y MONTAJE DE CAÑERÍAS ÁREA ESTANQUES L5 LiOH (TK-6100)** |  | 2026-01-31 → 2026-03-28 (+56d) |  |  |  |  |  |
| A7450 | Ø 6" - Cañería Acero Inoxidable - Fabricación | 2025-12-15 A | 2026-01-29 → 2026-03-26 (+56d) | 45.82d → 34d | 0% → 70% | 40.33d → -2.81d | A6610 FF, Estructura liviana: 0@30 kg/m Desde L5 LiOH hasta L3 LiOH SS → A6610 | resources SQM-PIPING [2457 h] → SQM-PIPING [1755 h] |
| A7500 | Ø 6" - Cañería Acero Inoxidable - Montaje | 2025-12-17 A | 2026-01-31 → 2026-03-23 (+51d) | 45.82d → 30d | 0% → 76% | 42.51d → 4.65d | A7450 SS+2.18d → A7450 SS+2d, A7450 SS | resources SQM-PIPING [1169.67 h] → SQM-PIPING [903.92 h] |
| A7470 | Ø 3" - Cañería Acero Inoxidable - Fabricación | 2025-12-27 → 2025-12-26 A (-1d) | 2026-01-26 → 2026-03-20 (+53d) | 30.55d → 28d | 0% → 82% | 45.78d → 7d | A7450 SS+5.45d, Planchas Desde L5 LiOH hasta L3 LiOH, A6780 FF → A7450 SS+5d |  |
| A7520 | Ø 3" - Cañería Acero Inoxidable - Montaje | 2025-12-29 → 2025-12-28 A (-1d) | 2026-01-28 → 2026-03-28 (+59d) | 30.55d → 28d | 0% → 55% | 45.78d → 1.54d | A7470 SS+2.18d → A7470 FF+2d | resources SQM-PIPING [579.43 h] → SQM-PIPING [345.72 h] |
| A7480 | Ø 2" - Cañería Acero Inoxidable - Fabricación | 2026-01-15 → 2026-01-12 A (-3d) | 2026-01-29 → 2026-03-26 (+56d) | 13.91d → 14d | 0% → 48% | 44.69d → -2.81d |  | resources SQM-PIPING → SQM-PIPING [258.65 h] |
| A7530 | Ø 2" - Cañería Acero Inoxidable - Montaje | 2026-01-14 → 2026-01-12 A (-2d) | 2026-01-29 → 2026-03-26 (+56d) | 15.27d → 14d | 0% → 82% | 44.69d → 3.93d | A7480 FF → A7480 FF, A7480 SS |  |
| A7540 | Ø 3" - Cañería CPVC, SCH 80 - Montaje | 2026-01-14 → 2026-01-12 A (-2d) | 2026-01-29 → 2026-03-23 (+53d) | 15.27d → 14d | 0% → 75% | 44.69d → 0d | A7490 FF, A6750 FF → A7490 FF, A6750 | resources SQM-PIPING [138.6 h] → SQM-PIPING [92.4 h] |
| A7460 | Ø 4" - Cañería Acero Inoxidable - Fabricación | 2026-01-18 → 2026-01-16 A (-2d) | 2026-01-29 → 2026-03-26 (+56d) | 10.91d → 10d | 0% → 52% | 40.33d → -2.81d |  | resources SQM-PIPING [425.6 h] → SQM-PIPING [197.6 h] |
| A7510 | Ø 4" - Cañería Acero Inoxidable - Montaje | 2026-01-18 → 2026-01-16 A (-2d) | 2026-01-29 → 2026-03-26 (+56d) | 10.91d → 10d | 0% → 97% | 40.33d → 3.93d | A7500 SS, A7460 SS → A7500 FF, A7460 FF, A7460 SS | resources SQM-PIPING [32.83 h] → SQM-PIPING [35.18 h] |
| A7490 | Ø 3" - Cañería CPVC, SCH 80 - Fabricación | 2026-01-21 → 2026-03-16 (+54d) | 2026-01-29 → 2026-03-23 (+53d) | 8.73d → 8d |  | 44.69d → 0d | A7480 FF → A7480 SS |  |
| 2 | **MONTAJE DE VÁLVULAS Y FITTING SECTOR ESTANQUES L5 LiOH (TK-6100)** |  | 2026-01-29 → 2026-03-26 (+56d) |  |  |  |  |  |
| A7550 | Fitting Sector L5 LiOH - TK-6100 (Global) | 2025-12-15 A | 2026-01-29 → 2026-03-26 (+56d) | 45.82d → 64d | 0% → 92% | 44.69d → 6.93d |  | resources SQM-PIPING [3535.19 h] → SQM-PIPING [3375.27 h] |
| A7560 | Válvulas Sector L5 LiOH - TK-6100 (Global) | 2025-12-28 → 2026-03-24 (+86d) | 2026-01-29 → 2026-03-26 (+56d) | 32.73d → 2d |  | 44.69d → 3.93d | A7450 SS, A7530 FF, A7550 SS+10.91d → A7450 SS, A7530 FF, A7550 SS |  |
| 3 | **TIE IN LÍNEAS ASOCIADAS A ESTANQUES L5 LiOH (TK-6100)** | 2026-01-27 → 2026-03-24 (+56d) | 2026-01-29 → 2026-03-29 (+59d) |  |  |  |  |  |
| A7610 | TIE-IN N° 6456 - 5827-EST-6050 Ac. Inoc. a Línea Proyectada 80-DR-5827-P2-6625 | 2026-01-27 → 2026-03-24 (+56d) | 2026-01-29 → 2026-03-25 (+55d) | 2.18d → 2d |  | 44.69d → 0d | A7540 FF → A7540 |  |
| A7620 | TIE-IN N° 6457 - 5827-EST-6050 Ac. Inox. a Línea Proyectada 80-DR-5827-P2-6622 | 2026-01-27 → 2026-03-24 (+56d) | 2026-01-29 → 2026-03-25 (+55d) | 2.18d → 2d |  | 44.69d → 0d | A7610 FF → A7610 SS |  |
| A7570 | TIE-IN N° 6454 - 5827-EST-6100 Ac. Inox. a Línea Proyectada 100-LC-5827-I1-6615-A | 2026-01-27 → 2026-03-24 (+56d) | 2026-01-29 → 2026-03-26 (+56d) | 2.18d → 2d |  | 44.69d → 3.93d | A7530 FF, A7560 FF → A7530 FF, A7560 FF, A7500 |  |
| A7580 | TIE-IN N° 6455 - 5827-EST-6100 Ac. Inox. a Línea Proyectada 100-LC-5827-I1-6619-A | 2026-01-27 → 2026-03-24 (+56d) | 2026-01-29 → 2026-03-26 (+56d) | 2.18d → 2d |  | 44.69d → 3.93d | A7570 FF → A7570 SS |  |
| A7590 | TIE-IN N° 6458 - 5827-EST-7100 Ac Inox. a Línea Proyectada 80-LC-5827-I1-6623-A | 2026-01-27 → 2026-03-24 (+56d) | 2026-01-29 → 2026-03-26 (+56d) | 2.18d → 2d |  | 44.69d → 3.93d |  |  |
| A7630 | TIE-IN N° 6460 -5827-EST-7050 Ac. Inox. a Línea Proyectada 80-DR-5827-P2-6627 | 2026-01-27 → 2026-03-26 (+58d) | 2026-01-29 → 2026-03-27 (+57d) | 2.18d → 2d |  | 44.69d → 0d | A7620 FF → A7620 |  |
| A7640 | TIE-IN N° 6461 - 5827-EST-7050 Ac. Inox. a Línea Proyectada 80-DR-5827-P2-6624 | 2026-01-27 → 2026-03-26 (+58d) | 2026-01-29 → 2026-03-27 (+57d) | 2.18d → 2d |  | 44.69d → 0d | A7630 FF → A7630 SS |  |
| A7600 | TIE-IN N° 6459 - 5827-EST-7100 Ac. Inox. a Línea Proyectada 80-LC-5827-I1-6626-A | 2026-01-27 → 2026-03-28 (+60d) | 2026-01-29 → 2026-03-29 (+59d) | 2.18d → 2d |  | 44.69d → 0d | A7590 FF, A7640 FF, A7520 FF → A7590 FF, A7640, A7520 FF |  |
| 4 | **AISLACIÓN LÍNEAS L5 LiOH (TK-6100)** | 2026-01-01 → 2025-12-31 (-1d) | 2026-02-03 → 2026-03-29 (+54d) |  |  |  |  |  |
| A7650 | Ø 6" - Aislación de Lana Mineral de 1,5" de espesor | 2026-01-01 → 2025-12-31 A (-1d) | 2026-01-31 → 2026-03-23 (+51d) | 30.55d → 3d |  | 42.51d → 6.65d | A7500 FF → A7500 FF, A7500 SS | resources SQM-PIPING [1846.38 h] → SQM-PIPING [1426.88 h] |
| A7670 | Ø 3" - Aislación de Lana Mineral de 1,5" de espesor | 2026-01-18 → 2026-03-23 (+64d) | 2026-02-03 → 2026-03-29 (+54d) | 15.27d → 7d |  | 40.33d → 0d | A7660 SS, A7520 SS → A7660 FF, A7530 FF, A7640 FF, A7520 FF, A7600 FF | resources SQM-PIPING [915.2 h] → SQM-PIPING [550.4 h] |
| A7660 | Ø 4" - Aislación de Lana Mineral de 1,5" de espesor | 2026-01-18 → 2026-03-23 (+64d) | 2026-01-22 → 2026-03-26 (+63d) | 3.27d → 3d |  | 40.33d → 3.93d | A7650 SS, A7510 SS → A7650 FF, A7510 FF | resources SQM-PIPING [67.2 h] → SQM-PIPING [72 h] |
| 2 | **OBRAS DE INSTRUMENTACIÓN SECTOR ESTANQUES L5 LiOH (TK-6100)** |  | 2026-01-06 → 2026-03-23 (+76d) |  |  |  |  |  |
| 1 | **MONTAJE DE CANALIZACIÓN Y FERRETERÍA INST. ESTANQUES L5 LiOH (TK-6100)** | 2025-12-23 → 2025-12-22 (-1d) | 2025-12-25 → 2026-03-16 (+81d) |  |  |  |  |  |
| A7680 | Canalización y Copla de Conduit de Acero Galvanizado 1"Ø, Conduit ANSI C80.1 | 2025-12-23 → 2025-12-22 A (-1d) | 2025-12-24 → 2026-03-16 (+82d) | 1.09d → 1d |  | 67.74d → 27d |  | resources SQM-INSTRUMENTACIÓN [1.26 h] → SQM-INSTRUMENTACIÓN [333.9 h] |
| A7690 | Canalización y Copla de Conduit Flexible Metálico con Cubierta PVC 1" Ø Trabajo Pesado | 2025-12-24 → 2025-12-23 A (-1d) | 2025-12-25 → 2026-03-16 (+81d) | 1.09d → 1d |  | 67.74d → 27d | A7680 → A7680 SS | resources SQM-INSTRUMENTACIÓN [1.26 h] → SQM-INSTRUMENTACIÓN [70.56 h] |
| 2 | **TENDIDO Y CONEXIONADO DE CABLES INSTRUMENTACIÓN ESTANQUES L5 LiOH (TK-6100)** |  | 2025-12-30 → 2026-03-21 (+81d) |  |  |  |  |  |
| A7710 | Cable de Instrumentación (Señales Análogas), 1x1 par #16 AWG Apantallado |  | 2025-12-23 → 2026-03-18 (+85d) | 3.27d → 3d | 55% → 0% | 67.74d → 25d |  | resources SQM-INSTRUMENTACIÓN [192.4 h] → SQM-INSTRUMENTACIÓN [346.32 h] |
| A7720 | Cable Multiconductor de Cobre Blando 1x3C #12 AWG, Clase 0,3 |  | 2025-12-24 → 2026-03-18 (+84d) | 5.45d → 5d | 56% → 43% | 67.74d → 25.15d |  | resources SQM-INSTRUMENTACIÓN [548 h] → SQM-INSTRUMENTACIÓN [189.97 h] |
| A7700 | Cable Multiconductor de Cobre con Aislación de XLPE, 1x3C #12 AWG, Clase 1 kV |  | 2025-12-25 → 2026-03-21 (+86d) | 6.55d → 6d | 52% → 0% | 67.74d → 22d | A7690 FF → A7690 SS | resources SQM-INSTRUMENTACIÓN [127.87 h] → SQM-INSTRUMENTACIÓN [94.99 h] |
| A7730 | Cable Multiconductor de Cobre Blando 1x5C #12 AWG, Clase 0,3 | 2025-12-24 → 2025-12-23 A (-1d) | 2025-12-30 → 2026-03-20 (+80d) | 5.45d → 5d |  | 67.74d → 23d | A7720 → A7720 SS | resources SQM-INSTRUMENTACIÓN [548 h] → SQM-INSTRUMENTACIÓN [427.44 h] |
| 3 | **MONTAJE Y CONEXIONADO DE EQUIPOS E INSTRUMENTOS ESTANQUES L5 LiOH (TK-6100)** | 2025-12-21 → 2025-12-20 (-1d) | 2026-01-05 → 2026-03-23 (+77d) |  |  |  |  |  |
| A7740 | Módulos de Entradas y Salidas Análogas/Digitales en TAG: 5804-PNC-6402. | 2025-12-21 → 2025-12-20 A (-1d) | 2025-12-30 → 2026-03-23 (+83d) | 8.73d → 8d |  | 67.74d → 20d | A7730 FF → A7730 SS |  |
| A7750 | Módulos de Entradas y Salidas Análogas/Digitales en TAG: 5804-PNC-7502. | 2025-12-21 → 2025-12-20 A (-1d) | 2025-12-30 → 2026-03-23 (+83d) | 8.73d → 8d |  | 67.74d → 20d |  |  |
| A7760 | Brazo Prealambrado para Módulos de Entradas y Salidas Análogas/Digitales en TAG: 5804-PNC-6402. | 2025-12-21 → 2025-12-20 A (-1d) | 2025-12-30 → 2026-03-23 (+83d) | 8.73d → 8d |  | 67.74d → 20d |  | was named Brazo Prealambrado para Módulos de Entradas y Ealidas Análogas/Digitales en TAG: 5804-PNC-6402. |
| A7770 | Brazo Prealambrado para Módulos de Entradas y Salidas Análogas/Digitales en TAG: 5804-PNC-7502. | 2025-12-21 → 2025-12-20 A (-1d) | 2025-12-30 → 2026-03-23 (+83d) | 8.73d → 8d |  | 67.74d → 20d |  | was named Brazo Prealambrado para Módulos de Entradas y Ealidas Análogas/Digitales en TAG: 5804-PNC-7502. |
| A7780 | Instrumento TAG: FIT-6230 | 2025-12-29 → 2025-12-27 A (-2d) | 2025-12-30 → 2026-03-23 (+83d) | 1.09d → 1d |  | 67.74d → 20d | A7770 FF → A7770 FF, A7280 SS | resources SQM-INSTRUMENTACIÓN [21.75 h] → SQM-INSTRUMENTACIÓN [43.5 h] |
| A7790 | Instrumento TAG: FIT-6240 | 2025-12-29 → 2025-12-27 A (-2d) | 2025-12-30 → 2026-03-16 (+76d) | 1.09d → 1d |  | 67.74d → 27d |  | resources SQM-INSTRUMENTACIÓN [21.75 h] → SQM-INSTRUMENTACIÓN [43.5 h] |
| A7800 | Instrumento TAG: FIT-6268 | 2025-12-29 → 2025-12-27 A (-2d) | 2025-12-30 → 2026-03-16 (+76d) | 1.09d → 1d |  | 67.74d → 27d |  | resources SQM-INSTRUMENTACIÓN [21.75 h] → SQM-INSTRUMENTACIÓN [43.5 h] |
| A7810 | Instrumento TAG: FIT-6670 | 2025-12-29 → 2025-12-27 A (-2d) | 2025-12-30 → 2026-03-16 (+76d) | 1.09d → 1d |  | 67.74d → 27d |  | resources SQM-INSTRUMENTACIÓN [21.75 h] → SQM-INSTRUMENTACIÓN [43.5 h] |
| A7820 | Instrumento TAG: FV-6264 | 2025-12-29 → 2025-12-27 A (-2d) | 2025-12-30 → 2026-03-16 (+76d) | 1.09d → 1d |  | 67.74d → 27d |  |  |
| A7830 | Instrumento TAG: FV-6265 | 2025-12-29 → 2025-12-27 A (-2d) | 2025-12-30 → 2026-03-16 (+76d) | 1.09d → 1d |  | 67.74d → 27d |  |  |
| A7840 | Instrumento TAG: FV-6264 | 2025-12-29 → 2025-12-27 A (-2d) | 2025-12-30 → 2026-03-16 (+76d) | 1.09d → 1d |  | 67.74d → 27d |  |  |
| A7850 | Instrumento TAG: FV-6265 | 2025-12-29 → 2025-12-27 A (-2d) | 2025-12-30 → 2026-03-16 (+76d) | 1.09d → 1d |  | 67.74d → 27d |  |  |
| A7860 | Instrumento TAG: XV-6251 | 2025-12-30 → 2025-12-28 A (-2d) | 2025-12-31 → 2026-03-16 (+75d) | 1.09d → 1d |  | 67.74d → 27d | A7850 → A7850 SS |  |
| A7880 | Instrumento TAG: XV-6232 | 2025-12-30 → 2025-12-28 A (-2d) | 2025-12-31 → 2026-03-16 (+75d) | 1.09d → 1d |  | 67.74d → 27d |  |  |
| A7890 | Instrumento TAG: XV-6245 | 2025-12-30 → 2025-12-28 A (-2d) | 2025-12-31 → 2026-03-16 (+75d) | 1.09d → 1d |  | 67.74d → 27d |  |  |
| A7900 | Instrumento TAG: XV-6246 | 2025-12-31 → 2025-12-29 A (-2d) | 2026-01-01 → 2026-03-16 (+74d) | 1.09d → 1d |  | 67.74d → 27d | A7890 → A7890 SS |  |
| A7910 | Instrumento TAG: XV-6247 | 2025-12-31 → 2025-12-29 A (-2d) | 2026-01-01 → 2026-03-16 (+74d) | 1.09d → 1d |  | 67.74d → 27d |  |  |
| A7920 | Instrumento TAG: XV-6252 | 2025-12-31 → 2025-12-29 A (-2d) | 2026-01-01 → 2026-03-16 (+74d) | 1.09d → 1d |  | 67.74d → 27d |  |  |
| A7930 | Instrumento TAG: XV-6253 | 2025-12-31 → 2025-12-29 A (-2d) | 2026-01-01 → 2026-03-16 (+74d) | 1.09d → 1d |  | 67.74d → 27d |  |  |
| A7940 | Instrumento TAG: XV-6258 | 2026-01-01 → 2025-12-30 A (-2d) | 2026-01-02 → 2026-03-16 (+73d) | 1.09d → 1d |  | 67.74d → 27d | A7930 → A7930 SS |  |
| A7950 | Instrumento TAG: XV-6249 | 2026-01-01 → 2025-12-30 A (-2d) | 2026-01-02 → 2026-03-16 (+73d) | 1.09d → 1d |  | 67.74d → 27d |  |  |
| A7960 | Instrumento TAG: XV-6229 | 2026-01-01 → 2025-12-30 A (-2d) | 2026-01-02 → 2026-03-16 (+73d) | 1.09d → 1d |  | 67.74d → 27d |  |  |
| A7970 | Instrumento TAG: XV-6230 | 2026-01-01 → 2025-12-30 A (-2d) | 2026-01-02 → 2026-03-16 (+73d) | 1.09d → 1d |  | 67.74d → 27d |  |  |
| A7980 | Instrumento TAG: XV-6240 | 2026-01-02 → 2025-12-31 A (-2d) | 2026-01-03 → 2026-03-16 (+72d) | 1.09d → 1d |  | 67.74d → 27d | A7970 → A7970 SS |  |
| A7990 | Instrumento TAG: XV-6242 | 2026-01-02 → 2025-12-31 A (-2d) | 2026-01-03 → 2026-03-16 (+72d) | 1.09d → 1d |  | 67.74d → 27d |  |  |
| A8000 | Instrumento TAG: XV-6245 | 2026-01-02 → 2025-12-31 A (-2d) | 2026-01-03 → 2026-03-16 (+72d) | 1.09d → 1d |  | 67.74d → 27d |  |  |
| A8010 | Instrumento TAG: XV-6250 | 2026-01-02 → 2025-12-31 A (-2d) | 2026-01-03 → 2026-03-16 (+72d) | 1.09d → 1d |  | 67.74d → 27d |  |  |
| A8020 | Instrumento TAG: XV-6251 | 2026-01-03 → 2026-01-01 A (-2d) | 2026-01-04 → 2026-03-16 (+71d) | 1.09d → 1d |  | 67.74d → 8d | A8010 → A8010 SS |  |
| A7870 | Instrumento TAG: XV-6229 | 2025-12-30 → 2026-03-16 (+76d) | 2025-12-31 → 2026-03-16 (+75d) | 1.09d → 1d |  | 67.74d → 27d |  | resources SQM-INSTRUMENTACIÓN [21.75 h] → SQM-INSTRUMENTACIÓN |
| A8030 | Instrumento TAG: XV-6258 | 2026-01-04 → 2026-03-17 (+72d) | 2026-01-05 → 2026-03-17 (+71d) | 1.09d → 1d |  | 67.74d → 8d |  | resources SQM-INSTRUMENTACIÓN [21.75 h] → SQM-INSTRUMENTACIÓN |
| 4 | **PRUEBAS DE FUNCIONAMIENTO Y PEM INST. ESTANQUES L5 LiOH (TK-6100)** | 2025-12-26 → 2026-03-18 (+82d) | 2026-01-06 → 2026-03-21 (+74d) |  |  |  |  |  |
| A8040 | Pruebas de Operación y PEM de Entradas y Salidas Análogas/Digitales en TAG: 5801-PNC-7502 | 2025-12-30 → 2026-03-18 (+78d) | 2026-01-02 → 2026-03-18 (+75d) | 3.27d → 1d |  | 68.83d → 8d | A8050 → A8030 |  |
| A8050 | Pruebas de Operación y PEM Módulos de Entradas y Salidas Análogas/Digitales en TAG: 5804-PNC-6402 | 2025-12-26 → 2026-03-18 (+82d) | 2025-12-30 → 2026-03-18 (+78d) | 3.27d → 1d |  | 68.83d → 8d | A7770 FF → A8040 SS |  |

| ID | Task | Start | Finish | Duration | Complete | Total float | Predecessors | Other |
| --- | --- | --- | --- | --- | --- | --- | --- | --- |
| A8060 | Pruebas de Operación y PEM de Brazo Prealambrado Módulos de Entradas y Salidas Análogas/Digitales en TAG: 5804-PNC | 2026-01-02 → 2026-03-18 (+75d) | 2026-01-05 → 2026-03-18 (+72d) | 3.27d → 1d |  | 68.83d → 8d | A8040 → A8050 SS | was named Pruebas de Operación y PEM de Brazo Prealambrado Módulos de Entradas y Salidas Análogas/Digitales en TAG: 5804-PNC-6402 |
| A8070 | Pruebas de Operación y PEM de Brazo Prealambrado Módulos de Entradas y Salidas Análogas/Digitales en TAG: 5801-PNC | 2026-01-02 → 2026-03-18 (+75d) | 2026-01-05 → 2026-03-18 (+72d) | 3.27d → 1d |  | 68.83d → 8d | A8060 FF → A8060 SS | was named Pruebas de Operación y PEM de Brazo Prealambrado Módulos de Entradas y Salidas Análogas/Digitales en TAG: 5801-PNC-7502 |
| A8080 | Pruebas de Operación y Puesta en Marcha de Instrumento TAG: FIT-6230 | 2026-01-02 → 2026-03-18 (+75d) | 2026-01-03 → 2026-03-18 (+74d) | 1.09d → 1d |  | 68.83d → 8d |  |  |
| A8090 | Pruebas de Operación y Puesta en Marcha de Instrumento TAG: FIT-6240 | 2026-01-02 → 2026-03-18 (+75d) | 2026-01-03 → 2026-03-18 (+74d) | 1.09d → 1d |  | 68.83d → 8d |  |  |
| A8100 | Pruebas de Operación y Puesta en Marcha de Instrumento TAG: FIT-6268 | 2026-01-02 → 2026-03-18 (+75d) | 2026-01-03 → 2026-03-18 (+74d) | 1.09d → 1d |  | 68.83d → 8d |  |  |
| A8110 | Pruebas de Operación y Puesta en Marcha de Instrumento TAG: FIT-6670 | 2026-01-03 → 2026-03-19 (+75d) | 2026-01-04 → 2026-03-19 (+74d) | 1.09d → 1d |  | 68.83d → 8d |  |  |
| A8120 | Pruebas de Operación y Puesta en Marcha de Instrumento TAG: FV-6264 | 2026-01-03 → 2026-03-19 (+75d) | 2026-01-04 → 2026-03-19 (+74d) | 1.09d → 1d |  | 68.83d → 8d |  |  |
| A8130 | Pruebas de Operación y Puesta en Marcha de Instrumento TAG: FV-6265 | 2026-01-03 → 2026-03-19 (+75d) | 2026-01-04 → 2026-03-19 (+74d) | 1.09d → 1d |  | 68.83d → 8d |  |  |
| A8140 | Pruebas de Operación y Puesta en Marcha de Instrumento TAG: FV-6264 | 2026-01-03 → 2026-03-19 (+75d) | 2026-01-04 → 2026-03-19 (+74d) | 1.09d → 1d |  | 68.83d → 8d |  |  |
| A8150 | Pruebas de Operación y Puesta en Marcha de Instrumento TAG: FV-6265 | 2026-01-04 → 2026-03-19 (+74d) | 2026-01-05 → 2026-03-19 (+73d) | 1.09d → 1d |  | 68.83d → 8d | A8140 → A8140 SS |  |
| A8160 | Pruebas de Operación y Puesta en Marcha de Instrumento TAG: XV-6251 | 2026-01-04 → 2026-03-19 (+74d) | 2026-01-05 → 2026-03-19 (+73d) | 1.09d → 1d |  | 68.83d → 8d |  | resources SQM-INSTRUMENTACIÓN [12 h] → SQM-INSTRUMENTACIÓN [24 h] |
| A8170 | Pruebas de Operación y Puesta en Marcha de Instrumento TAG: XV-6229 | 2026-01-04 → 2026-03-19 (+74d) | 2026-01-05 → 2026-03-19 (+73d) | 1.09d → 1d |  | 68.83d → 8d |  |  |
| A8180 | Pruebas de Operación y Puesta en Marcha de Instrumento TAG: XV-6232 | 2026-01-04 → 2026-03-19 (+74d) | 2026-01-05 → 2026-03-19 (+73d) | 1.09d → 1d |  | 68.83d → 8d |  |  |
| A8190 | Pruebas de Operación y Puesta en Marcha de Instrumento TAG: XV-6245 | 2026-01-04 → 2026-03-20 (+75d) | 2026-01-05 → 2026-03-20 (+74d) | 1.09d → 1d |  | 68.83d → 8d | A8180 FF → A8180 |  |
| A8200 | Pruebas de Operación y Puesta en Marcha de Instrumento TAG: XV-6246 | 2026-01-04 → 2026-03-20 (+75d) | 2026-01-05 → 2026-03-20 (+74d) | 1.09d → 1d |  | 68.83d → 8d |  |  |
| A8210 | Pruebas de Operación y Puesta en Marcha de Instrumento TAG: XV-6247 | 2026-01-04 → 2026-03-20 (+75d) | 2026-01-05 → 2026-03-20 (+74d) | 1.09d → 1d |  | 68.83d → 8d |  |  |
| A8220 | Pruebas de Operación y Puesta en Marcha de Instrumento TAG: XV-6252 | 2026-01-04 → 2026-03-20 (+75d) | 2026-01-05 → 2026-03-20 (+74d) | 1.09d → 1d |  | 68.83d → 8d |  |  |
| A8230 | Pruebas de Operación y Puesta en Marcha de Instrumento TAG: XV-6253 | 2026-01-04 → 2026-03-20 (+75d) | 2026-01-05 → 2026-03-20 (+74d) | 1.09d → 1d |  | 68.83d → 8d | A8220 FF → A8220 SS |  |
| A8240 | Pruebas de Operación y Puesta en Marcha de Instrumento TAG: XV-6258 | 2026-01-04 → 2026-03-20 (+75d) | 2026-01-05 → 2026-03-20 (+74d) | 1.09d → 1d |  | 68.83d → 8d |  |  |
| A8250 | Pruebas de Operación y Puesta en Marcha de Instrumento TAG: XV-6249 | 2026-01-04 → 2026-03-20 (+75d) | 2026-01-05 → 2026-03-20 (+74d) | 1.09d → 1d |  | 68.83d → 8d |  |  |
| A8260 | New Activity | 2026-01-04 → 2026-03-21 (+76d) | 2026-01-05 → 2026-03-21 (+75d) | 1.09d → 1d |  | 68.83d → 8d | A8250 SS → A8250 | was named Pruebas de Operación y Puesta en Marcha de Instrumento TAG: XV-6229; resources SQM-INSTRUMENTACIÓN [12 h] → SQM-INSTRUMENTACIÓN |
| A8270 | Pruebas de Operación y Puesta en Marcha de Instrumento TAG: XV-6230 | 2026-01-04 → 2026-03-21 (+76d) | 2026-01-05 → 2026-03-21 (+75d) | 1.09d → 1d |  | 68.83d → 8d | A8260 FF → A8260 SS |  |
| A8280 | Pruebas de Operación y Puesta en Marcha de Instrumento TAG: XV-6240 | 2026-01-04 → 2026-03-21 (+76d) | 2026-01-05 → 2026-03-21 (+75d) | 1.09d → 1d |  | 68.83d → 8d |  |  |
| A8290 | Pruebas de Operación y Puesta en Marcha de Instrumento TAG: XV-6242 | 2026-01-04 → 2026-03-21 (+76d) | 2026-01-05 → 2026-03-21 (+75d) | 1.09d → 1d |  | 68.83d → 8d |  |  |
| A8300 | Pruebas de Operación y Puesta en Marcha de Instrumento TAG: XV-6245 | 2026-01-04 → 2026-03-21 (+76d) | 2026-01-05 → 2026-03-21 (+75d) | 1.09d → 1d |  | 68.83d → 8d |  |  |
| A8310 | Pruebas de Operación y Puesta en Marcha de Instrumento TAG: XV-6250 | 2026-01-04 → 2026-03-21 (+76d) | 2026-01-05 → 2026-03-21 (+75d) | 1.09d → 1d |  | 68.83d → 8d | A8300 FF → A8300 SS |  |
| A8320 | Pruebas de Operación y Puesta en Marcha de Instrumento TAG: XV-6251 | 2026-01-04 → 2026-03-21 (+76d) | 2026-01-05 → 2026-03-21 (+75d) | 1.09d → 1d |  | 68.83d → 8d |  |  |
| A8330 | Pruebas de Operación y Puesta en Marcha de Instrumento TAG: XV-6258 | 2026-01-05 → 2026-03-21 (+75d) | 2026-01-06 → 2026-03-21 (+74d) | 1.09d → 1d |  | 67.74d → 8d | A8320 SS, A8030 → A8320 SS |  |
| 5 | **ÁREA 5872 - SECTOR TK-3016** |  | 2026-01-24 → 2026-03-16 (+51d) |  |  |  |  |  |
| A8350 | Armadura de Refuerzo A630-420H para PD-1 |  | 2025-12-15 A | 4.36d → 4d | 91% → 100% | 57.78d → none | A6040 SS → A6870 SS | resources SQM-OOCC [9.78 h] → SQM-OOCC [9.98 h] |
| A8340 | Hormigón G30 Pedestal PD-1 (TAG: 5817-BBA-1681 y TAG: 5817-BBA-1684) |  | 2025-12-22 A | 2.18d → 2d |  | 49.98d → none | A8350 SS, A6540 FF → A8350, A6540 | resources SQM-OOCC [9.86 h] → SQM-OOCC [13.44 h] |
| 1 | **OBRAS MECÁNICAS TK-3016** |  | 2025-12-24 → 2025-12-23 (-1d) |  |  |  |  |  |
| 1 | **MONTAJE Y PRUEBAS DE EQUIPOS MECÁNICOS ÁREA 5872 TK3016 HIDRÓXIDO** |  | 2025-12-24 → 2025-12-23 (-1d) |  |  |  |  |  |
| A8360 | Bomba Centrífuga y Motor TAG: 5872-BBA-1681; 5872-MTR-1682 |  | 2025-12-24 → 2025-12-23 A (-1d) | 4.36d → 4d | 65% → 100% | 49.98d → none | A8340 SS, A6030 SS → A8340, A6030 |  |
| A8370 | Bomba Centrífuga y Motor TAG: 5872-BBA-1684; 5872-MTR-1685 |  | 2025-12-24 → 2025-12-23 A (-1d) | 4.36d → 4d | 65% → 100% | 49.98d → none |  |  |
| 2 | **OBRAS PIPING TK-3016** |  | 2026-01-24 → 2026-01-21 (-3d) |  |  |  |  |  |
| 1 | **FABRICACIÓN Y MONTAJE DE CAÑERÍAS ÁREA TK-3016** |  | 2026-01-24 → 2026-01-21 (-3d) |  |  |  |  |  |
| A8380 | Ø 200 mm - Cañería HDPE, PE 100, PN20 (8") - Fabricación |  |  | 6.55d → 6d |  |  | A3600 SS, A8370 SS → A3600, A8370 SS | resources SQM-PIPING [157.5 h] → SQM-PIPING [217 h] |
| A8500 | Ø 200 mm - Cañería HDPE, PE 100, PN20 (8") - Montaje |  | 2026-01-02 → 2026-01-01 A (-1d) | 3.27d → 3d | 71% → 100% | 53.25d → none | A8420 FF → A8420 |  |
| A8400 | Ø 6" - Cañería Acero Inoxidable - Fabricación | 2025-12-15 A | 2026-01-22 → 2026-01-18 A (-4d) | 38.18d → 30d | 0% → 100% | 51.23d → none | A6610 FF, A8380 FF → A6610 SS, A8380, A4540 | resources SQM-PIPING [1378 h] → SQM-PIPING [1261 h] |
| A8460 | Ø 6" - Cañería Acero Inoxidable - Montaje | 2025-12-17 A | 2026-01-24 → 2026-01-21 A (-3d) | 38.18d → 28d | 0% → 100% | 49.98d → none | A8400 FF+1.09d, A8510 FF, A8520 FF → A8400 FF+1d, A8510 FF, A8520 FF | resources SQM-PIPING [95.45 h] → SQM-PIPING [75.63 h] |
| A8390 | Ø 8" - Cañería Acero Inoxidable - Fabricación | 2025-12-22 A | 2025-12-27 → 2025-12-26 A (-1d) | 4.36d → 4d | 0% → 100% | 52.16d → none |  | resources SQM-PIPING [59.2 h] → SQM-PIPING [29.6 h] |
| A8410 | Ø 4" - Cañería Acero Inoxidable - Fabricación | 2025-12-27 → 2025-12-26 A (-1d) | 2025-12-30 → 2025-12-29 A (-1d) | 3.27d → 3d | 0% → 100% | 52.16d → none |  |  |
| A8420 | Ø 3" - Cañería Acero Inoxidable - Fabricación | 2025-12-30 → 2025-12-29 A (-1d) | 2026-01-02 → 2026-01-01 A (-1d) | 3.27d → 3d | 0% → 100% | 52.16d → none |  |  |
| A8430 | Ø 2" - Cañería Acero Inoxidable - Fabricación | 2026-01-02 → 2026-01-01 A (-1d) | 2026-01-07 → 2026-01-05 A (-2d) | 4.36d → 4d | 0% → 100% | 52.16d → none |  | resources SQM-PIPING [49.27 h] → SQM-PIPING [82.11 h] |
| A8450 | Ø 8" - Cañería Acero Inoxidable - Montaje | 2026-01-02 → 2026-01-01 A (-1d) | 2026-01-05 → 2026-01-04 A (-1d) | 3.27d → 3d | 0% → 100% | 53.25d → none |  |  |
| A8480 | Ø 3" - Cañería Acero Inoxidable - Montaje | 2026-01-05 → 2026-01-04 A (-1d) | 2026-01-09 → 2026-01-07 A (-2d) | 3.27d → 3d | 0% → 100% | 53.25d → none |  |  |
| A8440 | Ø 1" - Cañería Acero Inoxidable - Fabricación | 2026-01-07 → 2026-01-05 A (-2d) | 2026-01-10 → 2026-01-08 A (-2d) | 3.27d → 3d | 0% → 100% | 52.16d → none |  |  |
| A8490 | Ø 2" - Cañería Acero Inoxidable - Montaje | 2026-01-09 → 2026-01-07 A (-2d) | 2026-01-12 → 2026-01-10 A (-2d) | 3.27d → 3d | 0% → 100% | 53.25d → none |  | resources SQM-PIPING [9.14 h] → SQM-PIPING [13.96 h] |
| A8470 | Ø 4" - Cañería Acero Inoxidable - Montaje | 2026-01-12 → 2026-01-10 A (-2d) | 2026-01-15 → 2026-01-13 A (-2d) | 3.27d → 3d | 0% → 100% | 53.25d → none |  |  |
| 2 | **MONTAJE DE VÁLVULAS Y FITTING SECTOR TK-3016** |  | 2026-01-24 → 2026-01-21 (-3d) |  |  |  |  |  |
| A8510 | Fitting Sector TK-3016 (Global) |  | 2026-01-24 → 2026-01-21 A (-3d) | 32.73d → 36d | 0% → 100% | 49.98d → none |  | resources SQM-PIPING [1507.89 h] → SQM-PIPING [1441.13 h] |
| A8520 | Válvulas Sector TK-3016(Global) |  | 2026-01-24 → 2026-01-21 A (-3d) | 32.73d → 36d | 0% → 100% | 49.98d → none |  | resources SQM-PIPING [281.25 h] → SQM-PIPING [251.25 h] |
| 3 | **TIE IN LÍNEAS ASOCIADAS A TK-3016** | 2026-01-22 → 2026-01-19 (-3d) | 2026-01-24 → 2026-01-21 (-3d) |  |  |  |  |  |
| A8530 | TIE-IN N° 1421 - 5872-EST-3016 a Línea Proyectada 150-IW-5872-I1-1621 | 2026-01-22 → 2026-01-19 A (-3d) | 2026-01-24 → 2026-01-21 A (-3d) | 2.18d → 2d | 0% → 100% | 49.98d → none | A8460 FF → A8460 |  |
| A8540 | TIE-IN N° 1422 - 5872-EST-3016 a Línea Proyectada 150-IW-5872-I1-1622 | 2026-01-22 → 2026-01-19 A (-3d) | 2026-01-24 → 2026-01-21 A (-3d) | 2.18d → 2d | 0% → 100% | 49.98d → none |  |  |
| A8550 | PerforaciØn de Estanque Existente TK-3016 para TIE-IN N°1421 y 1422. | 2026-01-22 → 2026-01-19 A (-3d) | 2026-01-24 → 2026-01-21 A (-3d) | 2.18d → 2d | 0% → 100% | 49.98d → none |  | was named Perforación de Estanque Existente TK-3016 para TIE-IN N°1421 y 1422. |
| 4 | **FABRICACIÓN Y MONTAJE DE SOPORTES TK-3016** | 2026-01-10 → 2026-01-08 (-2d) | 2026-01-20 → 2026-01-17 (-3d) |  |  |  |  |  |
| A8560 | Soporte N°001 - Pedestal Tipo TEE, Acero Estructural para Tuberías Diámetros Pequeños | 2026-01-10 → 2026-01-08 A (-2d) | 2026-01-13 → 2026-01-11 A (-2d) | 3.27d → 3d | 0% → 100% | 52.16d → none |  | resources SQM-PIPING [8.5 h] → SQM-PIPING [12.75 h] |
| A8570 | Soporte N°002A - Pedestal con Repisa de Acero Estructural para Tuberías Diámetros Pequeños | 2026-01-13 → 2026-01-11 A (-2d) | 2026-01-16 → 2026-01-14 A (-2d) | 3.27d → 3d | 0% → 100% | 52.16d → none |  |  |
| A8580 | Soporte Primario Tipo "U" (Para Uso General) | 2026-01-16 → 2026-01-14 A (-2d) | 2026-01-20 → 2026-01-17 A (-3d) | 3.27d → 3d | 0% → 100% | 52.16d → none |  | resources SQM-PIPING [1.16 h] → SQM-PIPING [7.7 h] |
| 3 | **OBRAS ELÉCTRICAS TK-3016** |  | 2026-01-04 → 2026-03-16 (+71d) |  |  |  |  |  |
| 1 | **MONTAJE DE CANALIZACIÓN Y FERRETERÍA TK-3016** |  | 2025-12-28 → 2025-12-27 (-1d) |  |  |  |  |  |
| A8630 | Canalización y Copla de Conduit de Acero Galvanizado 1 1/2"Ø, Conduit ANSI C80.1 |  | 2025-12-28 → 2025-12-27 A (-1d) | 4.36d → 4d | 15% → 100% | 68.88d → none | A8620 FF → A8620 | was named Canalización y Copla de Conduit de Acero Galvanizado 1 ½"Ø, Conduit ANSI C80.1; resources SQM-ELÉCTRICO [50.4 h] → SQM-ELÉCTRICO [7.56 h] |
| A8640 | Canalización y Copla de Conduit Flexible Metálico con Cubierta PVC 1 1/2" Ø Trabajo Pesado |  | 2025-12-26 → 2025-12-25 A (-1d) | 2.18d → 2d | 15% → 100% | 68.88d → none |  | was named Canalización y Copla de Conduit Flexible Metálico con Cubierta PVC 1 ½" Ø Trabajo Pesado; resources SQM-ELÉCTRICO [6.3 h] → SQM-ELÉCTRICO [2.52 h] |
| A8610 | Canalización y Copla de Conduit de Acero Galvanizado 2 1/2"Ø, Conduit ANSI C80.1 | 2025-12-22 → 2025-12-21 A (-1d) | 2025-12-26 → 2025-12-25 A (-1d) | 4.36d → 4d | 0% → 100% | 68.88d → none | Canalización y Copla de Conduit Flexible Metálico con Cubierta PVC 4" Ø Trabajo Pesado → A8540 | was named Canalización y Copla de Conduit de Acero Galvanizado 2 ½"Ø, Conduit ANSI C80.1; resources SQM-ELÉCTRICO [75.6 h] → SQM-ELÉCTRICO [17.01 h] |
| A8620 | Canalización y Copla de Conduit Flexible Metálico con Cubierta PVC 2 1/2" Ø Trabajo Pesado | 2025-12-26 → 2025-12-25 A (-1d) | 2025-12-28 → 2025-12-27 A (-1d) | 2.18d → 2d | 0% → 100% | 68.88d → none | A8610 → A8610 SS | was named Canalización y Copla de Conduit Flexible Metálico con Cubierta PVC 2 ½" Ø Trabajo Pesado; resources SQM-ELÉCTRICO [9.45 h] → SQM-ELÉCTRICO [3.78 h] |
| 2 | **TENDIDO Y CONEXIONADO DE CABLES DE ALIMENTACIÓN TK-3016** |  | 2026-01-01 → 2025-12-31 (-1d) |  |  |  |  |  |
| A8650 | Cable Monoconductor de Cobre con Aislación XLPE, 1C #250 MCM, Clase 1 kV |  | 2026-01-01 → 2025-12-31 A (-1d) | 7.64d → 7d | 8% → 100% | 68.88d → none | A8640 SS → A8640 | resources SQM-ELÉCTRICO → SQM-ELÉCTRICO [252.8 h] |
| A8660 | Cable Multiconductor de Cobre con Aislación XLPE, 1X4C #2 AWG, Clase 1 kV |  | 2025-12-28 → 2025-12-27 A (-1d) | 4.36d → 4d | 9% → 100% | 68.88d → none |  |  |

| ID | Task | Start | Finish | Duration | Complete | Total float | Predecessors | Other |
| --- | --- | --- | --- | --- | --- | --- | --- | --- |
| A8670 | Cable Multiconductor de Cobre con Aislación de XLPE, 1x5C #12 AWG, Clase 1 kV |  | 2025-12-28 → 2025-12-27 A (-1d) | 4.36d → 4d | 9% → 100% | 68.88d → none |  | resources SQM-ELÉCTRICO [16.44 h] → SQM-ELÉCTRICO [14.61 h] |
| 3 | **MONTAJE Y CONEXIONADO DE EQUIPOS ELÉCTRICOS TK-3016** | 2025-12-28 → 2025-12-27 (-1d) | 2026-01-01 → 2025-12-30 (-2d) |  |  |  |  |  |
| A8680 | Tablero Partidor de Motores TAG: 5817-TPM-1502. | 2025-12-28 → 2025-12-27 A (-1d) | 2026-01-01 → 2025-12-30 A (-2d) | 3.27d → 3d | 0% → 100% | 69.97d → none |  |  |
| A8690 | Conexión de Motor TAG: 5872-MTR-1682 a TPM TAG: 5817-TPM-1502. | 2025-12-28 → 2025-12-27 A (-1d) | 2025-12-31 → 2025-12-29 A (-2d) | 2.18d → 2d | 0% → 100% | 69.97d → none |  | resources SQM-ELÉCTRICO [4.12 h] → SQM-ELÉCTRICO [4.13 h] |
| A8700 | Conexión de Motor TAG: 5872-MTR-1685 a TPM TAG: 5817-TPM-1502. | 2025-12-28 → 2025-12-27 A (-1d) | 2025-12-31 → 2025-12-29 A (-2d) | 2.18d → 2d | 0% → 100% | 69.97d → none |  | resources SQM-ELÉCTRICO [4.12 h] → SQM-ELÉCTRICO [4.13 h] |
| A8710 | Conexión de Tablero Partidor de Motores TAG: 5817-TPM-1502 a Sala Eléctrica TAG: SEL-4016. | 2025-12-28 → 2025-12-27 A (-1d) | 2025-12-31 → 2025-12-29 A (-2d) | 2.18d → 2d | 0% → 100% | 69.97d → none |  | resources SQM-ELÉCTRICO [4.12 h] → SQM-ELÉCTRICO [4.13 h] |
| 4 | **PRUEBAS DE FUNCIONAMIENTO Y PEM TK-3016** | 2025-12-31 → 2025-12-29 (-2d) | 2026-01-04 → 2026-03-16 (+71d) |  |  |  |  |  |
| A8720 | Pruebas de Funcionamiento y Puesta en Marcha de Motor TAG: 5872-MTR-1682. | 2025-12-31 → 2025-12-29 A (-2d) | 2026-01-02 → 2026-03-16 (+73d) | 2.18d → 2d | 0% → 78% | 69.97d → 27.55d |  |  |
| A8730 | Pruebas de Funcionamiento y Puesta en Marcha de Motor TAG: 5872-MTR-1685. | 2026-01-02 → 2025-12-31 A (-2d) | 2026-01-04 → 2026-03-16 (+71d) | 2.18d → 2d | 0% → 78% | 69.97d → 27.55d | A8720 → A8720 SS |  |
| 4 | **OBRAS DE INSTRUMENTACIÓN TK-3016** |  | 2026-01-05 → 2026-03-16 (+70d) |  |  |  |  |  |
| 1 | **MONTAJE DE CANALIZACIÓN Y FERRETERÍA INST. TK-3016** | 2025-12-28 → 2025-12-27 (-1d) | 2026-01-03 → 2026-01-01 (-2d) |  |  |  |  |  |
| A8740 | Canalización y Copla de Conduit de Acero Galvanizado 1"Ø, Conduit ANSI C80.1 | 2025-12-28 → 2025-12-27 A (-1d) | 2026-01-01 → 2025-12-30 A (-2d) | 3.27d → 3d | 0% → 100% | 68.88d → none |  | resources SQM-INSTRUMENTACIÓN [100.8 h] → SQM-INSTRUMENTACIÓN [22.68 h] |
| A8750 | Canalización y Copla de Conduit Flexible Metálico con Cubierta PVC 1" Ø Trabajo Pesado | 2026-01-01 → 2025-12-30 A (-2d) | 2026-01-03 → 2026-01-01 A (-2d) | 2.18d → 2d | 0% → 100% | 68.88d → none |  | resources SQM-INSTRUMENTACIÓN [12.6 h] → SQM-INSTRUMENTACIÓN [6.3 h] |
| 2 | **TENDIDO Y CONEXIONADO DE CABLES INSTRUMENTACIÓN TK-3016** |  | 2025-12-31 → 2025-12-30 (-1d) |  |  |  |  |  |
| A8760 | Cable Multiconductor de Cobre con Aislación de XLPE, 1x3C #12 AWG, Clase 1 kV |  |  | 4.36d → 4d |  |  | A8660 SS → A8750 | resources SQM-INSTRUMENTACIÓN [0.37 h] → SQM-INSTRUMENTACIÓN [0.28 h] |
| A8770 | Cable de Instrumentación (Señales Análogas), 1x1 par #16 AWG Apantallado |  | 2025-12-31 → 2025-12-30 A (-1d) | 7.64d → 5d | 10% → 100% | 72.86d → none |  | resources SQM-INSTRUMENTACIÓN [88.8 h] → SQM-INSTRUMENTACIÓN [69.26 h] |
| A8780 | Conductor Fibra Óptica Multimodo 12 Hilos | 2025-12-25 → 2025-12-24 A (-1d) | 2025-12-29 → 2025-12-28 A (-1d) | 4.36d → 4d | 0% → 100% | 72.86d → none |  | resources SQM-INSTRUMENTACIÓN [71.7 h] → SQM-INSTRUMENTACIÓN [62.14 h] |
| 3 | **MONTAJE Y CONEXIONADO DE EQUIPOS E INSTRUMENTOSTK-3016** | 2025-12-25 → 2025-12-01 (-24d) | 2026-01-05 → 2026-03-16 (+70d) |  |  |  |  |  |
| A8830 | Instrumento TAG: FIT-1177 | 2025-12-28 → 2025-12-01 A (-27d) | 2025-12-30 → 2026-03-16 (+76d) | 2.18d → 2d | 0% → 85% | 72.86d → 27.7d | A8820 → A8820 SS | resources SQM-INSTRUMENTACIÓN [21.75 h] → SQM-INSTRUMENTACIÓN [12 h] |
| A8840 | Instrumento TAG: PIT-1176 | 2026-01-03 → 2025-12-01 A (-33d) | 2026-01-05 → 2026-03-16 (+70d) | 2.18d → 2d | 0% → 85% | 68.88d → 27d | A8830, A8750 → A8830 SS |  |
| A8820 | Fibra Óptica en TAG: SEL-4016. | 2025-12-25 → 2026-01-01 A (+7d) | 2025-12-28 → 2026-03-16 (+78d) | 3.27d → 3d | 0% → 90% | 72.86d → 27.7d |  | resources SQM-INSTRUMENTACIÓN [4.12 h] → SQM-INSTRUMENTACIÓN [12 h] |
| 4 | **PRUEBAS DE FUNCIONAMIENTO Y PEM INST. TK-3016** | 2025-12-01 → 2025-12-27 (+26d) | 2026-01-05 → 2026-03-16 (+70d) |  |  |  |  |  |
| A8800 | Pruebas de Operación y Puesta en Marcha de Instrumento TAG: FIT-1177 | 2025-12-01 A → 2025-12-27 A (+26d) | 2026-01-05 → 2025-12-29 A (-7d) | 2.18d → 2d | 10% → 100% | 68.88d → none | A8790 FF → A8790 SS | resources SQM-INSTRUMENTACIÓN [12 h] → SQM-INSTRUMENTACIÓN [21.75 h] |
| A8810 | Pruebas de Operación y Puesta en Marcha de Instrumento TAG: PIT-1176 | 2025-12-01 A → 2026-01-01 A (+31d) | 2026-01-05 → 2026-01-03 A (-2d) | 2.18d → 2d | 10% → 100% | 68.88d → none | A8800 SS, A8730 FF → A8800 SS, A8730 SS |  |
| A8790 | Pruebas de Funcionamiento de Conectividad de Fibra Óptica desde SEL-4016 a TPM-1502. | 2026-01-03 → 2026-03-16 (+72d) | 2026-01-05 → 2026-03-16 (+70d) | 2.18d → 1d |  | 68.88d → 27d |  | resources SQM-INSTRUMENTACIÓN [12 h] → SQM-INSTRUMENTACIÓN |
